# Project Timeline
#WIDTH: 12,36,13,19,19,26,24,14
#ALIGN: left,left,center,center,center,left,left,center
Phase,Task,Duration,Start Date,End Date,Dependencies,Owner,Status
Discovery,Project Kickoff,1 day,[START_DATE],[START_DATE+1],None,Project Manager,Not Started
Discovery,Document Analysis & Classification Requirements,5 days,[START_DATE+1],[START_DATE+6],Project Kickoff,Business Analyst,Not Started
Discovery,AWS AI Services Assessment (Textract/Comprehend/A2I),5 days,[START_DATE+3],[START_DATE+8],Project Kickoff,Solution Architect,Not Started
Discovery,Data Privacy & Compliance Review,5 days,[START_DATE+5],[START_DATE+10],Document Analysis,Security Architect,Not Started
Discovery,Sample Document Collection,4 days,[START_DATE+6],[START_DATE+10],Document Analysis,Business Analyst,Not Started
Planning,IDP Solution Architecture Design,7 days,[START_DATE+10],[START_DATE+17],AWS Assessment,Solution Architect,Not Started
Planning,Data Flow & API Design,5 days,[START_DATE+12],[START_DATE+17],Architecture Design,Technical Lead,Not Started
Planning,Security Architecture & IAM Design,5 days,[START_DATE+14],[START_DATE+19],Architecture Design,Security Architect,Not Started
Planning,Infrastructure & Cost Planning,4 days,[START_DATE+15],[START_DATE+19],Architecture Design,Cloud Architect,Not Started
Build,AWS Infrastructure Provisioning,7 days,[START_DATE+19],[START_DATE+26],Infrastructure Planning,DevOps Engineer,Not Started
Build,S3 Buckets & DynamoDB Setup,4 days,[START_DATE+22],[START_DATE+26],Infrastructure Provisioning,DevOps Engineer,Not Started
Build,Lambda Functions & Step Functions Setup,10 days,[START_DATE+26],[START_DATE+36],S3 Setup,Backend Developer,Not Started
Build,API Gateway & Authentication Setup,6 days,[START_DATE+28],[START_DATE+34],Lambda Setup,Backend Developer,Not Started
Build,Amazon Textract Integration,8 days,[START_DATE+34],[START_DATE+42],Lambda Functions,Technical Lead,Not Started
Build,Amazon Comprehend Integration,6 days,[START_DATE+38],[START_DATE+44],Textract Integration,Technical Lead,Not Started
Build,Amazon A2I Human Review Setup,7 days,[START_DATE+42],[START_DATE+49],Comprehend Integration,Technical Lead,Not Started
Build,Document Processing Pipeline,10 days,[START_DATE+36],[START_DATE+46],API Gateway Setup,Backend Developer,Not Started
Build,Web Interface Development (Optional),10 days,[START_DATE+42],[START_DATE+52],API Gateway Setup,Frontend Developer,Not Started
Build,CloudWatch Monitoring & Alerting,5 days,[START_DATE+46],[START_DATE+51],Processing Pipeline,DevOps Engineer,Not Started
Test,Unit Testing & Code Coverage,7 days,[START_DATE+46],[START_DATE+53],Processing Pipeline,Development Team,Not Started
Test,AI Service Accuracy Testing,8 days,[START_DATE+49],[START_DATE+57],A2I Setup,Technical Lead,Not Started
Test,Integration Testing,7 days,[START_DATE+53],[START_DATE+60],Unit Testing,QA Engineer,Not Started
Test,Performance & Load Testing,5 days,[START_DATE+57],[START_DATE+62],Integration Testing,Performance Engineer,Not Started
Test,Security Testing,5 days,[START_DATE+58],[START_DATE+63],Integration Testing,Security Engineer,Not Started
Test,User Acceptance Testing,7 days,[START_DATE+63],[START_DATE+70],Performance Testing,Business Users,Not Started
Deploy,Production Environment Setup,5 days,[START_DATE+65],[START_DATE+70],Security Testing,DevOps Engineer,Not Started
Deploy,Production Validation & Smoke Testing,3 days,[START_DATE+70],[START_DATE+73],Production Environment,QA Lead,Not Started
Deploy,User Training Delivery,7 days,[START_DATE+66],[START_DATE+73],UAT Complete,Training Lead,Not Started
Deploy,Go-Live,2 days,[START_DATE+73],[START_DATE+75],Production Validation,Project Manager,Not Started
Closure,Hypercare Support,30 days,[START_DATE+75],[START_DATE+105],Go-Live,Support Team,Not Started
Closure,Accuracy Monitoring Setup,5 days,[START_DATE+75],[START_DATE+80],Go-Live,Technical Lead,Not Started
Closure,Knowledge Transfer & Documentation,7 days,[START_DATE+80],[START_DATE+87],Go-Live,Project Manager,Not Started
Closure,Project Closure & Lessons Learned,3 days,[START_DATE+105],[START_DATE+108],Hypercare Complete,Project Manager,Not Started
# Milestones
#WIDTH: 14,30,20,62,28,17
#ALIGN: left,left,center,left,left,center
Milestone ID,Milestone Name,Target Date,Success Criteria,Owner,Status
M1,Project Kickoff,[START_DATE],Stakeholders aligned; project charter approved; AWS account access confirmed,Project Manager,Not Started
M2,Discovery Complete,[START_DATE+10],Document types classified (2-3 types); compliance requirements documented; sample documents collected,Business Analyst,Not Started
M3,Architecture Approved,[START_DATE+19],Solution architecture approved; AI services strategy signed off (Textract/Comprehend/A2I); security design validated,Solution Architect,Not Started
M4,Infrastructure Ready,[START_DATE+26],AWS infrastructure provisioned; S3 buckets configured; IAM roles created,DevOps Engineer,Not Started
M5,AI Services Integrated,[START_DATE+49],Textract/Comprehend/A2I integrated; extraction accuracy targets met (95%+),Technical Lead,Not Started
M6,Development Complete,[START_DATE+52],All APIs functional; processing pipeline operational; monitoring configured,Technical Lead,Not Started
M7,Testing Complete,[START_DATE+70],All test phases passed; accuracy >95%; no critical defects; security validated,QA Lead,Not Started
M8,Go-Live,[START_DATE+75],Production deployment successful; users trained; monitoring active,Project Manager,Not Started
M9,Project Closure,[START_DATE+108],Hypercare complete; knowledge transfer done; lessons learned documented,Project Manager,Not Started
# RACI Matrix
#WIDTH: 35,8,8,8,8,8,8,8,8,8
#ALIGN: left,center,center,center,center,center,center,center,center,center
Task/Deliverable,PM,SA,BA,TL,Dev,QA,DevOps,SecArch,Client
Project Charter & Kickoff,A,C,C,I,I,I,I,I,C
Document Classification Requirements,A,C,R,C,I,I,I,I,C
AWS AI Services Assessment,A,R,C,C,I,I,C,C,I
Solution Architecture Design,A,R,C,C,C,I,C,C,I
Security & Compliance Design,A,C,I,C,I,I,I,R,C
Infrastructure Provisioning,A,C,I,C,I,I,R,C,I
Sample Document Collection,A,I,R,I,I,I,I,I,C
Textract/Comprehend Integration,A,C,I,R,C,I,C,I,I
A2I Human Review Setup,A,C,C,R,C,I,I,I,C
API & Pipeline Development,A,C,I,R,R,I,C,I,I
Web Interface Development,A,I,C,C,R,I,I,I,C
Test Planning & Execution,A,I,C,C,C,R,I,C,I
Accuracy Validation,A,C,C,R,C,C,I,I,C
Security Testing,A,I,I,C,I,C,I,R,I
User Acceptance Testing,A,I,C,I,I,C,I,I,R
Production Deployment,A,C,I,C,C,C,R,C,I
User Training,A,I,R,I,I,I,I,I,C
Go-Live Approval,A,C,C,C,C,C,C,C,R
Hypercare Support,A,I,I,C,C,C,R,I,I
# Communications Plan
#WIDTH: 25,15,40,50,22,18
#ALIGN: left,left,left,left,left,center
Meeting Type,Frequency,Participants,Purpose,Owner,Day/Time
Project Kickoff,Once,All stakeholders,Launch project and align on IDP objectives and AI strategy,Project Manager,Day 1
Steering Committee,Bi-weekly,Executive sponsors and PMO,Strategic direction and major decisions on AI implementation,Project Manager,Alternate Tuesdays
Project Status Meeting,Weekly,Core project team,Review progress and address blockers across all workstreams,Project Manager,Mondays 10:00
Technical Architecture Review,Weekly,Technical leads,AI service design decisions and integration challenges,Solution Architect,Wednesdays 14:00
Development Standup,Daily,Development team,Development progress and coordination,Technical Lead,Daily 09:30
Risk & Issue Review,Bi-weekly,PM and Risk Manager,Risk assessment and mitigation tracking,Risk Manager,Alternate Fridays
QA & Testing Review,Weekly,QA and Development teams,Test progress and accuracy metrics,QA Lead,Thursdays 11:00
Security Review,Bi-weekly,Security team and architects,Security controls and compliance validation,Security Architect,Alternate Wednesdays
Business User Feedback,Weekly,Business stakeholders,Document processing accuracy review and workflow feedback,Business Analyst,Fridays 14:00
Go-Live Readiness,Daily (2 weeks pre),Go-live team,Deployment preparation and checklist review,Project Manager,Daily 09:00
Post Go-Live Review,Weekly (first month),Support and operations,Production stability and accuracy monitoring,Support Lead,Mondays 11:00
