# Project Timeline
#WIDTH: 14,36,13,19,19,26,24,14
#ALIGN: left,left,center,center,center,left,left,center
Phase,Task,Duration,Start Date,End Date,Dependencies,Owner,Status
Discovery,Project Kickoff,1 day,[START_DATE],[START_DATE+1],None,EO Project Manager,Not Started
Discovery,Business Impact Assessment,5 days,[START_DATE+1],[START_DATE+6],Project Kickoff,EO Quarterback,Not Started
Discovery,Current State Analysis,4 days,[START_DATE+3],[START_DATE+7],Project Kickoff,EO Sales Engineer,Not Started
Discovery,RTO/RPO Requirements Validation,3 days,[START_DATE+6],[START_DATE+9],Business Impact Assessment,EO Quarterback,Not Started
Discovery,DR Architecture Design,5 days,[START_DATE+9],[START_DATE+14],RTO/RPO Validation,EO Quarterback,Not Started
Discovery,Implementation Planning,3 days,[START_DATE+14],[START_DATE+17],DR Architecture Design,EO Project Manager,Not Started
Environment,Secondary Region Account Setup,3 days,[START_DATE+17],[START_DATE+20],Implementation Planning,EO Engineer (DR),Not Started
Environment,Cross-Region VPC Configuration,4 days,[START_DATE+20],[START_DATE+24],Account Setup,EO Engineer (DR),Not Started
Environment,Aurora Global Database Setup,5 days,[START_DATE+24],[START_DATE+29],VPC Configuration,EO Engineer (DR),Not Started
Environment,Route 53 Health Checks Config,3 days,[START_DATE+27],[START_DATE+30],VPC Configuration,EO Engineer (DR),Not Started
Environment,S3 Cross-Region Replication,2 days,[START_DATE+29],[START_DATE+31],Aurora Setup,EO Engineer (DR),Not Started
Environment,Security Baseline Configuration,4 days,[START_DATE+31],[START_DATE+35],S3 Replication,EO Engineer (DR),Not Started
Implementation,DR Application Deployment,5 days,[START_DATE+35],[START_DATE+40],Security Config,EO Engineer (DR),Not Started
Implementation,Database Replication Validation,4 days,[START_DATE+40],[START_DATE+44],App Deployment,EO Engineer (DR),Not Started
Implementation,Automated Failover Development,5 days,[START_DATE+44],[START_DATE+49],Replication Validation,EO Engineer (DR),Not Started
Implementation,Load Balancer Configuration,3 days,[START_DATE+49],[START_DATE+52],Failover Development,EO Engineer (DR),Not Started
Implementation,Monitoring Integration,4 days,[START_DATE+52],[START_DATE+56],Load Balancer Config,EO Engineer (DR),Not Started
Testing,DR Testing Framework Setup,3 days,[START_DATE+56],[START_DATE+59],Monitoring Integration,EO Engineer (DR),Not Started
Testing,Planned Failover Testing,4 days,[START_DATE+59],[START_DATE+63],Framework Setup,EO Engineer (DR),Not Started
Testing,Database Consistency Validation,3 days,[START_DATE+63],[START_DATE+66],Failover Testing,EO Engineer (DR),Not Started
Testing,Performance Benchmarking,3 days,[START_DATE+66],[START_DATE+69],Consistency Validation,EO Engineer (DR),Not Started
Testing,Full Disaster Simulation,4 days,[START_DATE+69],[START_DATE+73],Performance Benchmarking,EO Engineer (DR),Not Started
Testing,RTO/RPO Validation,2 days,[START_DATE+73],[START_DATE+75],Disaster Simulation,EO Engineer (DR),Not Started
Testing,User Acceptance Testing,5 days,[START_DATE+75],[START_DATE+80],RTO/RPO Validation,Client IT,Not Started
Handover,DR Runbook Documentation,5 days,[START_DATE+80],[START_DATE+85],UAT Complete,EO Quarterback,Not Started
Handover,Operations Team Training,4 days,[START_DATE+85],[START_DATE+89],Runbook Complete,EO Sales Engineer,Not Started
Handover,Go-Live Readiness Review,2 days,[START_DATE+89],[START_DATE+91],Training Complete,EO Project Manager,Not Started
Handover,DR System Activation,1 day,[START_DATE+91],[START_DATE+92],Readiness Review,EO Engineer (DR),Not Started
Closure,Hypercare Support Period,30 days,[START_DATE+92],[START_DATE+122],DR Activation,EO Engineer (DR),Not Started
Closure,Project Documentation,5 days,[START_DATE+110],[START_DATE+115],Hypercare 80% Complete,EO Project Manager,Not Started
Closure,Knowledge Transfer Final,3 days,[START_DATE+115],[START_DATE+118],Documentation Complete,EO Quarterback,Not Started
Closure,Project Closure,2 days,[START_DATE+122],[START_DATE+124],Hypercare Complete,EO Project Manager,Not Started
# Milestones
#WIDTH: 14,25,20,77,28,17
#ALIGN: left,left,center,left,left,center
Milestone ID,Milestone Name,Target Date,Success Criteria,Owner,Status
M1,Assessment Complete,[START_DATE+17],Business impact analysis complete and DR architecture approved by stakeholders,EO Quarterback,Not Started
M2,DR Environment Ready,[START_DATE+35],Secondary region infrastructure provisioned with VPC and security baseline,EO Engineer (DR),Not Started
M3,Replication Active,[START_DATE+56],Aurora Global Database and S3 replication operational with <1 second lag,EO Engineer (DR),Not Started
M4,Testing Complete,[START_DATE+80],All DR validation exercises passed with RTO/RPO targets achieved,EO Engineer (DR),Not Started
M5,Go-Live,[START_DATE+92],DR system operational with Route 53 health checks enabled and monitoring active,EO Project Manager,Not Started
M6,Project Closure,[START_DATE+124],Hypercare complete and project formally closed with lessons learned documented,EO Project Manager,Not Started
# RACI Matrix
#WIDTH: 30,10,10,10,10,10,10,10,10
#ALIGN: left,center,center,center,center,center,center,center,center
Task/Deliverable,PM,QB,Sales,DR Eng,Client IT,Sponsor,Ops,SME
Business Impact Assessment,A,R,R,C,C,I,C,C
DR Architecture Design,C,A,R,C,C,I,I,I
VPC and Network Setup,C,C,I,A,C,I,I,I
Aurora Global Database Config,C,C,I,A,C,I,I,I
Route 53 Failover Setup,C,C,I,A,C,I,I,I
S3 Cross-Region Replication,C,C,I,A,C,I,I,I
Security Implementation,C,R,I,A,C,I,I,I
DR Application Deployment,C,C,I,A,C,I,I,I
Failover Automation,C,C,I,A,C,I,I,I
Monitoring Configuration,C,C,I,A,C,I,C,I
DR Testing Framework,A,C,I,R,C,I,C,I
Failover Testing Execution,A,C,I,R,A,I,C,I
RTO/RPO Validation,A,C,I,R,A,C,I,I
DR Runbook Development,A,R,C,R,C,I,C,I
Operations Training,A,R,R,C,C,I,R,I
Go-Live Approval,A,C,C,C,C,R,C,I
Hypercare Support,A,C,I,R,C,I,C,I
Knowledge Transfer,A,R,R,C,C,I,R,I
Project Closure,A,C,C,I,C,I,I,I
# Communications Plan
#WIDTH: 23,19,38,45,19,20
#ALIGN: left,left,left,left,left,center
Meeting Type,Frequency,Participants,Purpose,Owner,Day/Time
Project Kickoff,Once,All stakeholders,Launch project and align on DR objectives and RTO/RPO targets,EO Project Manager,Day 1
Steering Committee,Bi-weekly,Executive sponsors and PMO,Strategic direction and issue resolution for DR implementation,EO Project Manager,Alternate Tuesdays
Status Meeting,Weekly,Core project team,Review DR implementation progress and address blockers,EO Project Manager,Mondays 10:00
Technical Review,Weekly,Technical leads,DR architecture decisions and implementation issues,EO Quarterback,Wednesdays 14:00
DR Testing Review,Weekly (Phase 4),DR and Operations teams,Review test results and failover validation progress,EO Engineer (DR),Thursdays 11:00
Go-Live Readiness,Daily (Week 13),Go-live team,DR activation preparation and final checklist review,EO Project Manager,Daily 09:00
Hypercare Standup,Daily (Weeks 14-15),Support team,Daily health check and issue resolution during hypercare,EO Engineer (DR),Daily 09:00
Monthly DR Review,Monthly (Post Go-Live),IT Operations and DR team,Ongoing DR health and quarterly test planning,Client IT Lead,First Monday
