# Project Timeline
#WIDTH: 14,36,13,19,19,26,24,14
#ALIGN: left,left,center,center,center,left,left,center
Phase,Task,Duration,Start Date,End Date,Dependencies,Owner,Status
Assessment,Project Kickoff,1 day,[START_DATE],[START_DATE+1],None,EO Project Manager,Not Started
Assessment,Infrastructure Discovery,6 days,[START_DATE+1],[START_DATE+7],Project Kickoff,EO Quarterback,Not Started
Assessment,Application Portfolio Analysis,7 days,[START_DATE+3],[START_DATE+10],Infrastructure Discovery,EO Quarterback,Not Started
Assessment,Dependency Mapping,7 days,[START_DATE+8],[START_DATE+15],Portfolio Analysis,EO Sales Engineer,Not Started
Assessment,Network Assessment,7 days,[START_DATE+5],[START_DATE+12],Infrastructure Discovery,EO Engineer (Migration),Not Started
Assessment,Security and Compliance Review,7 days,[START_DATE+8],[START_DATE+15],Infrastructure Discovery,EO Quarterback,Not Started
Assessment,AWS Landing Zone Design,10 days,[START_DATE+15],[START_DATE+25],Security Review,EO Quarterback,Not Started
Assessment,Migration Wave Planning,7 days,[START_DATE+18],[START_DATE+25],Dependency Mapping,EO Engineer (Migration),Not Started
Assessment,Cost Optimization Strategy,7 days,[START_DATE+20],[START_DATE+27],Portfolio Analysis,EO Sales Engineer,Not Started
Implementation,Migration Factory Setup,10 days,[START_DATE+25],[START_DATE+35],Landing Zone Design,EO Engineer (Migration),Not Started
Implementation,AWS Environment Setup,10 days,[START_DATE+35],[START_DATE+45],Migration Factory Setup,EO Engineer (Migration),Not Started
Implementation,Network Connectivity,7 days,[START_DATE+40],[START_DATE+47],AWS Environment Setup,EO Engineer (Migration),Not Started
Implementation,Security Baseline Implementation,10 days,[START_DATE+42],[START_DATE+52],AWS Environment Setup,EO Engineer (Migration),Not Started
Migration,Pilot Migration (Wave 0),10 days,[START_DATE+50],[START_DATE+60],Migration Factory Setup,EO Engineer (Migration),Not Started
Migration,Wave 1 Migration,15 days,[START_DATE+65],[START_DATE+80],Pilot Migration,EO Engineer (Migration),Not Started
Migration,Database Migration,15 days,[START_DATE+60],[START_DATE+75],Network Connectivity,EO Engineer (Migration),Not Started
Migration,Wave 2 Migration,15 days,[START_DATE+85],[START_DATE+100],Wave 1 Migration,EO Engineer (Migration),Not Started
Migration,Wave 3 Migration,15 days,[START_DATE+105],[START_DATE+120],Wave 2 Migration,EO Engineer (Migration),Not Started
Testing,Performance Testing,15 days,[START_DATE+70],[START_DATE+85],Wave 1 Migration,EO Engineer (Migration),Not Started
Testing,Security Testing,10 days,[START_DATE+80],[START_DATE+90],Security Implementation,EO Engineer (Migration),Not Started
Testing,Disaster Recovery Testing,7 days,[START_DATE+90],[START_DATE+97],Wave 3 Migration,EO Engineer (Migration),Not Started
Testing,User Acceptance Testing,15 days,[START_DATE+95],[START_DATE+110],Wave 3 Migration,EO Sales Engineer,Not Started
Optimization,Cloud Cost Optimization,10 days,[START_DATE+110],[START_DATE+120],Wave 3 Migration,EO Engineer (Migration),Not Started
Optimization,Performance Optimization,10 days,[START_DATE+115],[START_DATE+125],Performance Testing,EO Engineer (Migration),Not Started
Handover,Cloud Operations Training,15 days,[START_DATE+100],[START_DATE+115],Wave 3 Migration,EO Engineer (Migration),Not Started
Handover,End User Training,10 days,[START_DATE+110],[START_DATE+120],UAT Complete,EO Sales Engineer,Not Started
Handover,Documentation and Runbooks,15 days,[START_DATE+115],[START_DATE+130],Operations Training,EO Engineer (Migration),Not Started
Closure,On-Premise Decommissioning,15 days,[START_DATE+125],[START_DATE+140],Cost Optimization,EO Engineer (Migration),Not Started
Closure,Cloud Operations Handover,7 days,[START_DATE+130],[START_DATE+137],Documentation Complete,EO Engineer (Migration),Not Started
Closure,Hypercare Support,30 days,[START_DATE+137],[START_DATE+167],Operations Handover,EO Engineer (Migration),Not Started
Closure,Benefits Realization Assessment,10 days,[START_DATE+150],[START_DATE+160],Decommissioning Complete,EO Sales Engineer,Not Started
Closure,Project Closure,3 days,[START_DATE+167],[START_DATE+170],Hypercare Complete,EO Project Manager,Not Started
# Milestones
#WIDTH: 14,25,20,77,28,17
#ALIGN: left,left,center,left,left,center
Milestone ID,Milestone Name,Target Date,Success Criteria,Owner,Status
M1,Assessment Complete,[START_DATE+27],Application discovery and migration wave planning approved by stakeholders,EO Quarterback,Not Started
M2,Landing Zone Ready,[START_DATE+45],AWS multi-account environment operational with security baselines deployed,EO Engineer (Migration),Not Started
M3,Network Connected,[START_DATE+47],Hybrid connectivity established between on-premise and AWS with validated throughput,EO Engineer (Migration),Not Started
M4,Pilot Complete,[START_DATE+60],Wave 0 pilot migration successful with validated migration patterns and runbooks,EO Engineer (Migration),Not Started
M5,Wave 1 Complete,[START_DATE+80],Wave 1 production applications migrated and validated in AWS environment,EO Engineer (Migration),Not Started
M6,Wave 2 Complete,[START_DATE+100],Wave 2 business-critical applications migrated with zero data loss,EO Engineer (Migration),Not Started
M7,Wave 3 Complete,[START_DATE+120],All in-scope applications migrated to AWS with performance targets achieved,EO Engineer (Migration),Not Started
M8,UAT Complete,[START_DATE+110],User acceptance testing passed with business sign-off for all applications,EO Sales Engineer,Not Started
M9,Training Complete,[START_DATE+120],Operations team trained and ready to manage AWS environment independently,EO Engineer (Migration),Not Started
M10,Go-Live,[START_DATE+137],Cloud operations handover complete with 24/7 support established,EO Project Manager,Not Started
M11,Decommissioning Complete,[START_DATE+140],On-premise infrastructure safely decommissioned with data destruction verified,EO Engineer (Migration),Not Started
M12,Project Closure,[START_DATE+170],Project formally closed with lessons learned documented and benefits validated,EO Project Manager,Not Started
# RACI Matrix
#WIDTH: 30,10,10,10,10,10,10,10,10
#ALIGN: left,center,center,center,center,center,center,center,center
Task/Deliverable,PM,QB,Sales,Mig Eng,Client IT,Sponsor,Ops,SME
Project Kickoff and Charter,A,C,C,C,C,R,I,I
Infrastructure Discovery,C,A,C,R,R,I,C,C
Application Portfolio Analysis,C,A,R,C,C,I,I,C
Dependency Mapping,C,C,A,R,C,I,I,C
Security and Compliance Review,C,A,C,R,C,I,C,I
AWS Landing Zone Design,C,A,C,R,C,I,I,I
Migration Wave Planning,C,C,C,A,C,I,C,C
Cost Optimization Strategy,C,C,A,C,C,I,I,I
Migration Factory Setup,C,C,I,A,C,I,I,I
AWS Environment Setup,C,C,I,A,C,I,C,I
Network Connectivity,C,C,I,A,R,I,C,I
Security Baseline Implementation,C,R,I,A,C,I,I,I
Pilot Migration Execution,A,C,I,R,C,I,C,I
Wave 1-3 Migration Execution,A,C,I,R,C,I,C,C
Database Migration,A,C,I,R,C,I,C,I
Performance Testing,A,C,I,R,C,I,C,I
Security Testing,A,R,I,R,C,I,I,I
User Acceptance Testing,A,C,R,C,C,C,C,R
Cloud Operations Training,A,C,R,R,C,I,R,I
Documentation and Runbooks,A,R,C,R,C,I,C,I
On-Premise Decommissioning,A,C,I,R,R,C,C,I
Cloud Operations Handover,A,C,C,R,R,I,R,I
Hypercare Support,A,C,I,R,C,I,C,I
Benefits Realization,A,C,R,C,C,C,I,I
Project Closure,A,C,C,I,C,I,I,I
# Communications Plan
#WIDTH: 23,19,38,45,19,20
#ALIGN: left,left,left,left,left,center
Meeting Type,Frequency,Participants,Purpose,Owner,Day/Time
Project Kickoff,Once,All stakeholders,Launch migration project and align on objectives and success criteria,EO Project Manager,Day 1
Steering Committee,Bi-weekly,Executive sponsors and PMO,Strategic direction and issue resolution for migration program,EO Project Manager,Alternate Tuesdays
Status Meeting,Weekly,Core project team,Review migration progress against plan and address blockers,EO Project Manager,Mondays 10:00
Technical Review,Weekly,Technical leads and architects,AWS architecture decisions and migration technical issues,EO Quarterback,Wednesdays 14:00
Migration Planning,Weekly,Migration team,Plan upcoming migration waves and coordinate cutover activities,EO Engineer (Migration),Thursdays 11:00
Wave Readiness,Pre-Wave,Wave stakeholders and ops team,Confirm readiness for upcoming migration wave with go/no-go decision,EO Project Manager,Friday before Wave
Cutover War Room,During Cutover,Migration and operations team,Real-time coordination during application cutover weekend,EO Engineer (Migration),Cutover Weekend
Training Sessions,As Scheduled,IT operations and business users,Knowledge transfer on AWS operations and application changes,EO Sales Engineer,Per Training Plan
