# Project Timeline
#WIDTH: 12,36,13,19,19,26,24,14
#ALIGN: left,left,center,center,center,left,left,center
Phase,Task,Duration,Start Date,End Date,Dependencies,Owner,Status
Planning,Project Kickoff,1 day,2025-01-15,2025-01-15,None,Project Manager,Not Started
Planning,Requirements Gathering,5 days,2025-01-16,2025-01-22,Project Kickoff,Business Analyst,Not Started
Planning,Document Analysis Workshop,3 days,2025-01-20,2025-01-22,Requirements Gathering,AI Engineer,Not Started
Planning,Solution Architecture Design,7 days,2025-01-23,2025-01-31,Document Analysis,Solution Architect,Not Started
Planning,Security Requirements Review,3 days,2025-01-29,2025-01-31,Architecture Design,Security Architect,Not Started
Design,Detailed Design Document,10 days,2025-02-03,2025-02-14,Architecture Approved,Technical Lead,Not Started
Design,Integration Design,5 days,2025-02-10,2025-02-14,Detailed Design,Integration Specialist,Not Started
Design,Test Plan Development,5 days,2025-02-10,2025-02-14,Detailed Design,QA Lead,Not Started
Build,Azure Environment Setup,5 days,2025-02-17,2025-02-21,Design Complete,DevOps Engineer,Not Started
Build,Document Intelligence Provisioning,3 days,2025-02-24,2025-02-26,Environment Setup,AI Engineer,Not Started
Build,Storage and Database Setup,3 days,2025-02-24,2025-02-26,Environment Setup,DevOps Engineer,Not Started
Build,Pre-built Model Configuration,5 days,2025-02-27,2025-03-05,Doc Intel Provisioned,AI Engineer,Not Started
Build,Custom Model Training,10 days,2025-03-06,2025-03-19,Pre-built Config,AI Engineer,Not Started
Build,Processing Pipeline Development,15 days,2025-03-06,2025-03-26,Environment Ready,Development Team,Not Started
Build,Human Review Workflow,7 days,2025-03-20,2025-03-28,Pipeline Development,Development Team,Not Started
Build,ERP Integration Development,10 days,2025-03-27,2025-04-09,Pipeline Development,Integration Developer,Not Started
Build,CRM Integration Development,7 days,2025-04-03,2025-04-11,Pipeline Development,Integration Developer,Not Started
Build,Security Implementation,7 days,2025-04-07,2025-04-15,Integrations Complete,Security Developer,Not Started
Test,Unit Testing,7 days,2025-04-14,2025-04-22,Development Complete,Development Team,Not Started
Test,Integration Testing,7 days,2025-04-21,2025-04-29,Unit Testing,QA Engineer,Not Started
Test,Performance Testing,5 days,2025-04-28,2025-05-02,Integration Testing,Performance Team,Not Started
Test,Security Testing,5 days,2025-04-30,2025-05-06,Security Implementation,Security Tester,Not Started
Test,User Acceptance Testing,10 days,2025-05-05,2025-05-16,All Testing Complete,Business Users,Not Started
Deploy,Production Environment Setup,5 days,2025-05-12,2025-05-16,UAT Complete,DevOps Engineer,Not Started
Deploy,Pre-Deployment Validation,3 days,2025-05-19,2025-05-21,Production Env Ready,QA Lead,Not Started
Deploy,Production Deployment,2 days,2025-05-22,2025-05-23,Validation Complete,Deployment Team,Not Started
Deploy,Go-Live Support,5 days,2025-05-26,2025-05-30,Deployment Complete,Support Team,Not Started
Training,Training Material Development,10 days,2025-05-05,2025-05-16,UAT Started,Training Team,Not Started
Training,Administrator Training,3 days,2025-05-19,2025-05-21,Materials Ready,Training Team,Not Started
Training,End User Training,5 days,2025-05-19,2025-05-23,Materials Ready,Training Team,Not Started
Closure,Hypercare Support,30 days,2025-05-26,2025-06-27,Go-Live,Support Team,Not Started
Closure,Project Documentation,5 days,2025-06-23,2025-06-27,Hypercare,Project Manager,Not Started
Closure,Project Closure,2 days,2025-06-30,2025-07-01,Documentation Complete,Project Manager,Not Started
# Milestones
#WIDTH: 14,25,20,77,28,17
#ALIGN: left,left,center,left,left,center
Milestone ID,Milestone Name,Target Date,Success Criteria,Owner,Status
M1,Project Kickoff,2025-01-15,Kickoff meeting held; project charter signed; team assigned,Project Manager,Not Started
M2,Requirements Approved,2025-01-22,Requirements document signed off; document types confirmed; accuracy targets defined,Business Analyst,Not Started
M3,Architecture Approved,2025-01-31,Architecture design approved; Azure services confirmed; security review passed,Solution Architect,Not Started
M4,Design Complete,2025-02-14,Detailed design approved; integration specs complete; test plan finalized,Technical Lead,Not Started
M5,AI Models Ready,2025-03-19,Pre-built models configured; custom model trained; 90%+ accuracy validated,AI Engineer,Not Started
M6,Development Complete,2025-04-15,All components developed; integrations working; security implemented,Development Lead,Not Started
M7,Testing Complete,2025-05-16,All tests passed; 95%+ accuracy achieved; UAT signed off; zero P1/P2 defects,QA Lead,Not Started
M8,Go-Live,2025-05-23,Production deployed; validation complete; processing operational,Project Manager,Not Started
M9,Project Closure,2025-07-01,Hypercare complete; documentation delivered; lessons learned captured,Project Manager,Not Started
# RACI Matrix
#WIDTH: 30,10,10,10,10,10,10,10,10
#ALIGN: left,center,center,center,center,center,center,center,center
Task/Deliverable,PM,SA,AI Eng,Dev,QA,DevOps,Security,Client
Project Charter and Kickoff,A,C,I,I,I,I,I,C
Requirements Document,A,C,C,I,C,I,I,R
Solution Architecture,A,R,C,C,I,C,C,I
Detailed Design Document,A,C,R,C,I,C,C,I
Azure Environment Setup,A,C,I,I,I,R,C,I
Document Intelligence Configuration,A,C,R,C,I,C,I,I
Custom Model Training,A,C,R,I,C,I,I,C
Processing Pipeline Development,A,C,C,R,I,C,I,I
Integration Development,A,C,I,R,I,C,I,C
Security Implementation,A,C,I,C,I,C,R,I
Test Plan and Execution,A,I,C,C,R,I,C,I
User Acceptance Testing,A,I,I,C,C,I,I,R
Training Materials,A,I,C,C,I,I,I,C
Production Deployment,A,C,I,C,I,R,C,I
Go-Live Approval,A,C,C,C,C,C,C,R
# Communications Plan
#WIDTH: 23,19,38,45,19,20
#ALIGN: left,left,left,left,left,center
Meeting Type,Frequency,Participants,Purpose,Owner,Day/Time
Project Kickoff,Once,All stakeholders and project team,Launch project and align on objectives and success criteria,Project Manager,Day 1 10:00
Steering Committee,Bi-weekly,Executive sponsors and PMO,Strategic direction and issue escalation,Project Manager,Alternate Tuesdays 14:00
Status Meeting,Weekly,Core project team,Review progress and address blockers,Project Manager,Mondays 10:00
Technical Review,Weekly,Solution architect and technical leads,Technical design decisions and AI model progress,Solution Architect,Wednesdays 14:00
AI Model Review,Weekly,AI engineer and business SMEs,Review model accuracy and training progress,AI Engineer,Thursdays 11:00
Integration Sync,Weekly,Integration team and client IT,Integration status and issue resolution,Integration Lead,Fridays 10:00
Go-Live Readiness,Daily (Week -1),Go-live team and stakeholders,Go-live preparation and checklist review,Project Manager,Daily 09:00
Hypercare Standup,Daily (30 days),Support team and client operations,Post-go-live issues and stabilization,Support Lead,Daily 09:30
