# Project Timeline
#WIDTH: 12,36,13,19,19,26,24,14
#ALIGN: left,left,center,center,center,left,left,center
Phase,Task,Duration,Start Date,End Date,Dependencies,Owner,Status
Foundation,Project Kickoff and Charter,1 day,2025-01-15,2025-01-15,None,Project Manager,Not Started
Foundation,Security Requirements Validation,3 days,2025-01-16,2025-01-20,Project Kickoff,Security Architect,Not Started
Foundation,Data Source Inventory,3 days,2025-01-16,2025-01-20,Project Kickoff,SIEM Engineer,Not Started
Foundation,Log Analytics Workspace Deployment,2 days,2025-01-21,2025-01-22,Requirements Complete,SIEM Engineer,Not Started
Foundation,Azure Sentinel Enablement,1 day,2025-01-23,2025-01-23,Workspace Ready,SIEM Engineer,Not Started
Foundation,Initial RBAC Configuration,2 days,2025-01-24,2025-01-27,Sentinel Enabled,Security Engineer,Not Started
Connectors,Azure AD Data Connector,2 days,2025-01-28,2025-01-29,Sentinel Enabled,SIEM Engineer,Not Started
Connectors,Office 365 Data Connector,2 days,2025-01-30,2025-01-31,Sentinel Enabled,SIEM Engineer,Not Started
Connectors,Defender for Cloud Connector,2 days,2025-02-03,2025-02-04,Sentinel Enabled,SIEM Engineer,Not Started
Connectors,Defender for Endpoint Connector,2 days,2025-02-05,2025-02-06,Sentinel Enabled,SIEM Engineer,Not Started
Connectors,Defender for Identity Connector,2 days,2025-02-07,2025-02-10,Sentinel Enabled,SIEM Engineer,Not Started
Connectors,Azure Activity Logs Connector,1 day,2025-02-11,2025-02-11,Sentinel Enabled,SIEM Engineer,Not Started
Connectors,CEF/Syslog Connector Setup,3 days,2025-02-12,2025-02-14,Sentinel Enabled,SIEM Engineer,Not Started
Connectors,DNS Logs Connector,2 days,2025-02-17,2025-02-18,Sentinel Enabled,SIEM Engineer,Not Started
Connectors,Third-Party Connector Integration,5 days,2025-02-19,2025-02-25,All Native Connectors,SIEM Engineer,Not Started
Analytics,Built-in Rules Deployment,3 days,2025-02-26,2025-02-28,Data Connectors Active,Security Analyst,Not Started
Analytics,Custom Rule Development,7 days,2025-03-03,2025-03-11,Built-in Rules Ready,Security Analyst,Not Started
Analytics,UEBA Configuration,3 days,2025-03-12,2025-03-14,Custom Rules Complete,Security Analyst,Not Started
Analytics,Threat Intelligence Integration,3 days,2025-03-17,2025-03-19,Analytics Rules Active,Security Analyst,Not Started
Analytics,Alert Tuning and Optimization,5 days,2025-03-20,2025-03-26,TI Integration Complete,Security Analyst,Not Started
Automation,Logic App Infrastructure,2 days,2025-03-27,2025-03-28,Analytics Complete,Automation Engineer,Not Started
Automation,Auto-Enrichment Playbooks,3 days,2025-03-31,2025-04-02,Logic Apps Ready,Automation Engineer,Not Started
Automation,Auto-Containment Playbooks,3 days,2025-04-03,2025-04-07,Enrichment Playbooks,Automation Engineer,Not Started
Automation,Auto-Ticketing Playbooks,3 days,2025-04-08,2025-04-10,Containment Playbooks,Automation Engineer,Not Started
Automation,Notification Playbooks,2 days,2025-04-11,2025-04-14,Ticketing Playbooks,Automation Engineer,Not Started
Automation,Playbook Testing and Validation,3 days,2025-04-15,2025-04-17,All Playbooks Complete,QA Engineer,Not Started
Test,Functional Testing,5 days,2025-04-18,2025-04-24,Automation Complete,QA Engineer,Not Started
Test,Detection Accuracy Testing,5 days,2025-04-25,2025-05-01,Functional Complete,Security Analyst,Not Started
Test,Performance Testing,3 days,2025-05-02,2025-05-06,Detection Testing,Performance Engineer,Not Started
Test,Security Testing,3 days,2025-05-07,2025-05-09,Performance Complete,Security Tester,Not Started
Test,User Acceptance Testing,5 days,2025-05-12,2025-05-16,All Testing Complete,SOC Team,Not Started
Deploy,Pre-Production Validation,2 days,2025-05-19,2025-05-20,UAT Complete,QA Lead,Not Started
Deploy,Production Cutover,2 days,2025-05-21,2025-05-22,Validation Complete,Deployment Team,Not Started
Deploy,Go-Live Support,5 days,2025-05-23,2025-05-29,Cutover Complete,Support Team,Not Started
Training,Training Material Development,10 days,2025-05-05,2025-05-16,UAT Started,Training Team,Not Started
Training,SOC Analyst Training,3 days,2025-05-19,2025-05-21,Materials Ready,Training Team,Not Started
Training,Threat Hunting Training,2 days,2025-05-22,2025-05-23,Analyst Training,Training Team,Not Started
Training,Administrator Training,2 days,2025-05-26,2025-05-27,Analyst Training,Training Team,Not Started
Closure,Hypercare Support,30 days,2025-05-23,2025-06-25,Go-Live,Support Team,Not Started
Closure,Project Documentation,5 days,2025-06-23,2025-06-27,Hypercare,Project Manager,Not Started
Closure,Project Closure,2 days,2025-06-30,2025-07-01,Documentation Complete,Project Manager,Not Started
# Milestones
#WIDTH: 14,25,20,77,28,17
#ALIGN: left,left,center,left,left,center
Milestone ID,Milestone Name,Target Date,Success Criteria,Owner,Status
M1,Project Kickoff,2025-01-15,Kickoff meeting held; project charter signed; team assigned and onboarded,Project Manager,Not Started
M2,Foundation Complete,2025-01-27,Log Analytics deployed; Sentinel enabled; initial RBAC configured,SIEM Engineer,Not Started
M3,Data Connectors Active,2025-02-25,All 15+ data connectors configured and ingesting; data validation complete,SIEM Engineer,Not Started
M4,Analytics Rules Deployed,2025-03-26,50+ analytics rules active; alert tuning complete; false positives below threshold,Security Analyst,Not Started
M5,Automation Complete,2025-04-17,12 SOAR playbooks deployed and tested; auto-remediation operational,Automation Engineer,Not Started
M6,Testing Complete,2025-05-16,All test cases passed; detection accuracy 95%+; UAT signed off,QA Lead,Not Started
M7,Go-Live,2025-05-22,Production deployment complete; SOC operational; monitoring active,Project Manager,Not Started
M8,Training Complete,2025-05-27,All SOC team trained; administrator certified; hunting capability established,Training Team,Not Started
M9,Project Closure,2025-07-01,Hypercare complete; documentation delivered; lessons learned captured,Project Manager,Not Started
# RACI Matrix
#WIDTH: 30,10,10,10,10,10,10,10,10
#ALIGN: left,center,center,center,center,center,center,center,center
Task/Deliverable,PM,Sec Arch,SIEM Eng,Sec Analyst,Auto Eng,QA,SOC Mgr,Client Sec
Project Charter and Kickoff,A,C,C,I,I,I,C,C
Security Requirements Document,A,R,C,C,I,I,C,C
Log Analytics Workspace Deployment,A,C,R,I,I,I,I,I
Azure Sentinel Enablement,A,C,R,I,I,I,I,I
Data Connector Configuration,A,C,R,C,I,I,I,C
Analytics Rules Deployment,A,C,C,R,I,I,C,C
Custom Rule Development,A,C,C,R,I,I,C,C
UEBA Configuration,A,C,C,R,I,I,I,I
Threat Intelligence Integration,A,C,C,R,I,I,I,C
SOAR Playbook Development,A,C,C,C,R,I,I,I
Playbook Testing,A,C,C,C,C,R,I,I
Detection Accuracy Testing,A,C,C,R,I,C,C,C
SOC Training Delivery,A,C,C,C,I,I,R,C
Production Deployment,A,C,R,C,C,C,C,I
# Communications Plan
#WIDTH: 23,19,38,45,19,20
#ALIGN: left,left,left,left,left,center
Meeting Type,Frequency,Participants,Purpose,Owner,Day/Time
Project Kickoff,Once,All stakeholders and project team,Launch project and align on security objectives and detection priorities,Project Manager,Day 1 10:00
Steering Committee,Bi-weekly,Executive sponsors CISO and PMO,Strategic direction and security program alignment,Project Manager,Alternate Tuesdays 14:00
Status Meeting,Weekly,Core project team,Review progress and address blockers across workstreams,Project Manager,Mondays 10:00
Technical Review,Weekly,Security architect and SIEM engineers,Detection strategy and rule development progress,Security Architect,Wednesdays 14:00
SOC Sync,Weekly,SOC manager and security analysts,Alert quality and operational readiness review,SOC Manager,Thursdays 11:00
Detection Review,Weekly,Security analysts and threat hunters,Analytics rule effectiveness and tuning decisions,Security Analyst,Fridays 10:00
Automation Review,Bi-weekly,Automation engineer and SOC team,Playbook development and testing status,Automation Engineer,Alternate Wednesdays 15:00
Go-Live Readiness,Daily (Week -1),Go-live team and stakeholders,Go-live preparation and cutover checklist review,Project Manager,Daily 09:00
Hypercare Standup,Daily (30 days),Support team and SOC operations,Post-go-live issues and detection tuning,Support Lead,Daily 09:30
