# Project Timeline
#WIDTH: 12,36,13,19,19,26,24,14
#ALIGN: left,left,center,center,center,left,left,center
Phase,Task,Duration,Start Date,End Date,Dependencies,Owner,Status
Foundation,Project Kickoff and Charter,1 day,2025-02-01,2025-02-01,None,Project Manager,Not Started
Foundation,Stakeholder Engagement,3 days,2025-02-03,2025-02-05,Project Kickoff,Project Manager,Not Started
Foundation,Current State Assessment,5 days,2025-02-06,2025-02-12,Stakeholder Engagement,Platform Architect,Not Started
Foundation,Azure Subscription Setup,2 days,2025-02-13,2025-02-14,Assessment Complete,Infrastructure Engineer,Not Started
Foundation,Azure AD Integration,3 days,2025-02-17,2025-02-19,Subscription Ready,Security Engineer,Not Started
Foundation,Azure DevOps Organization Setup,2 days,2025-02-20,2025-02-21,AD Integration,DevOps Lead,Not Started
Infrastructure,Network Infrastructure Configuration,5 days,2025-02-24,2025-02-28,Organization Setup,Network Engineer,Not Started
Infrastructure,Azure Key Vault Setup,2 days,2025-03-03,2025-03-04,Network Ready,Security Engineer,Not Started
Infrastructure,Azure Container Registry Deployment,2 days,2025-03-05,2025-03-06,Key Vault Ready,DevOps Engineer,Not Started
Infrastructure,Azure Kubernetes Service Setup,5 days,2025-03-07,2025-03-13,ACR Ready,Container Engineer,Not Started
Infrastructure,Monitoring Infrastructure Setup,3 days,2025-03-14,2025-03-18,AKS Ready,Monitoring Specialist,Not Started
Pipelines,CI/CD Pipeline Templates Creation,7 days,2025-03-19,2025-03-27,Infrastructure Complete,Senior DevOps Engineer,Not Started
Pipelines,Build Agent Configuration,3 days,2025-03-28,2025-04-01,Templates Ready,DevOps Engineer,Not Started
Pipelines,Security Scanning Integration,5 days,2025-04-02,2025-04-08,Agents Ready,Security Engineer,Not Started
Pipelines,Infrastructure as Code Development,5 days,2025-04-09,2025-04-15,Scanning Ready,Infrastructure Engineer,Not Started
Pipelines,Test Automation Framework Setup,5 days,2025-04-16,2025-04-22,IaC Complete,QA Engineer,Not Started
Migration,Repository Migration Planning,3 days,2025-04-23,2025-04-25,Pipelines Complete,DevOps Lead,Not Started
Migration,Pilot Team Selection,2 days,2025-04-28,2025-04-29,Planning Complete,Project Manager,Not Started
Migration,Pilot Migration Execution,7 days,2025-04-30,2025-05-08,Pilot Selected,Migration Team,Not Started
Migration,Pilot Phase Review,2 days,2025-05-09,2025-05-12,Pilot Complete,Project Manager,Not Started
Test,Functional Testing,5 days,2025-05-13,2025-05-19,Pilot Review,QA Engineer,Not Started
Test,Security Testing,3 days,2025-05-20,2025-05-22,Functional Complete,Security Engineer,Not Started
Test,Performance Testing,3 days,2025-05-23,2025-05-27,Security Complete,Performance Engineer,Not Started
Test,User Acceptance Testing,5 days,2025-05-28,2025-06-03,Performance Complete,Business Users,Not Started
Deploy,Production Deployment,2 days,2025-06-04,2025-06-05,UAT Complete,Deployment Team,Not Started
Deploy,Go-Live Support,5 days,2025-06-06,2025-06-12,Deployment Complete,Support Team,Not Started
Training,Training Material Development,10 days,2025-05-19,2025-05-30,Pilot Complete,Training Team,Not Started
Training,Developer Training,3 days,2025-06-02,2025-06-04,Materials Ready,Training Team,Not Started
Training,Admin Training,2 days,2025-06-05,2025-06-06,Developer Training,Training Team,Not Started
Closure,Hypercare Support,30 days,2025-06-09,2025-07-18,Go-Live,Support Team,Not Started
Closure,Project Documentation,5 days,2025-07-14,2025-07-18,Hypercare,Project Manager,Not Started
Closure,Project Closure,2 days,2025-07-21,2025-07-22,Documentation Complete,Project Manager,Not Started
# Milestones
#WIDTH: 14,25,20,77,28,17
#ALIGN: left,left,center,left,left,center
Milestone ID,Milestone Name,Target Date,Success Criteria,Owner,Status
M1,Project Kickoff,2025-02-01,Kickoff meeting held; project charter signed; team assigned and onboarded,Project Manager,Not Started
M2,Foundation Complete,2025-02-21,Azure DevOps organization configured; AD integration complete; RBAC implemented,DevOps Lead,Not Started
M3,Infrastructure Ready,2025-03-18,AKS cluster deployed; ACR configured; monitoring operational,Infrastructure Engineer,Not Started
M4,Pipeline Framework Complete,2025-04-22,CI/CD templates ready; security scanning integrated; IaC deployed,Senior DevOps Engineer,Not Started
M5,Pilot Complete,2025-05-12,Pilot teams migrated; pipelines operational; lessons learned documented,DevOps Lead,Not Started
M6,Testing Complete,2025-06-03,All test cases passed; security validated; UAT signed off,QA Lead,Not Started
M7,Go-Live,2025-06-05,Production deployment complete; platform operational; monitoring active,Project Manager,Not Started
M8,Training Complete,2025-06-06,All developers trained; admin team certified; documentation delivered,Training Team,Not Started
M9,Project Closure,2025-07-22,Hypercare complete; documentation delivered; lessons learned captured,Project Manager,Not Started
# RACI Matrix
#WIDTH: 30,10,10,10,10,10,10,10,10
#ALIGN: left,center,center,center,center,center,center,center,center
Task/Deliverable,PM,DevOps Lead,Sec Eng,Infra Eng,QA,Dev Team,Client IT,Sponsor
Project Charter and Kickoff,A,C,I,I,I,I,C,C
Azure DevOps Organization Setup,A,R,C,C,I,I,C,I
Infrastructure Deployment,A,C,C,R,I,I,C,I
CI/CD Pipeline Framework,A,R,C,C,I,C,I,I
Security Scanning Integration,A,C,R,I,I,I,C,I
Repository Migration,A,R,C,I,I,C,C,I
Test Automation Setup,A,C,I,I,R,C,I,I
Developer Training,A,C,I,I,I,R,I,I
Production Deployment,A,R,C,C,C,I,C,I
Hypercare Support,A,R,C,C,C,I,C,I
# Communications Plan
#WIDTH: 23,19,38,45,19,20
#ALIGN: left,left,left,left,left,center
Meeting Type,Frequency,Participants,Purpose,Owner,Day/Time
Project Kickoff,Once,All stakeholders and project team,Launch project and align on objectives,Project Manager,Day 1 10:00
Steering Committee,Bi-weekly,Executive sponsors and PMO,Strategic direction and issue resolution,Project Manager,Alternate Tuesdays 14:00
Status Meeting,Weekly,Core project team,Review progress and address blockers,Project Manager,Mondays 10:00
Technical Review,Weekly,DevOps lead and engineers,Pipeline development and technical decisions,DevOps Lead,Wednesdays 14:00
Security Review,Bi-weekly,Security engineer and DevOps team,Security scanning and compliance review,Security Engineer,Alternate Thursdays 11:00
Migration Sync,Weekly,Migration team and pilot teams,Migration progress and issue resolution,DevOps Lead,Fridays 10:00
Go-Live Readiness,Daily (Week -1),Go-live team and stakeholders,Cutover preparation and checklist review,Project Manager,Daily 09:00
Hypercare Standup,Daily (30 days),Support team and operations,Post-go-live issues and optimization,Support Lead,Daily 09:30
