# Project Timeline
#WIDTH: 12,36,13,19,19,26,24,14
#ALIGN: left,left,center,center,center,left,left,center
Phase,Task,Duration,Start Date,End Date,Dependencies,Owner,Status
Discovery,Project Kickoff,1 day,[START_DATE],[START_DATE+1],None,EO Project Manager,Not Started
Discovery,Current State Assessment,4 days,[START_DATE+1],[START_DATE+5],Project Kickoff,EO Sales Engineer,Not Started
Discovery,Azure Environment Assessment,5 days,[START_DATE+3],[START_DATE+8],Current State Assessment,EO Engineer,Not Started
Discovery,Network Connectivity Review,5 days,[START_DATE+5],[START_DATE+10],Current State Assessment,EO Engineer,Not Started
Planning,AVD Solution Architecture,10 days,[START_DATE+8],[START_DATE+18],Azure Environment Assessment,EO Quarterback,Not Started
Planning,Application Assessment,8 days,[START_DATE+12],[START_DATE+20],AVD Solution Architecture,EO Quarterback,Not Started
Planning,User Profile Strategy,7 days,[START_DATE+15],[START_DATE+22],Current State Assessment,EO Quarterback,Not Started
Planning,Security Architecture,7 days,[START_DATE+18],[START_DATE+25],AVD Solution Architecture,EO Engineer,Not Started
Infrastructure,Azure Infrastructure Setup,10 days,[START_DATE+25],[START_DATE+35],AVD Solution Architecture,EO Engineer,Not Started
Infrastructure,Host Pool Configuration,10 days,[START_DATE+30],[START_DATE+40],Azure Infrastructure Setup,EO Engineer,Not Started
Development,Golden Image Creation,15 days,[START_DATE+35],[START_DATE+50],Application Assessment,EO Engineer,Not Started
Development,Application Packaging,20 days,[START_DATE+25],[START_DATE+45],Application Assessment,EO Engineer,Not Started
Development,Profile Container Setup,10 days,[START_DATE+45],[START_DATE+55],User Profile Strategy,EO Engineer,Not Started
Development,Network Optimization,10 days,[START_DATE+40],[START_DATE+50],Network Connectivity Review,EO Engineer,Not Started
Development,Monitoring Configuration,10 days,[START_DATE+50],[START_DATE+60],Host Pool Configuration,EO Engineer,Not Started
Development,Security Implementation,10 days,[START_DATE+55],[START_DATE+65],Security Architecture,EO Engineer,Not Started
Development,User Access Configuration,10 days,[START_DATE+60],[START_DATE+70],Profile Container Setup,EO Engineer,Not Started
Testing,Infrastructure Testing,10 days,[START_DATE+65],[START_DATE+75],Monitoring Configuration,EO Engineer,Not Started
Testing,Application Testing,10 days,[START_DATE+75],[START_DATE+85],Application Packaging,EO Engineer,Not Started
Testing,User Experience Testing,7 days,[START_DATE+80],[START_DATE+87],User Access Configuration,EO Engineer,Not Started
Testing,Security Testing,15 days,[START_DATE+70],[START_DATE+85],Security Implementation,EO Engineer,Not Started
Testing,Performance Testing,7 days,[START_DATE+85],[START_DATE+92],User Experience Testing,EO Engineer,Not Started
Testing,User Acceptance Testing,10 days,[START_DATE+90],[START_DATE+100],Security Testing,EO Sales Engineer,Not Started
Deployment,Production Environment Setup,7 days,[START_DATE+95],[START_DATE+102],Azure Infrastructure Setup,EO Engineer,Not Started
Deployment,Application Deployment,5 days,[START_DATE+100],[START_DATE+105],Production Environment Setup,EO Engineer,Not Started
Deployment,Production Validation,2 days,[START_DATE+105],[START_DATE+107],Application Deployment,EO Engineer,Not Started
Training,Administrator Training,10 days,[START_DATE+95],[START_DATE+105],User Acceptance Testing,EO Engineer,Not Started
Training,End User Training,7 days,[START_DATE+105],[START_DATE+112],Production Validation,EO Engineer,Not Started
Training,Documentation Delivery,15 days,[START_DATE+100],[START_DATE+115],Production Validation,EO Engineer,Not Started
Go-Live,Production Go-Live,2 days,[START_DATE+112],[START_DATE+114],End User Training,EO Project Manager,Not Started
Support,Go-Live Support,7 days,[START_DATE+114],[START_DATE+121],Production Go-Live,EO Engineer,Not Started
Support,Performance Monitoring,30 days,[START_DATE+121],[START_DATE+151],Go-Live Support,EO Engineer,Not Started
Closure,Knowledge Transfer,10 days,[START_DATE+140],[START_DATE+150],Documentation Delivery,EO Project Manager,Not Started
Closure,Project Closure,2 days,[START_DATE+151],[START_DATE+153],Performance Monitoring,EO Project Manager,Not Started
# Milestones
#WIDTH: 14,25,20,77,28,17
#ALIGN: left,left,center,left,left,center
Milestone ID,Milestone Name,Target Date,Success Criteria,Owner,Status
MS-001,Project Kickoff Complete,[START_DATE+1],Project charter approved and team assembled,EO Project Manager,Not Started
MS-002,Solution Architecture Approved,[START_DATE+18],Architecture design signed off by stakeholders,EO Quarterback,Not Started
MS-003,Profile Strategy Approved,[START_DATE+22],FSLogix profile management design approved,EO Quarterback,Not Started
MS-004,Azure Infrastructure Ready,[START_DATE+35],Virtual network and core services operational,EO Engineer,Not Started
MS-005,Profile Containers Configured,[START_DATE+55],FSLogix containers tested and validated,EO Engineer,Not Started
MS-006,Security Validation Complete,[START_DATE+85],Security controls tested and compliance verified,EO Engineer,Not Started
MS-007,UAT Sign-off,[START_DATE+100],Business users approve virtual desktop experience,EO Sales Engineer,Not Started
MS-008,Production Validation Complete,[START_DATE+107],Production environment validated and ready,EO Engineer,Not Started
MS-009,Production Go-Live,[START_DATE+114],AVD solution live with user access,EO Project Manager,Not Started
MS-010,Project Closure,[START_DATE+153],All deliverables accepted and project closed,EO Project Manager,Not Started
# RACI Matrix
#WIDTH: 30,10,10,10,10,10,10,10,10
#ALIGN: left,center,center,center,center,center,center,center,center
Task/Deliverable,PM,Arch,Eng,Sec,QA,Client IT,Client Sec,Sponsor
Solution Architecture,C,A,R,C,I,C,I,I
Infrastructure Setup,C,R,R,C,I,C,I,I
Configuration & Tuning,A,R,R,C,I,C,I,I
Integration Development,C,A,R,C,I,C,I,I
Testing & Validation,R,R,R,C,A,C,C,I
Security Implementation,C,R,R,A,C,C,A,I
Knowledge Transfer,A,C,C,I,I,A,I,R
Project Management,A,I,I,I,I,C,I,R
Application Packaging,C,R,A,I,C,C,I,I
User Profile Management,C,R,A,I,C,C,I,I
Monitoring Setup,C,R,A,I,C,C,I,I
Network Optimization,C,A,R,C,I,C,I,I
User Access Control,C,R,R,A,I,C,A,I
Performance Testing,R,C,R,I,A,C,I,I
Go-Live Support,A,C,R,C,C,C,I,R
# Communications Plan
#WIDTH: 23,19,38,45,19,20
#ALIGN: left,left,left,left,left,center
Meeting Type,Frequency,Participants,Purpose,Owner,Day/Time
Executive Status Report,Weekly,Executive Sponsors,AVD project status and decisions,EO Project Manager,Fridays 2PM
Steering Committee,Bi-weekly,Steering Committee Members,Strategic direction and scope decisions,EO Project Manager,Every other Monday 10AM
Development Team Standup,Daily,Core Development Team,Daily coordination and impediment removal,EO Quarterback,Daily 9AM
Architecture Review,Weekly,Technical and Infrastructure Teams,Architecture decisions and optimization,EO Quarterback,Wednesdays 2PM
Risk Review,Bi-weekly,Risk Management Team,Risk monitoring and mitigation,EO Quarterback,Every other Thursday 3PM
Business User Feedback,Weekly,Desktop Users and Managers,Requirements validation and feedback,EO Sales Engineer,Tuesdays 1PM
Sprint Review,Bi-weekly,Development Team,Infrastructure progress demonstration,EO Quarterback,Every other Friday 10AM
Microsoft Support Call,Weekly,Microsoft Technical Teams,Service optimization coordination,EO Engineer,Thursdays 11AM
User Experience Review,Weekly,QA and User Representatives,Performance and satisfaction validation,EO Quarterback,Wednesdays 10AM
Change Control Board,As Needed,Change Control Board Members,Configuration change approvals,EO Engineer,As Required
Security Review,Monthly,Security and Compliance Teams,Security posture and compliance,EO Quarterback,First Monday 2PM
Go-Live Preparation,Daily (Pre-Launch),Go-Live Team,Production deployment readiness,EO Project Manager,Daily 8AM
Post-Implementation Review,Monthly (Post-Launch),Project and Operations Teams,Performance review and optimization,EO Quarterback,Monthly 1PM
