# Project Timeline
#WIDTH: 12,36,13,19,19,26,24,14
#ALIGN: left,left,center,center,center,left,left,center
Phase,Task,Duration,Start Date,End Date,Dependencies,Owner,Status
Discovery,Project Kickoff and Network Assessment,1 day,[START_DATE],[START_DATE+1],None,Project Manager,Not Started
Discovery,Current Network Infrastructure Assessment,7 days,[START_DATE+1],[START_DATE+8],Project Kickoff,Network Architect,Not Started
Discovery,Azure Environment and Service Availability Assessment,7 days,[START_DATE+3],[START_DATE+10],Current Network Assessment,Cloud Engineer,Not Started
Discovery,Branch Site Survey and Connectivity Requirements,10 days,[START_DATE+5],[START_DATE+15],Current Network Assessment,Network Engineer,Not Started
Planning,Virtual WAN Hub Architecture Design,12 days,[START_DATE+10],[START_DATE+22],Azure Environment Assessment,Network Architect,Not Started
Planning,Hub-and-Spoke Topology and Routing Design,10 days,[START_DATE+15],[START_DATE+25],Architecture Design,Network Architect,Not Started
Planning,Security Architecture and Firewall Design,10 days,[START_DATE+18],[START_DATE+28],Current Network Assessment,Security Architect,Not Started
Planning,ExpressRoute Circuit Planning and Design,10 days,[START_DATE+20],[START_DATE+30],Architecture Design,Network Engineer,Not Started
Infrastructure,Azure Virtual WAN Foundation Setup,7 days,[START_DATE+30],[START_DATE+37],Architecture Design,Cloud Engineer,Not Started
Infrastructure,Regional Virtual WAN Hub Deployment,15 days,[START_DATE+35],[START_DATE+50],Foundation Setup,Cloud Engineer,Not Started
Infrastructure,ExpressRoute Circuit Provisioning,40 days,[START_DATE+25],[START_DATE+65],ExpressRoute Planning,Network Engineer,Not Started
Infrastructure,Azure Firewall Deployment and Configuration,10 days,[START_DATE+45],[START_DATE+55],Hub Deployment,Security Engineer,Not Started
Development,Site-to-Site VPN Gateway Configuration,20 days,[START_DATE+50],[START_DATE+70],Site Survey Complete,Network Engineer,Not Started
Development,ExpressRoute Circuit Hub Integration,10 days,[START_DATE+65],[START_DATE+75],Circuit Provisioning,Network Engineer,Not Started
Development,Traffic Routing and Optimization Policies,13 days,[START_DATE+55],[START_DATE+68],Topology Design,Network Engineer,Not Started
Development,Firewall Rules and Security Policy Implementation,10 days,[START_DATE+60],[START_DATE+70],Firewall Deployment,Security Engineer,Not Started
Development,Network Monitoring and Analytics Configuration,10 days,[START_DATE+70],[START_DATE+80],Hub Deployment,Cloud Engineer,Not Started
Testing,Hub-to-Hub Connectivity and Routing Tests,10 days,[START_DATE+75],[START_DATE+85],Routing Policies,Network Engineer,Not Started
Testing,Branch Site Connectivity and Application Tests,15 days,[START_DATE+80],[START_DATE+95],VPN Configuration,Network Engineer,Not Started
Testing,Network Performance and Load Testing,7 days,[START_DATE+85],[START_DATE+92],Monitoring Configuration,Performance Engineer,Not Started
Testing,Security Validation and Firewall Testing,15 days,[START_DATE+75],[START_DATE+90],Security Implementation,Security Engineer,Not Started
Testing,Failover and Redundancy Testing,7 days,[START_DATE+90],[START_DATE+97],Performance Testing,Network Engineer,Not Started
Testing,User Acceptance Testing and Business Validation,10 days,[START_DATE+95],[START_DATE+105],Security Validation,Business Analyst,Not Started
Deployment,Production Cutover Planning and Preparation,7 days,[START_DATE+100],[START_DATE+107],Foundation Setup,Project Manager,Not Started
Deployment,Phased Site Migration to Virtual WAN,20 days,[START_DATE+105],[START_DATE+125],Cutover Planning,Network Engineer,Not Started
Deployment,Production Network Validation,2 days,[START_DATE+125],[START_DATE+127],Site Migration,Network Engineer,Not Started
Training,Network Administrator Training Program,10 days,[START_DATE+110],[START_DATE+120],UAT Complete,Training Specialist,Not Started
Training,Network Operations Center Staff Training,7 days,[START_DATE+120],[START_DATE+127],Production Validation,Training Specialist,Not Started
Training,Technical Documentation and Runbooks,15 days,[START_DATE+115],[START_DATE+130],Production Validation,Technical Writer,Not Started
Go-Live,Production Go-Live and Network Cutover,2 days,[START_DATE+127],[START_DATE+129],Training Complete,Project Manager,Not Started
Support,Intensive Go-Live Support Period,7 days,[START_DATE+129],[START_DATE+136],Production Go-Live,Support Team,Not Started
Support,Performance Monitoring and Optimization,30 days,[START_DATE+136],[START_DATE+166],Go-Live Support,Network Engineer,Not Started
Closure,Knowledge Transfer to Operations Team,10 days,[START_DATE+150],[START_DATE+160],Documentation Complete,Project Manager,Not Started
Closure,Project Closure and Lessons Learned,2 days,[START_DATE+166],[START_DATE+168],Performance Baseline,Project Manager,Not Started
# Milestones
#WIDTH: 14,25,20,77,28,17
#ALIGN: left,left,center,left,left,center
Milestone ID,Milestone Name,Target Date,Success Criteria,Owner,Status
MS-001,Project Kickoff Complete,[START_DATE+1],Project charter signed; team mobilized; stakeholders aligned,Project Manager,Pending
MS-002,Architecture Design Approved,[START_DATE+22],Virtual WAN hub design validated; routing topology finalized; security architecture approved,Network Architect,Pending
MS-003,Infrastructure Foundation Ready,[START_DATE+37],Azure Virtual WAN deployed; resource groups configured; subscriptions prepared,Cloud Engineer,Pending
MS-004,Hub Deployment Complete,[START_DATE+50],All regional hubs operational; VPN gateways configured; ExpressRoute gateways ready,Cloud Engineer,Pending
MS-005,Security Implementation Complete,[START_DATE+70],Azure Firewall deployed; security policies active; threat protection enabled,Security Engineer,Pending
MS-006,ExpressRoute Integration Complete,[START_DATE+75],ExpressRoute circuits connected; Global Reach configured; routing validated,Network Engineer,Pending
MS-007,Security Validation Passed,[START_DATE+90],Firewall rules tested; threat detection verified; compliance validated,Security Engineer,Pending
MS-008,User Acceptance Testing Complete,[START_DATE+105],Business validation passed; performance metrics achieved; stakeholder sign-off obtained,Business Analyst,Pending
MS-009,Production Cutover Complete,[START_DATE+127],All sites migrated; production traffic flowing; network performance validated,Project Manager,Pending
MS-010,Project Closure,[START_DATE+168],Knowledge transfer complete; documentation delivered; project closed,Project Manager,Pending
# RACI Matrix
#WIDTH: 30,10,10,10,10,10,10,10,10
#ALIGN: left,center,center,center,center,center,center,center,center
Task/Deliverable,PM,Arch,Eng,Sec,QA,Client IT,Client Sec,Sponsor
Project Kickoff and Charter,A,C,C,C,I,R,I,R
Current Network Assessment,C,R,R,C,I,A,C,I
Virtual WAN Architecture Design,C,A,R,C,I,C,I,I
Security Architecture Design,C,C,R,A,I,C,R,I
Azure Infrastructure Setup,C,R,A,C,I,C,I,I
Virtual Hub Deployment,R,R,A,C,I,C,I,I
ExpressRoute Provisioning,C,R,A,I,I,C,I,I
Azure Firewall Configuration,C,C,R,A,I,C,C,I
VPN Gateway Configuration,C,R,A,C,I,C,I,I
Routing Policy Implementation,C,R,A,I,I,C,I,I
Security Policy Implementation,C,C,R,A,I,C,A,I
Monitoring Configuration,C,R,A,I,I,C,I,I
Connectivity Testing,R,R,A,C,R,C,I,I
Security Validation Testing,R,C,R,A,A,C,R,I
Performance Testing,R,C,A,I,R,C,I,I
User Acceptance Testing,C,I,C,I,R,A,C,I
Production Cutover Planning,A,R,R,C,I,C,I,R
Site Migration Execution,R,C,A,C,I,C,I,I
Network Administrator Training,C,R,R,C,I,A,I,I
NOC Staff Training,C,R,R,I,I,A,I,I
Documentation Delivery,R,R,A,C,C,A,I,I
Knowledge Transfer,R,R,R,C,I,A,I,I
Production Go-Live,A,R,R,C,I,C,I,R
Go-Live Support,R,C,A,C,I,C,I,I
Project Closure,A,C,I,I,I,C,I,R
# Communications Plan
#WIDTH: 23,19,38,45,19,20
#ALIGN: left,left,left,left,left,center
Meeting Type,Frequency,Participants,Purpose,Owner,Day/Time
Project Kickoff,One-time,All stakeholders and project team,Align on objectives and deliverables,Project Manager,[TBD]
Weekly Status Meeting,Weekly,PM | Arch | Eng | Client IT Lead,Review progress and address issues,Project Manager,Mondays 10am
Steering Committee,Bi-weekly,PM | Sponsor | Client Management | Arch,Executive updates and decisions,Project Manager,Thursdays 2pm
Technical Design Review,As needed,Arch | Eng | Sec | Client IT,Review and approve technical designs,Network Architect,[TBD]
Security Review,Bi-weekly,Sec | Client Sec | PM | Arch,Security compliance and validation,Security Architect,Wednesdays 11am
Testing Status,Weekly,QA | Eng | PM | Client IT,Testing progress and issue resolution,QA Lead,Fridays 9am
Training Sessions,As scheduled,Training Lead | Client IT | Operations,Knowledge transfer and training,Training Specialist,[TBD]
Go-Live Readiness,Daily during cutover,PM | Arch | Eng | Client IT | Sponsor,Production readiness validation,Project Manager,[TBD]
Post-Go-Live Support,Daily for 2 weeks,Support Team | Client IT | NOC,Monitor production and resolve issues,Support Lead,[TBD]
Project Retrospective,One-time at closure,All project team members,Lessons learned and best practices,Project Manager,[TBD]
