# Project Timeline
#WIDTH: 12,36,13,19,19,26,24,14
#ALIGN: left,left,center,center,center,left,left,center
Phase,Task,Duration,Start Date,End Date,Dependencies,Owner,Status
Discovery,Project Kickoff,1 day,[START_DATE],[START_DATE+1],None,EO Project Manager,Not Started
Discovery,Network Infrastructure Assessment,5 days,[START_DATE+1],[START_DATE+6],Project Kickoff,EO Network Engineer,Not Started
Discovery,Device Compatibility Analysis (IOS-XE 16.12+),5 days,[START_DATE+3],[START_DATE+8],Network Assessment,EO Network Engineer,Not Started
Discovery,DNA Center Requirements Gathering,4 days,[START_DATE+5],[START_DATE+9],Network Assessment,EO Quarterback,Not Started
Discovery,Integration Requirements (AD/ServiceNow/NetBox),3 days,[START_DATE+6],[START_DATE+9],Requirements Gathering,EO Automation Engineer,Not Started
Foundation,DNA Center Appliance Rack & Stack,3 days,[START_DATE+9],[START_DATE+12],Discovery Complete,EO Network Engineer,Not Started
Foundation,DNA Center HA Configuration,5 days,[START_DATE+12],[START_DATE+17],Rack & Stack,EO Network Engineer,Not Started
Foundation,Active Directory Integration Setup,3 days,[START_DATE+15],[START_DATE+18],DNA Center Config,EO Automation Engineer,Not Started
Foundation,Pilot Device Onboarding (50 devices),7 days,[START_DATE+17],[START_DATE+24],DNA Center Config,EO Network Engineer,Not Started
Foundation,Policy Framework Design,5 days,[START_DATE+19],[START_DATE+24],Pilot Onboarding,EO Quarterback,Not Started
Analytics,Full Device Onboarding (150 devices),10 days,[START_DATE+24],[START_DATE+34],Pilot Complete,EO Network Engineer,Not Started
Analytics,AI Network Analytics Configuration,7 days,[START_DATE+28],[START_DATE+35],Device Onboarding,EO Quarterback,Not Started
Analytics,Predictive Insights Enablement,5 days,[START_DATE+32],[START_DATE+37],Analytics Config,EO Quarterback,Not Started
Analytics,Network Policy Automation (VLAN/ACL),7 days,[START_DATE+35],[START_DATE+42],Analytics Config,EO Automation Engineer,Not Started
Analytics,Dashboard and Reporting Setup,5 days,[START_DATE+38],[START_DATE+43],Policy Automation,EO Network Engineer,Not Started
Integration,Application Experience Monitoring Setup,7 days,[START_DATE+43],[START_DATE+50],Analytics Operational,EO Quarterback,Not Started
Integration,ServiceNow ITSM Integration,7 days,[START_DATE+45],[START_DATE+52],App Monitoring,EO Automation Engineer,Not Started
Integration,NetBox IPAM Integration,5 days,[START_DATE+50],[START_DATE+55],ServiceNow Integration,EO Automation Engineer,Not Started
Integration,Integration Testing and Validation,5 days,[START_DATE+55],[START_DATE+60],All Integrations,EO Network Engineer,Not Started
Testing,Functional Testing,5 days,[START_DATE+60],[START_DATE+65],Integration Complete,EO Network Engineer,Not Started
Testing,Performance and Load Testing,4 days,[START_DATE+63],[START_DATE+67],Functional Testing,EO Quarterback,Not Started
Testing,Security Validation,3 days,[START_DATE+65],[START_DATE+68],Performance Testing,Security Team,Not Started
Testing,User Acceptance Testing,5 days,[START_DATE+68],[START_DATE+73],Security Validation,Network Operations,Not Started
Optimization,Policy Fine-tuning and Optimization,5 days,[START_DATE+73],[START_DATE+78],UAT Complete,EO Quarterback,Not Started
Optimization,Team Training - DNA Center Admin,8 hours,[START_DATE+78],[START_DATE+79],Optimization,EO Network Engineer,Not Started
Optimization,Team Training - AI Analytics Operations,8 hours,[START_DATE+79],[START_DATE+80],Admin Training,EO Quarterback,Not Started
Optimization,Team Training - Policy Automation,8 hours,[START_DATE+80],[START_DATE+81],Analytics Training,EO Automation Engineer,Not Started
Optimization,Team Training - Troubleshooting Workshop,8 hours,[START_DATE+81],[START_DATE+82],Automation Training,EO Network Engineer,Not Started
Go-Live,Production Go-Live,2 days,[START_DATE+82],[START_DATE+84],Training Complete,EO Project Manager,Not Started
Support,Hypercare Support Week 1,7 days,[START_DATE+84],[START_DATE+91],Go-Live,EO Network Engineer,Not Started
Support,Hypercare Support Week 2,7 days,[START_DATE+91],[START_DATE+98],Hypercare Week 1,EO Network Engineer,Not Started
Support,Hypercare Support Weeks 3-4,14 days,[START_DATE+98],[START_DATE+112],Hypercare Week 2,EO Network Engineer,Not Started
Closure,Knowledge Transfer Completion,5 days,[START_DATE+105],[START_DATE+110],Hypercare,EO Project Manager,Not Started
Closure,Documentation Delivery,3 days,[START_DATE+108],[START_DATE+111],Knowledge Transfer,EO Quarterback,Not Started
Closure,Project Closure and Lessons Learned,2 days,[START_DATE+111],[START_DATE+113],Documentation,EO Project Manager,Not Started
# Milestones
#WIDTH: 14,30,20,62,28,17
#ALIGN: left,left,center,left,left,center
Milestone ID,Milestone Name,Target Date,Success Criteria,Owner,Status
M1,Foundation Complete,[START_DATE+28],DNA Center HA deployed; 50 pilot devices onboarded; AD integration operational,EO Network Engineer,Not Started
M2,Analytics Operational,[START_DATE+56],All 200 devices onboarded; AI analytics enabled; Network policies automated,EO Quarterback,Not Started
M3,Integrations Complete,[START_DATE+70],ServiceNow and NetBox integrations live; Application monitoring configured,EO Automation Engineer,Not Started
M4,Go-Live,[START_DATE+84],Production operational; Team trained (32 hours); All tests passed,EO Project Manager,Not Started
M5,Hypercare End,[START_DATE+112],Support period complete; Knowledge transfer done; Lessons learned documented,EO Project Manager,Not Started
# RACI Matrix
#WIDTH: 35,8,8,8,8,8,8,8,8,8
#ALIGN: left,center,center,center,center,center,center,center,center,center
Task/Deliverable,PM,QB,NetEng,AutoEng,SecArch,NetOps,NetLead,AppSME,Client
Project Charter & Kickoff,A,C,C,I,I,I,C,I,C
Network Infrastructure Assessment,A,C,R,I,I,I,C,I,I
Device Compatibility Analysis,A,C,R,I,I,I,C,I,I
DNA Center Requirements,A,R,C,C,C,I,C,C,C
DNA Center HA Deployment,A,C,R,I,I,I,I,I,I
Active Directory Integration,A,C,I,R,C,I,I,I,C
Pilot Device Onboarding (50),A,C,R,I,I,I,C,I,I
Policy Framework Design,A,R,C,C,C,I,C,I,I
Full Device Onboarding (150),A,C,R,I,I,C,C,I,I
AI Analytics Configuration,A,R,C,I,I,I,C,I,I
Network Policy Automation,A,C,C,R,C,I,C,I,I
Application Experience Setup,A,R,C,I,I,I,I,R,C
ServiceNow Integration,A,C,I,R,I,C,I,I,C
NetBox Integration,A,C,I,R,I,C,I,I,C
Testing and Validation,A,C,R,C,C,C,C,I,I
Security Validation,A,I,C,I,R,I,C,I,C
User Acceptance Testing,A,C,I,I,I,R,C,C,R
Team Training (32 hours),A,R,R,R,I,C,C,I,I
Production Go-Live,A,C,C,C,I,C,C,I,R
Hypercare Support,A,C,R,C,I,C,C,I,I
# Communications Plan
#WIDTH: 25,15,40,50,22,18
#ALIGN: left,left,left,left,left,center
Meeting Type,Frequency,Participants,Purpose,Owner,Day/Time
Project Kickoff,Once,All stakeholders,Launch project and align on DNA Center objectives and AI analytics strategy,EO Project Manager,Day 1
Steering Committee,Bi-weekly,Executive sponsors and PMO,Strategic direction and major decisions on network transformation,EO Project Manager,Alternate Tuesdays
Project Status Meeting,Weekly,Core project team,Review progress and address blockers across all workstreams,EO Project Manager,Mondays 10:00
Technical Design Review,Weekly,Technical leads,DNA Center architecture decisions and integration challenges,EO Quarterback,Wednesdays 14:00
Device Onboarding Standup,Daily,Onboarding team,Device deployment progress and compatibility issues,EO Network Engineer,Daily 09:30
Risk & Issue Review,Bi-weekly,PM and Risk Manager,Risk assessment and mitigation tracking,EO Project Manager,Alternate Fridays
Integration Review,Weekly,Integration team,ServiceNow/NetBox integration progress and API validation,EO Automation Engineer,Thursdays 11:00
Security Review,Bi-weekly,Security team and architects,Security controls and compliance validation,Security Architect,Alternate Wednesdays
Network Operations Sync,Weekly,Network operations team,AI analytics feedback and operational workflow validation,Network Lead,Fridays 14:00
Go-Live Readiness,Daily (2 weeks pre),Go-live team,Deployment preparation and checklist review,EO Project Manager,Daily 09:00
Post Go-Live Review,Weekly (hypercare),Support and operations,Production stability and AI analytics performance,EO Network Engineer,Mondays 11:00
