# Project Timeline
#WIDTH: 12,36,13,19,19,26,24,14
#ALIGN: left,left,center,center,center,left,left,center
Phase,Task,Duration,Start Date,End Date,Dependencies,Owner,Status
Discovery,Project Kickoff,1 day,[START_DATE],[START_DATE+1],None,EO Project Manager,Not Started
Discovery,Infrastructure Assessment,5 days,[START_DATE+1],[START_DATE+6],Project Kickoff,EO HCI Engineer,Not Started
Discovery,VM Workload Analysis (72 hours),5 days,[START_DATE+3],[START_DATE+8],Infrastructure Assessment,EO Virtualization Engineer,Not Started
Discovery,HyperFlex Sizing and Design,4 days,[START_DATE+6],[START_DATE+10],VM Workload Analysis,EO Quarterback,Not Started
Discovery,Network Integration Planning,3 days,[START_DATE+8],[START_DATE+11],HyperFlex Sizing,EO HCI Engineer,Not Started
Discovery,Migration Strategy Definition,2 days,[START_DATE+10],[START_DATE+12],Network Planning,EO Virtualization Engineer,Not Started
Foundation,Data Center Preparation,5 days,[START_DATE+12],[START_DATE+17],Discovery Complete,Client Infrastructure,Not Started
Foundation,HyperFlex Hardware Rack and Stack,3 days,[START_DATE+17],[START_DATE+20],Data Center Prep,EO HCI Engineer,Not Started
Foundation,UCS 6454 Fabric Interconnect Setup,2 days,[START_DATE+18],[START_DATE+20],Hardware Installation,EO HCI Engineer,Not Started
Foundation,HyperFlex Cluster Deployment (80 hrs),5 days,[START_DATE+20],[START_DATE+25],FI Setup,EO HCI Engineer,Not Started
Foundation,Cisco Intersight Integration (20 hrs),2 days,[START_DATE+23],[START_DATE+25],Cluster Deployment,EO HCI Engineer,Not Started
Virtualization,VMware vSphere 8 Installation (72 hrs),5 days,[START_DATE+25],[START_DATE+30],HyperFlex Cluster,EO Virtualization Engineer,Not Started
Virtualization,vCenter Configuration,3 days,[START_DATE+28],[START_DATE+31],vSphere Install,EO Virtualization Engineer,Not Started
Virtualization,HA and DRS Configuration,2 days,[START_DATE+30],[START_DATE+32],vCenter Config,EO Virtualization Engineer,Not Started
Virtualization,Network Connectivity Validation,2 days,[START_DATE+31],[START_DATE+33],HA/DRS Config,EO HCI Engineer,Not Started
Migration,Pilot Migration: 20 VMs (30 hrs),3 days,[START_DATE+33],[START_DATE+36],Network Validation,EO Virtualization Engineer,Not Started
Migration,Pilot Validation and Testing,2 days,[START_DATE+36],[START_DATE+38],Pilot Migration,Client Applications,Not Started
Migration,Wave 1: 50 Business VMs (40 hrs),4 days,[START_DATE+38],[START_DATE+42],Pilot Complete,EO Virtualization Engineer,Not Started
Migration,Wave 1 Application Testing,2 days,[START_DATE+42],[START_DATE+44],Wave 1 Migration,Client Applications,Not Started
Migration,Wave 2: 50 Critical VMs (50 hrs),5 days,[START_DATE+44],[START_DATE+49],Wave 1 Complete,EO Virtualization Engineer,Not Started
Migration,Wave 2 Application Testing,2 days,[START_DATE+49],[START_DATE+51],Wave 2 Migration,Client Applications,Not Started
Migration,Wave 3: Remaining VMs (40 hrs),4 days,[START_DATE+51],[START_DATE+55],Wave 2 Complete,EO Virtualization Engineer,Not Started
Migration,Wave 3 Final Validation,2 days,[START_DATE+55],[START_DATE+57],Wave 3 Migration,Client Applications,Not Started
Optimization,Performance Tuning (45 hrs),4 days,[START_DATE+57],[START_DATE+61],Migration Complete,EO Quarterback,Not Started
Optimization,Veeam Backup Integration,3 days,[START_DATE+59],[START_DATE+62],Performance Tuning,EO HCI Engineer,Not Started
Optimization,Team Training: HyperFlex Admin,8 hours,[START_DATE+62],[START_DATE+63],Backup Integration,EO HCI Engineer,Not Started
Optimization,Team Training: Intersight Cloud,4 hours,[START_DATE+63],[START_DATE+64],HyperFlex Training,EO HCI Engineer,Not Started
Optimization,Team Training: vSphere on HX,8 hours,[START_DATE+64],[START_DATE+65],Intersight Training,EO Virtualization Engineer,Not Started
Optimization,Team Training: Backup Recovery,4 hours,[START_DATE+65],[START_DATE+66],vSphere Training,EO HCI Engineer,Not Started
Go-Live,Production Go-Live,2 days,[START_DATE+66],[START_DATE+68],Training Complete,EO Project Manager,Not Started
Support,Hypercare Support Week 1,7 days,[START_DATE+68],[START_DATE+75],Go-Live,EO HCI Engineer,Not Started
Support,Hypercare Support Week 2,7 days,[START_DATE+75],[START_DATE+82],Hypercare Week 1,EO HCI Engineer,Not Started
Support,Hypercare Support Weeks 3-4,14 days,[START_DATE+82],[START_DATE+96],Hypercare Week 2,EO Virtualization Engineer,Not Started
Closure,Legacy Decommission Planning,5 days,[START_DATE+85],[START_DATE+90],Hypercare,Client Infrastructure,Not Started
Closure,Knowledge Transfer Completion,3 days,[START_DATE+90],[START_DATE+93],Decommission Plan,EO Project Manager,Not Started
Closure,Documentation Delivery,2 days,[START_DATE+93],[START_DATE+95],Knowledge Transfer,EO Quarterback,Not Started
Closure,Project Closure,1 day,[START_DATE+95],[START_DATE+96],Documentation,EO Project Manager,Not Started
# Milestones
#WIDTH: 14,30,20,62,28,17
#ALIGN: left,left,center,left,left,center
Milestone ID,Milestone Name,Target Date,Success Criteria,Owner,Status
M1,Design Complete,[START_DATE+14],HyperFlex architecture approved; Network design complete; Migration strategy defined,EO Quarterback,Not Started
M2,Cluster Deployed,[START_DATE+28],HyperFlex 4-node cluster operational; Intersight integration complete; vSphere 8 installed,EO HCI Engineer,Not Started
M3,Pilot Complete,[START_DATE+38],20 VMs migrated successfully; Application testing passed; Performance validated,EO Virtualization Engineer,Not Started
M4,Migration Complete,[START_DATE+57],All 180 VMs migrated; Application validation complete; Performance baselines met,EO Virtualization Engineer,Not Started
M5,Go-Live,[START_DATE+68],Production operational; Team trained (24 hours); All tests passed; Backup operational,EO Project Manager,Not Started
M6,Hypercare End,[START_DATE+96],Support period complete; Knowledge transfer done; Lessons learned documented,EO Project Manager,Not Started
# RACI Matrix
#WIDTH: 35,8,8,8,8,8,8,8,8
#ALIGN: left,center,center,center,center,center,center,center,center
Task/Deliverable,PM,QB,HCIEng,VirtEng,InfraLead,VirtLead,AppOwners,Client
Project Charter & Kickoff,A,C,C,I,C,I,I,C
Infrastructure Assessment,A,C,R,C,C,I,I,I
VM Workload Analysis,A,C,C,R,I,C,I,I
HyperFlex Sizing and Design,A,R,C,C,C,I,I,I
Network Integration Planning,A,C,R,I,C,I,I,I
Migration Strategy Definition,A,R,C,R,C,C,C,I
Data Center Preparation,A,I,C,I,R,I,I,C
HyperFlex Cluster Deployment,A,C,R,I,C,I,I,I
UCS Fabric Interconnect Setup,A,C,R,I,C,I,I,I
Intersight Integration,A,C,R,I,I,I,I,I
vSphere 8 Installation,A,C,I,R,I,C,I,I
vCenter Configuration,A,C,I,R,I,C,I,I
Pilot VM Migration,A,C,C,R,I,C,C,I
Production VM Migration Waves,A,C,C,R,I,C,A,I
Application Testing Validation,A,I,I,C,I,C,R,A
Veeam Backup Integration,A,C,R,C,I,I,I,I
Performance Tuning,A,R,C,C,I,I,I,I
Team Training (24 hours),A,R,R,R,C,C,I,I
Production Go-Live,A,C,C,C,C,C,I,R
Hypercare Support (60 hours),A,C,R,R,C,C,I,I
# Communications Plan
#WIDTH: 25,15,40,50,22,18
#ALIGN: left,left,left,left,left,center
Meeting Type,Frequency,Participants,Purpose,Owner,Day/Time
Project Kickoff,Once,All stakeholders,Launch project and align on HyperFlex objectives and migration strategy,EO Project Manager,Day 1
Steering Committee,Bi-weekly,Executive sponsors and PMO,Strategic direction and major decisions on infrastructure transformation,EO Project Manager,Alternate Tuesdays
Project Status Meeting,Weekly,Core project team,Review progress and address blockers across all workstreams,EO Project Manager,Mondays 10:00
Technical Design Review,Weekly,Technical leads,HyperFlex architecture decisions and vSphere configuration,EO Quarterback,Wednesdays 14:00
Migration Standup,Daily,Migration team,VM migration progress and application validation status,EO Virtualization Engineer,Daily 09:30
Risk & Issue Review,Bi-weekly,PM and Risk Manager,Risk assessment and mitigation tracking,EO Project Manager,Alternate Fridays
Infrastructure Review,Weekly,HCI and Infra teams,HyperFlex cluster health and performance monitoring,EO HCI Engineer,Thursdays 11:00
Application Owner Sync,Weekly,App owners and migration team,Migration wave planning and application testing coordination,Client App Owners,Fridays 14:00
Go-Live Readiness,Daily (2 weeks pre),Go-live team,Deployment preparation and migration checklist review,EO Project Manager,Daily 09:00
Post Go-Live Review,Weekly (hypercare),Support and operations,Production stability and HyperFlex performance,EO HCI Engineer,Mondays 11:00
Hypercare Closeout,Once,All stakeholders,Hypercare completion and operational handoff,EO Project Manager,Week 16
