# Project Timeline
#WIDTH: 12,36,13,19,19,26,24,14
#ALIGN: left,left,center,center,center,left,left,center
Phase,Task,Duration,Start Date,End Date,Dependencies,Owner,Status
Discovery,Project Kickoff,1 day,[START_DATE],[START_DATE+1],None,EO Project Manager,Not Started
Discovery,Security Assessment,5 days,[START_DATE+1],[START_DATE+6],Project Kickoff,EO Security Architect,Not Started
Discovery,Network Architecture Review,3 days,[START_DATE+4],[START_DATE+7],Security Assessment,EO Security Engineer,Not Started
Discovery,Identity Integration Planning,3 days,[START_DATE+6],[START_DATE+9],Network Review,EO Security Architect,Not Started
Discovery,Zero Trust Policy Framework,4 days,[START_DATE+8],[START_DATE+12],Identity Planning,EO Security Architect,Not Started
Foundation,Cisco Duo Deployment,5 days,[START_DATE+12],[START_DATE+17],Discovery Complete,EO Security Engineer,Not Started
Foundation,Active Directory Integration,3 days,[START_DATE+15],[START_DATE+18],Duo Deployment,EO Security Engineer,Not Started
Foundation,Cisco Umbrella Setup,4 days,[START_DATE+17],[START_DATE+21],AD Integration,EO Security Engineer,Not Started
Foundation,DNS Policy Configuration,2 days,[START_DATE+20],[START_DATE+22],Umbrella Setup,EO Security Engineer,Not Started
Foundation,Cisco ISE Deployment,5 days,[START_DATE+21],[START_DATE+26],Umbrella Complete,EO Network Engineer,Not Started
Foundation,Network Access Policies,3 days,[START_DATE+25],[START_DATE+28],ISE Deployment,EO Network Engineer,Not Started
Integration,Cisco AnyConnect Deployment,4 days,[START_DATE+28],[START_DATE+32],ISE Complete,EO Security Engineer,Not Started
Integration,VPN Replacement Migration,5 days,[START_DATE+31],[START_DATE+36],AnyConnect Deploy,EO Security Engineer,Not Started
Integration,Application SSO Integration,6 days,[START_DATE+34],[START_DATE+40],AnyConnect Deploy,EO Security Engineer,Not Started
Integration,SAML/OIDC Configuration,3 days,[START_DATE+38],[START_DATE+41],SSO Integration,EO Security Engineer,Not Started
Integration,Cisco SecureX Setup,3 days,[START_DATE+40],[START_DATE+43],SAML Config,EO Security Architect,Not Started
Integration,SIEM Integration,2 days,[START_DATE+42],[START_DATE+44],SecureX Setup,EO Security Engineer,Not Started
Testing,Security Penetration Testing,5 days,[START_DATE+44],[START_DATE+49],Integration Complete,EO Security Architect,Not Started
Testing,Performance Testing,3 days,[START_DATE+47],[START_DATE+50],Penetration Test,EO Security Engineer,Not Started
Testing,User Acceptance Testing,4 days,[START_DATE+49],[START_DATE+53],Performance Test,Client Security Team,Not Started
Testing,Compliance Validation,3 days,[START_DATE+52],[START_DATE+55],UAT Complete,EO Security Architect,Not Started
Rollout,Pilot User Deployment (100),3 days,[START_DATE+55],[START_DATE+58],Testing Complete,EO Security Engineer,Not Started
Rollout,Wave 1: 500 Users,4 days,[START_DATE+58],[START_DATE+62],Pilot Complete,EO Security Engineer,Not Started
Rollout,Wave 2: 1000 Users,4 days,[START_DATE+62],[START_DATE+66],Wave 1 Complete,EO Security Engineer,Not Started
Rollout,Wave 3: Remaining 900 Users,3 days,[START_DATE+66],[START_DATE+69],Wave 2 Complete,EO Security Engineer,Not Started
Training,Administrator Training,8 hours,[START_DATE+65],[START_DATE+66],Wave 2 Complete,EO Security Architect,Not Started
Training,Security Team Training,8 hours,[START_DATE+66],[START_DATE+67],Admin Training,EO Security Architect,Not Started
Training,End User Awareness,4 hours,[START_DATE+67],[START_DATE+68],Security Training,EO Project Manager,Not Started
Training,SOC Team Training,8 hours,[START_DATE+68],[START_DATE+69],User Awareness,EO Security Architect,Not Started
Go-Live,Production Go-Live,2 days,[START_DATE+69],[START_DATE+71],Training Complete,EO Project Manager,Not Started
Support,Hypercare Support Week 1,7 days,[START_DATE+71],[START_DATE+78],Go-Live,EO Security Engineer,Not Started
Support,Hypercare Support Week 2,7 days,[START_DATE+78],[START_DATE+85],Hypercare Week 1,EO Security Engineer,Not Started
Closure,Policy Optimization,3 days,[START_DATE+82],[START_DATE+85],Hypercare Week 2,EO Security Architect,Not Started
Closure,Knowledge Transfer,2 days,[START_DATE+85],[START_DATE+87],Policy Optimization,EO Project Manager,Not Started
Closure,Documentation Delivery,2 days,[START_DATE+87],[START_DATE+89],Knowledge Transfer,EO Security Architect,Not Started
Closure,Project Closure,1 day,[START_DATE+89],[START_DATE+90],Documentation,EO Project Manager,Not Started
# Milestones
#WIDTH: 14,30,20,62,28,17
#ALIGN: left,left,center,left,left,center
Milestone ID,Milestone Name,Target Date,Success Criteria,Owner,Status
M1,Design Complete,[START_DATE+12],Zero trust architecture approved; Identity integration designed; Policy framework complete,EO Security Architect,Not Started
M2,Platform Deployed,[START_DATE+28],Duo MFA operational; Umbrella DNS active; ISE NAC policies enforced,EO Security Engineer,Not Started
M3,Integration Complete,[START_DATE+44],AnyConnect deployed; 30+ app SSO configured; SecureX dashboard operational,EO Security Engineer,Not Started
M4,Testing Complete,[START_DATE+55],Penetration test passed; Performance validated; Compliance certified,EO Security Architect,Not Started
M5,Go-Live,[START_DATE+71],All 2500 users enrolled; Production operational; 24/7 SOC monitoring active,EO Project Manager,Not Started
M6,Hypercare Complete,[START_DATE+90],Support transition done; Team trained (32 hours); Documentation delivered,EO Project Manager,Not Started
# RACI Matrix
#WIDTH: 35,8,8,8,8,8,8,8,8
#ALIGN: left,center,center,center,center,center,center,center,center
Task/Deliverable,PM,SecArch,SecEng,NetEng,CISO,SecOps,AppOwners,Client
Project Charter & Kickoff,A,C,I,I,C,I,I,C
Security Architecture Design,A,R,C,C,C,I,I,I
Zero Trust Policy Framework,A,R,C,I,A,C,I,I
Cisco Duo MFA Deployment,A,C,R,I,I,I,I,I
Active Directory Integration,A,C,R,I,I,I,I,I
Cisco Umbrella Configuration,A,C,R,I,I,C,I,I
Cisco ISE NAC Deployment,A,C,C,R,I,C,I,I
Cisco AnyConnect Deployment,A,C,R,I,I,I,I,I
Application SSO Integration,A,C,R,I,I,I,C,I
Cisco SecureX Configuration,A,R,C,I,I,C,I,I
SIEM Integration,A,C,R,I,I,R,I,I
Security Testing,A,R,C,I,A,C,I,I
User Acceptance Testing,A,I,C,I,I,I,R,A
User Enrollment Waves,A,C,R,I,I,I,I,C
Administrator Training,A,R,C,C,I,C,I,I
SOC Team Training,A,R,C,I,I,R,I,I
Production Go-Live,A,C,R,C,C,C,I,R
Hypercare Support,A,C,R,C,I,R,I,I
Knowledge Transfer,A,R,C,C,I,C,I,C
Documentation Delivery,A,R,C,C,I,C,I,I
# Communications Plan
#WIDTH: 25,15,40,50,22,18
#ALIGN: left,left,left,left,left,center
Meeting Type,Frequency,Participants,Purpose,Owner,Day/Time
Project Kickoff,Once,All stakeholders,Launch project and align on zero trust security objectives,EO Project Manager,Day 1
Steering Committee,Bi-weekly,Executive sponsors and CISO,Strategic direction and security investment decisions,EO Project Manager,Alternate Tuesdays
Project Status Meeting,Weekly,Core project team,Review progress and address blockers across workstreams,EO Project Manager,Mondays 10:00
Security Architecture Review,Weekly,Security leads and architects,Zero trust architecture decisions and policy design,EO Security Architect,Wednesdays 14:00
Integration Standup,Daily,Integration team,Application SSO progress and technical issues,EO Security Engineer,Daily 09:30
Security Operations Sync,Weekly,SOC and security team,Threat monitoring and incident response coordination,EO Security Architect,Thursdays 11:00
User Adoption Review,Weekly,Change management and training,User enrollment progress and adoption metrics,EO Project Manager,Fridays 14:00
Risk & Issue Review,Bi-weekly,PM and Risk Manager,Security risk assessment and mitigation tracking,EO Project Manager,Alternate Fridays
Go-Live Readiness,Daily (2 weeks pre),Go-live team,Deployment preparation and rollout checklist,EO Project Manager,Daily 09:00
Post Go-Live Review,Weekly (hypercare),Support and operations,Production stability and security posture,EO Security Engineer,Mondays 11:00
Hypercare Closeout,Once,All stakeholders,Hypercare completion and operational handoff,EO Project Manager,Week 14
