# Project Timeline
#WIDTH: 12,36,13,19,19,26,24,14
#ALIGN: left,left,center,center,center,left,left,center
Phase,Task,Duration,Start Date,End Date,Dependencies,Owner,Status
Discovery,Project Kickoff,1 day,[START_DATE],[START_DATE+1],None,EO Project Manager,Not Started
Discovery,Network Automation Assessment,4 days,[START_DATE+1],[START_DATE+5],Project Kickoff,EO DevOps Architect,Not Started
Discovery,CI/CD Tool Inventory,3 days,[START_DATE+3],[START_DATE+6],Network Assessment,EO DevOps Engineer,Not Started
Discovery,Cisco Platform Evaluation,4 days,[START_DATE+5],[START_DATE+9],Tool Inventory,EO DevOps Architect,Not Started
Discovery,Gap Analysis and Design,3 days,[START_DATE+8],[START_DATE+11],Platform Evaluation,EO DevOps Architect,Not Started
Foundation,Cisco DNA Center Setup,4 days,[START_DATE+11],[START_DATE+15],Discovery Complete,EO DevOps Engineer,Not Started
Foundation,Cisco NSO Configuration,5 days,[START_DATE+14],[START_DATE+19],DNA Center Setup,EO DevOps Engineer,Not Started
Foundation,GitLab Enterprise Integration,4 days,[START_DATE+18],[START_DATE+22],NSO Configuration,EO DevOps Engineer,Not Started
Foundation,API Framework Development,5 days,[START_DATE+21],[START_DATE+26],GitLab Integration,EO DevOps Engineer,Not Started
Foundation,Security Framework Setup,3 days,[START_DATE+25],[START_DATE+28],API Framework,EO Security Engineer,Not Started
Automation,Terraform Module Development,6 days,[START_DATE+28],[START_DATE+34],Foundation Complete,EO DevOps Engineer,Not Started
Automation,Ansible Playbook Library,6 days,[START_DATE+32],[START_DATE+38],Terraform Modules,EO DevOps Engineer,Not Started
Automation,CI/CD Pipeline Development,5 days,[START_DATE+36],[START_DATE+41],Ansible Playbooks,EO DevOps Engineer,Not Started
Automation,Self-Service Portal Build,4 days,[START_DATE+40],[START_DATE+44],Pipeline Development,EO DevOps Engineer,Not Started
Automation,Testing Framework Setup,3 days,[START_DATE+43],[START_DATE+46],Portal Build,EO QA Engineer,Not Started
Integration,Network Device Onboarding,5 days,[START_DATE+46],[START_DATE+51],Automation Complete,EO Network Engineer,Not Started
Integration,Application Team Onboarding,6 days,[START_DATE+50],[START_DATE+56],Device Onboarding,EO DevOps Engineer,Not Started
Integration,SIEM and Monitoring Integration,3 days,[START_DATE+54],[START_DATE+57],Team Onboarding,EO Security Engineer,Not Started
Integration,ITSM Workflow Integration,3 days,[START_DATE+56],[START_DATE+59],SIEM Integration,EO DevOps Engineer,Not Started
Testing,Functional Testing,4 days,[START_DATE+59],[START_DATE+63],Integration Complete,EO QA Engineer,Not Started
Testing,Performance Testing,3 days,[START_DATE+62],[START_DATE+65],Functional Testing,EO QA Engineer,Not Started
Testing,Security Testing,3 days,[START_DATE+64],[START_DATE+67],Performance Testing,EO Security Engineer,Not Started
Testing,User Acceptance Testing,4 days,[START_DATE+66],[START_DATE+70],Security Testing,Client DevOps Team,Not Started
Rollout,Pilot Team Deployment (2 teams),3 days,[START_DATE+70],[START_DATE+73],Testing Complete,EO DevOps Engineer,Not Started
Rollout,Wave 1: 5 Teams,4 days,[START_DATE+73],[START_DATE+77],Pilot Complete,EO DevOps Engineer,Not Started
Rollout,Wave 2: 8 Teams,4 days,[START_DATE+77],[START_DATE+81],Wave 1 Complete,EO DevOps Engineer,Not Started
Training,Network Engineer Training,8 hours,[START_DATE+78],[START_DATE+79],Wave 1 Complete,EO DevOps Architect,Not Started
Training,DevOps Engineer Training,8 hours,[START_DATE+79],[START_DATE+80],Network Training,EO DevOps Architect,Not Started
Training,Developer Training,4 hours,[START_DATE+80],[START_DATE+81],DevOps Training,EO DevOps Engineer,Not Started
Training,Operations Training,8 hours,[START_DATE+81],[START_DATE+82],Developer Training,EO DevOps Architect,Not Started
Go-Live,Production Go-Live,2 days,[START_DATE+82],[START_DATE+84],Training Complete,EO Project Manager,Not Started
Support,Hypercare Week 1,7 days,[START_DATE+84],[START_DATE+91],Go-Live,EO DevOps Engineer,Not Started
Support,Hypercare Week 2,7 days,[START_DATE+91],[START_DATE+98],Hypercare Week 1,EO DevOps Engineer,Not Started
Closure,Pipeline Optimization,3 days,[START_DATE+95],[START_DATE+98],Hypercare Week 2,EO DevOps Architect,Not Started
Closure,Knowledge Transfer,2 days,[START_DATE+98],[START_DATE+100],Optimization,EO Project Manager,Not Started
Closure,Documentation Delivery,2 days,[START_DATE+100],[START_DATE+102],Knowledge Transfer,EO DevOps Architect,Not Started
Closure,Project Closure,1 day,[START_DATE+102],[START_DATE+103],Documentation,EO Project Manager,Not Started
# Milestones
#WIDTH: 14,30,20,62,28,17
#ALIGN: left,left,center,left,left,center
Milestone ID,Milestone Name,Target Date,Success Criteria,Owner,Status
M1,Design Complete,[START_DATE+11],Automation architecture approved; Platform integrations designed; Pipeline framework defined,EO DevOps Architect,Not Started
M2,Platform Deployed,[START_DATE+28],DNA Center configured; NSO operational; GitLab integrated; API framework ready,EO DevOps Engineer,Not Started
M3,Automation Complete,[START_DATE+46],50 Ansible playbooks; 25 Terraform modules; 15 CI/CD pipelines; Self-service portal live,EO DevOps Engineer,Not Started
M4,Integration Complete,[START_DATE+59],200+ devices onboarded; 15 teams integrated; SIEM connected; ITSM workflows active,EO DevOps Engineer,Not Started
M5,Testing Complete,[START_DATE+70],Functional tests passed; Performance validated; Security cleared; UAT approved,EO QA Engineer,Not Started
M6,Go-Live,[START_DATE+84],All teams onboarded; Production operational; 24/7 monitoring active,EO Project Manager,Not Started
M7,Hypercare Complete,[START_DATE+103],Support transition done; Teams trained (2400 hrs); Documentation delivered,EO Project Manager,Not Started
# RACI Matrix
#WIDTH: 35,8,8,8,8,8,8,8,8
#ALIGN: left,center,center,center,center,center,center,center,center
Task/Deliverable,PM,DevArch,DevEng,NetEng,SecEng,QA,AppTeams,Client
Project Charter and Kickoff,A,C,I,I,I,I,I,C
Automation Architecture Design,A,R,C,C,C,I,I,I
Cisco DNA Center Configuration,A,C,R,C,I,I,I,I
Cisco NSO Setup,A,C,R,C,I,I,I,I
GitLab Enterprise Integration,A,C,R,I,I,I,I,I
API Framework Development,A,C,R,I,I,I,I,I
Terraform Module Library,A,C,R,I,I,I,I,I
Ansible Playbook Development,A,C,R,C,I,I,I,I
CI/CD Pipeline Configuration,A,C,R,I,I,C,I,I
Self-Service Portal Development,A,C,R,I,I,I,C,I
Network Device Onboarding,A,C,C,R,I,I,I,I
Application Team Integration,A,C,R,I,I,I,R,I
Security Integration,A,C,C,I,R,I,I,I
SIEM and Monitoring Setup,A,C,C,I,R,I,I,I
Functional Testing,A,I,C,C,I,R,I,I
Performance Testing,A,I,C,I,I,R,I,I
Security Testing,A,I,C,I,R,C,I,I
User Acceptance Testing,A,I,C,I,I,C,R,A
Team Training Delivery,A,R,C,C,C,I,I,I
Production Go-Live,A,C,R,C,C,C,I,R
Hypercare Support,A,C,R,C,C,C,I,I
Knowledge Transfer,A,R,C,C,C,I,I,C
Documentation Delivery,A,R,C,C,C,I,I,I
# Communications Plan
#WIDTH: 25,15,40,50,22,18
#ALIGN: left,left,left,left,left,center
Meeting Type,Frequency,Participants,Purpose,Owner,Day/Time
Project Kickoff,Once,All stakeholders,Launch project and align on DevOps automation objectives,EO Project Manager,Day 1
Steering Committee,Bi-weekly,Executive sponsors and IT leadership,Strategic direction and automation investment decisions,EO Project Manager,Alternate Tuesdays
Project Status Meeting,Weekly,Core project team,Review progress and address blockers across workstreams,EO Project Manager,Mondays 10:00
Architecture Review,Weekly,DevOps and network architects,Automation architecture decisions and platform design,EO DevOps Architect,Wednesdays 14:00
Pipeline Development Standup,Daily,Development team,Pipeline development progress and technical issues,EO DevOps Engineer,Daily 09:30
Integration Sync,Weekly,Integration and app teams,Application team onboarding progress and issues,EO DevOps Engineer,Thursdays 11:00
Security Review,Bi-weekly,Security and DevOps teams,Security controls and compliance validation,EO Security Engineer,Alternate Fridays
Training Coordination,Weekly,Training and operations,Training schedule and competency tracking,EO Project Manager,Fridays 14:00
Risk and Issue Review,Bi-weekly,PM and Risk Manager,Risk assessment and mitigation tracking,EO Project Manager,Alternate Fridays
Go-Live Readiness,Daily (2 wks pre),Go-live team,Deployment preparation and rollout checklist,EO Project Manager,Daily 09:00
Hypercare Review,Daily (hypercare),Support and operations,Production stability and issue resolution,EO DevOps Engineer,Daily 10:00
Project Closeout,Once,All stakeholders,Hypercare completion and operational handoff,EO Project Manager,Week 15
