# Project Timeline
#WIDTH: 14,36,10,14,14,28,22,12
#ALIGN: left,left,center,center,center,left,left,center
Phase,Task,Duration,Start Date,End Date,Dependencies,Owner,Status
Planning,Project Kickoff,1 day,Week 1 Day 1,Week 1 Day 1,None,Project Manager,Not Started
Planning,Data Center Assessment,2 days,Week 1 Day 1,Week 1 Day 2,Project Kickoff,Infrastructure Architect,Not Started
Planning,Power and Cooling Validation,2 days,Week 1 Day 2,Week 1 Day 3,Data Center Assessment,Facilities Team,Not Started
Planning,Network Infrastructure Review,2 days,Week 1 Day 2,Week 1 Day 3,Data Center Assessment,Network Engineer,Not Started
Planning,Hardware Specifications Finalize,2 days,Week 1 Day 3,Week 1 Day 4,All Assessments,Solutions Architect,Not Started
Planning,Dell Purchase Order Submission,1 day,Week 1 Day 5,Week 1 Day 5,Hardware Specs Approved,Procurement,Not Started
Planning,PowerScale NAS Configuration Design,3 days,Week 1 Day 3,Week 2 Day 1,Network Review,Storage Architect,Not Started
Planning,Data Center Preparation,5 days,Week 1 Day 5,Week 2 Day 5,PO Submitted,Facilities Team,Not Started
Deployment,Hardware Delivery and Inventory,1 day,Week 3 Day 1,Week 3 Day 1,Dell Delivery,IT Team,Not Started
Deployment,Dell ProDeploy Installation,3 days,Week 3 Day 1,Week 3 Day 3,Hardware Delivery,Dell ProDeploy,Not Started
Deployment,Network Cabling and VLAN Config,2 days,Week 3 Day 2,Week 3 Day 3,ProDeploy Start,Network Engineer,Not Started
Deployment,Ubuntu 22.04 LTS Installation,2 days,Week 3 Day 4,Week 3 Day 5,ProDeploy Complete,Systems Engineer,Not Started
Deployment,NVIDIA Driver Installation,2 days,Week 3 Day 5,Week 4 Day 1,Ubuntu Installed,Systems Engineer,Not Started
Deployment,CUDA and cuDNN Configuration,2 days,Week 4 Day 1,Week 4 Day 2,NVIDIA Drivers,ML Engineer,Not Started
Deployment,PowerScale NAS Configuration,2 days,Week 4 Day 1,Week 4 Day 2,Network Complete,Storage Engineer,Not Started
Deployment,NFS Mount Configuration,1 day,Week 4 Day 3,Week 4 Day 3,PowerScale Ready,Systems Engineer,Not Started
Deployment,ML Framework Installation,2 days,Week 4 Day 3,Week 4 Day 4,CUDA Complete,ML Engineer,Not Started
Deployment,Datadog Monitoring Setup,2 days,Week 4 Day 4,Week 4 Day 5,All Systems,DevOps Engineer,Not Started
Validation,GPU Performance Benchmarking,2 days,Week 5 Day 1,Week 5 Day 2,All Deployment,ML Engineer,Not Started
Validation,Storage Throughput Validation,1 day,Week 5 Day 2,Week 5 Day 2,Benchmarking Start,Storage Engineer,Not Started
Validation,End-to-End Training Test,2 days,Week 5 Day 3,Week 5 Day 4,All Benchmarks,Data Scientist,Not Started
Validation,Dataset Migration from Cloud,3 days,Week 5 Day 2,Week 5 Day 4,Storage Validated,Data Engineer,Not Started
Training,Data Scientist Workshop Day 1,1 day,Week 5 Day 4,Week 5 Day 4,E2E Test Complete,Training Lead,Not Started
Training,Data Scientist Workshop Day 2,1 day,Week 5 Day 5,Week 5 Day 5,Workshop Day 1,Training Lead,Not Started
Training,Administrator Training,1 day,Week 6 Day 1,Week 6 Day 1,Workshop Complete,Training Lead,Not Started
Closure,Production Go-Live,1 day,Week 6 Day 2,Week 6 Day 2,All Training,Project Manager,Not Started
Closure,Documentation Finalization,2 days,Week 6 Day 2,Week 6 Day 3,Go-Live,Technical Writer,Not Started
Closure,Project Acceptance Sign-off,1 day,Week 6 Day 4,Week 6 Day 4,Documentation,Project Manager,Not Started
Closure,Hypercare Handover,1 day,Week 6 Day 5,Week 6 Day 5,Acceptance,Project Manager,Not Started
# Milestones
#WIDTH: 14,20,20,80,26,14
#ALIGN: left,left,center,left,left,center
Milestone ID,Milestone Name,Target Date,Success Criteria,Owner,Status
M1,Hardware Ordered,Week 2,Dell purchase order submitted and confirmed; delivery date scheduled,Project Manager,Not Started
M2,Hardware Delivered,Week 3,All 10 workstations and PowerScale NAS delivered and inventoried,IT Lead,Not Started
M3,Infrastructure Ready,Week 4,All workstations operational with Ubuntu CUDA and ML frameworks,Solutions Architect,Not Started
M4,Validation Complete,Week 5,GPU benchmarks passed; storage throughput validated; E2E training successful,ML Engineer,Not Started
M5,Training Complete,Week 6,All data scientists and administrators trained and certified competent,Training Lead,Not Started
M6,Project Closure,Week 6,Production go-live complete; documentation accepted; support transitioned,Project Manager,Not Started
# RACI Matrix
#WIDTH: 36,8,8,8,8,8,8,8,8
#ALIGN: left,center,center,center,center,center,center,center,center
Task/Deliverable,PM,SA,Infra,NetEng,MLEng,DS Lead,IT,Client
Project Charter and Kickoff,A,C,C,I,I,I,C,I
Data Center Assessment,A,C,R,C,I,I,C,C
Hardware Specifications,A,R,C,C,C,C,I,I
Dell Procurement,A,C,I,I,I,I,R,C
Ubuntu and NVIDIA Installation,A,C,R,I,C,I,C,I
CUDA and ML Framework Setup,A,C,C,I,R,C,I,I
PowerScale NAS Configuration,A,C,R,C,I,I,C,I
Network and VLAN Configuration,A,C,C,R,I,I,C,I
GPU Performance Validation,A,C,I,I,R,C,I,I
Data Scientist Training,A,I,I,I,R,C,I,C
Administrator Training,A,I,R,C,C,I,C,C
Production Go-Live Approval,A,C,C,C,C,C,C,R
Documentation Delivery,A,R,C,C,C,C,C,I
# Communications Plan
#WIDTH: 24,14,44,44,20,18
#ALIGN: left,left,left,left,left,center
Meeting Type,Frequency,Participants,Purpose,Owner,Day/Time
Project Kickoff,Once,All stakeholders PM SA IT Lead DS Lead,Launch project and align on objectives and timeline,Project Manager,Week 1 Day 1
Steering Committee,Weekly,Executive sponsors PM IT Director,Strategic direction budget updates and issue escalation,Project Manager,Fridays 10:00
Daily Standup,Daily,Core project team,Review progress blockers and daily priorities,Project Manager,Daily 09:00
Technical Review,Weekly,SA Infrastructure Network ML Engineers,Technical design decisions and implementation issues,Solutions Architect,Wednesdays 14:00
Deployment Checkpoint,Daily,Deployment team Dell ProDeploy,Hardware installation and configuration progress,IT Lead,Daily 11:00
Validation Review,Daily,ML Engineer DS Lead QA,Benchmark results and validation testing progress,ML Engineer,Week 5 Daily
Training Coordination,Weekly,Training Lead DS Lead IT Lead,Training schedule logistics and materials review,Training Lead,Mondays 15:00
Go-Live Readiness,Daily,All stakeholders,Go-live preparation checklist and readiness assessment,Project Manager,Week 6 Daily 09:00
