# Project Timeline
#WIDTH: 14,36,10,14,14,28,22,12
#ALIGN: left,left,center,center,center,left,left,center
Phase,Task,Duration,Start Date,End Date,Dependencies,Owner,Status
Planning,Project Kickoff,1 day,Week 1 Day 1,Week 1 Day 1,None,Project Manager,Not Started
Planning,Current State Assessment,2 days,Week 1 Day 1,Week 1 Day 2,Project Kickoff,VMware Architect,Not Started
Planning,VM Inventory and Sizing,2 days,Week 1 Day 2,Week 1 Day 3,Assessment Start,Solutions Architect,Not Started
Planning,Network Requirements Review,2 days,Week 1 Day 3,Week 1 Day 4,VM Inventory,Network Engineer,Not Started
Planning,VxRail Configuration Design,2 days,Week 1 Day 4,Week 2 Day 1,All Assessments,VMware Architect,Not Started
Planning,Dell Hardware Order Submission,1 day,Week 2 Day 1,Week 2 Day 1,Design Approved,Procurement,Not Started
Planning,Data Center Preparation,5 days,Week 2 Day 1,Week 2 Day 5,Order Submitted,Facilities Team,Not Started
Planning,VLAN and Switch Configuration,3 days,Week 2 Day 3,Week 2 Day 5,Data Center Prep,Network Engineer,Not Started
Deployment,Hardware Delivery and Rack,1 day,Week 3 Day 1,Week 3 Day 1,Dell Delivery,Dell ProDeploy,Not Started
Deployment,VxRail Node Cabling,1 day,Week 3 Day 1,Week 3 Day 1,Hardware Racked,Dell ProDeploy,Not Started
Deployment,VxRail Manager Initialization,1 day,Week 3 Day 2,Week 3 Day 2,Cabling Complete,VMware Architect,Not Started
Deployment,Cluster Creation and vSAN Config,2 days,Week 3 Day 2,Week 3 Day 3,VxRail Init,VMware Architect,Not Started
Deployment,vCenter Integration,1 day,Week 3 Day 4,Week 3 Day 4,Cluster Created,VMware Architect,Not Started
Deployment,vSAN Policy Configuration,1 day,Week 3 Day 4,Week 3 Day 4,vCenter Integrated,VMware Architect,Not Started
Deployment,Distributed Switch Configuration,1 day,Week 3 Day 5,Week 3 Day 5,Policies Created,Network Engineer,Not Started
Deployment,Veeam Backup Integration,2 days,Week 4 Day 1,Week 4 Day 2,VDS Complete,Backup Admin,Not Started
Migration,Migration Wave Planning,1 day,Week 4 Day 1,Week 4 Day 1,Backup Ready,VMware Architect,Not Started
Migration,Wave 1 VM Migration (50 VMs),2 days,Week 4 Day 2,Week 4 Day 3,Wave Planning,VMware Admin,Not Started
Migration,Wave 2 VM Migration (50 VMs),2 days,Week 4 Day 4,Week 4 Day 5,Wave 1 Complete,VMware Admin,Not Started
Migration,Wave 3 VM Migration (50 VMs),2 days,Week 5 Day 1,Week 5 Day 2,Wave 2 Complete,VMware Admin,Not Started
Migration,Wave 4 VM Migration (50 VMs),2 days,Week 5 Day 2,Week 5 Day 3,Wave 3 Complete,VMware Admin,Not Started
Migration,Wave 5 VM Migration (50 VMs),2 days,Week 5 Day 4,Week 5 Day 5,Wave 4 Complete,VMware Admin,Not Started
Validation,HCIBench Performance Testing,1 day,Week 5 Day 5,Week 5 Day 5,Migration Complete,VMware Architect,Not Started
Validation,vSAN Health Validation,1 day,Week 6 Day 1,Week 6 Day 1,Performance Testing,VMware Architect,Not Started
Training,VxRail Administration Training,1 day,Week 6 Day 1,Week 6 Day 1,Validation Complete,Training Lead,Not Started
Training,vSAN Troubleshooting Training,0.5 day,Week 6 Day 2,Week 6 Day 2,Admin Training,Training Lead,Not Started
Training,Veeam Backup Training,0.5 day,Week 6 Day 2,Week 6 Day 2,Admin Training,Training Lead,Not Started
Closure,Documentation Finalization,2 days,Week 6 Day 3,Week 6 Day 4,All Training,Technical Writer,Not Started
Closure,Project Acceptance Sign-off,1 day,Week 6 Day 4,Week 6 Day 4,Documentation,Project Manager,Not Started
Closure,Hypercare Handover,1 day,Week 6 Day 5,Week 6 Day 5,Acceptance,Project Manager,Not Started
# Milestones
#WIDTH: 14,20,20,80,26,14
#ALIGN: left,left,center,left,left,center
Milestone ID,Milestone Name,Target Date,Success Criteria,Owner,Status
M1,Hardware Ordered,Week 2,Dell VxRail purchase order submitted and delivery scheduled,Project Manager,Not Started
M2,Hardware Delivered,Week 3,4 VxRail E560 nodes delivered racked and cabled,Dell ProDeploy,Not Started
M3,Cluster Operational,Week 3,VxRail cluster created with vSAN and vCenter integrated,VMware Architect,Not Started
M4,Migration Complete,Week 5,All 250 VMs migrated to VxRail with zero data loss,VMware Admin,Not Started
M5,Validation Complete,Week 6,HCIBench benchmarks passed and vSAN health verified,VMware Architect,Not Started
M6,Project Closure,Week 6,Training complete documentation accepted support transitioned,Project Manager,Not Started
# RACI Matrix
#WIDTH: 36,8,8,8,8,8,8,8,8
#ALIGN: left,center,center,center,center,center,center,center,center
Task/Deliverable,PM,Arch,VMware,NetEng,Storage,Backup,IT,Client
Project Charter and Kickoff,A,C,C,I,I,I,C,I
Current State Assessment,A,R,C,C,C,I,C,C
VxRail Configuration Design,A,R,C,C,C,I,I,I
Dell Hardware Procurement,A,C,I,I,I,I,R,C
VxRail Cluster Deployment,A,R,C,C,I,I,C,I
vSAN Configuration,A,R,C,I,C,I,I,I
Network Switch Configuration,A,C,C,R,I,I,C,I
Veeam Backup Integration,A,C,C,I,I,R,C,I
VM Migration Execution,A,C,R,C,I,I,C,I
HCIBench Performance Testing,A,R,C,I,I,I,I,I
VxRail Administration Training,A,I,R,I,I,C,C,C
Documentation Delivery,A,R,C,C,C,C,C,I
Production Go-Live Approval,A,C,C,C,C,C,C,R
# Communications Plan
#WIDTH: 24,14,44,44,20,18
#ALIGN: left,left,left,left,left,center
Meeting Type,Frequency,Participants,Purpose,Owner,Day/Time
Project Kickoff,Once,All stakeholders PM Architect IT Lead,Launch project and align on scope and timeline,Project Manager,Week 1 Day 1
Steering Committee,Weekly,Executive sponsors PM IT Director,Strategic updates budget review issue escalation,Project Manager,Fridays 10:00
Daily Standup,Daily,Core project team,Review progress blockers and daily priorities,Project Manager,Daily 09:00
Technical Review,Weekly,Architect VMware Admin Network Storage,Technical decisions and implementation progress,VMware Architect,Wednesdays 14:00
Migration Checkpoint,Daily,VMware Admin Architect Backup Admin,VM migration progress and issue resolution,VMware Admin,Week 4-5 Daily
Validation Review,Daily,Architect VMware Admin QA,Benchmark results and health check findings,VMware Architect,Week 6 Daily
Training Coordination,Once,Training Lead VMware Admin IT Team,Training schedule and logistics confirmation,Training Lead,Week 5 Day 5
Go-Live Readiness,Daily,All stakeholders,Go-live checklist and final preparation,Project Manager,Week 6 Daily
