# Project Timeline
#WIDTH: 14,36,10,14,14,28,22,12
#ALIGN: left,left,center,center,center,left,left,center
Phase,Task,Duration,Start Date,End Date,Dependencies,Owner,Status
Planning,Project Kickoff,1 day,Week 1 Day 1,Week 1 Day 1,None,Project Manager,Not Started
Planning,Current State Assessment,2 days,Week 1 Day 1,Week 1 Day 2,Project Kickoff,VMware Architect,Not Started
Planning,Database Workload Analysis,2 days,Week 1 Day 2,Week 1 Day 3,Assessment Start,DBA Lead,Not Started
Planning,Network Requirements Review,2 days,Week 1 Day 3,Week 1 Day 4,Workload Analysis,Network Engineer,Not Started
Planning,VxRail P570 Configuration Design,2 days,Week 1 Day 4,Week 2 Day 1,All Assessments,VMware Architect,Not Started
Planning,Dell Hardware Order Submission,1 day,Week 2 Day 1,Week 2 Day 1,Design Approved,Procurement,Not Started
Planning,Data Center Preparation,5 days,Week 2 Day 1,Week 2 Day 5,Order Submitted,Facilities Team,Not Started
Planning,100GbE Spine-Leaf Configuration,3 days,Week 2 Day 3,Week 2 Day 5,Data Center Prep,Network Engineer,Not Started
Deployment,Hardware Delivery and Rack,1 day,Week 3 Day 1,Week 3 Day 1,Dell Delivery,Dell ProDeploy,Not Started
Deployment,VxRail P570 Node Cabling,1 day,Week 3 Day 1,Week 3 Day 1,Hardware Racked,Dell ProDeploy,Not Started
Deployment,VxRail Manager Initialization,1 day,Week 3 Day 2,Week 3 Day 2,Cabling Complete,VMware Architect,Not Started
Deployment,8-Node Cluster Creation,2 days,Week 3 Day 2,Week 3 Day 3,VxRail Init,VMware Architect,Not Started
Deployment,vSAN 8 All-NVMe Configuration,2 days,Week 3 Day 3,Week 3 Day 4,Cluster Created,VMware Architect,Not Started
Deployment,NSX-T Microsegmentation Setup,2 days,Week 3 Day 4,Week 3 Day 5,vSAN Configured,Network Engineer,Not Started
Deployment,External KMS Integration,1 day,Week 4 Day 1,Week 4 Day 1,NSX Complete,Security Team,Not Started
Deployment,VMware SRM Configuration,2 days,Week 4 Day 1,Week 4 Day 2,KMS Integrated,VMware Architect,Not Started
Migration,Database Migration Planning,1 day,Week 4 Day 2,Week 4 Day 2,SRM Ready,DBA Lead,Not Started
Migration,Oracle RAC Migration,3 days,Week 4 Day 3,Week 5 Day 1,Migration Planning,DBA Lead,Not Started
Migration,SQL Server Always-On Migration,2 days,Week 5 Day 1,Week 5 Day 2,Oracle Complete,DBA Lead,Not Started
Migration,SAP HANA Migration,2 days,Week 5 Day 2,Week 5 Day 3,SQL Complete,DBA Lead,Not Started
Migration,General VM Migration (800 VMs),3 days,Week 5 Day 3,Week 6 Day 1,Databases Complete,VMware Admin,Not Started
Validation,HCIBench Performance Testing,1 day,Week 6 Day 1,Week 6 Day 1,Migration Complete,VMware Architect,Not Started
Validation,Database Performance Validation,1 day,Week 6 Day 2,Week 6 Day 2,HCIBench Complete,DBA Lead,Not Started
Validation,DR Failover Testing,1 day,Week 6 Day 2,Week 6 Day 2,Performance Testing,VMware Architect,Not Started
Training,VxRail Administration Training,1 day,Week 7 Day 1,Week 7 Day 1,Validation Complete,Training Lead,Not Started
Training,vSAN Troubleshooting Training,0.5 day,Week 7 Day 2,Week 7 Day 2,Admin Training,Training Lead,Not Started
Training,NSX-T Operations Training,0.5 day,Week 7 Day 2,Week 7 Day 2,Admin Training,Training Lead,Not Started
Training,SRM DR Procedures Training,0.5 day,Week 7 Day 3,Week 7 Day 3,Admin Training,Training Lead,Not Started
Training,Database on vSAN Training,0.5 day,Week 7 Day 3,Week 7 Day 3,Admin Training,DBA Lead,Not Started
Closure,Documentation Finalization,2 days,Week 7 Day 4,Week 8 Day 1,All Training,Technical Writer,Not Started
Closure,Project Acceptance Sign-off,1 day,Week 8 Day 1,Week 8 Day 1,Documentation,Project Manager,Not Started
Closure,Hypercare Handover,1 day,Week 8 Day 2,Week 8 Day 2,Acceptance,Project Manager,Not Started
# Milestones
#WIDTH: 14,20,20,80,26,14
#ALIGN: left,left,center,left,left,center
Milestone ID,Milestone Name,Target Date,Success Criteria,Owner,Status
M1,Hardware Ordered,Week 2,Dell VxRail P570 purchase order submitted and delivery scheduled,Project Manager,Not Started
M2,Hardware Delivered,Week 3,8 VxRail P570 nodes delivered racked and cabled with 100GbE network,Dell ProDeploy,Not Started
M3,Cluster Operational,Week 4,VxRail cluster created with 200TB vSAN NSX-T and SRM configured,VMware Architect,Not Started
M4,Databases Migrated,Week 6,Oracle RAC SQL Always-On and SAP HANA migrated with zero data loss,DBA Lead,Not Started
M5,Validation Complete,Week 7,HCIBench 125K IOPS and sub-ms latency verified DR failover tested,VMware Architect,Not Started
M6,Project Closure,Week 8,Training complete documentation accepted support transitioned,Project Manager,Not Started
# RACI Matrix
#WIDTH: 36,8,8,8,8,8,8,8,8
#ALIGN: left,center,center,center,center,center,center,center,center
Task/Deliverable,PM,Arch,VMware,NetEng,DBA,Storage,IT,Client
Project Charter and Kickoff,A,C,C,I,I,I,C,I
Current State Assessment,A,R,C,C,C,C,C,C
VxRail P570 Configuration Design,A,R,C,C,C,I,I,I
Dell Hardware Procurement,A,C,I,I,I,I,R,C
VxRail 8-Node Cluster Deployment,A,R,C,C,I,I,C,I
vSAN All-NVMe Configuration,A,R,C,I,C,C,I,I
100GbE Network Configuration,A,C,C,R,I,I,C,I
NSX-T Microsegmentation,A,C,C,R,I,I,C,I
Database Migration Execution,A,C,C,I,R,I,C,I
HCIBench Performance Testing,A,R,C,I,C,I,I,I
DR Failover Testing,A,R,C,C,C,I,C,I
VxRail Administration Training,A,I,R,I,I,I,C,C
Documentation Delivery,A,R,C,C,C,C,C,I
Production Go-Live Approval,A,C,C,C,C,C,C,R
# Communications Plan
#WIDTH: 24,14,44,44,20,18
#ALIGN: left,left,left,left,left,center
Meeting Type,Frequency,Participants,Purpose,Owner,Day/Time
Project Kickoff,Once,All stakeholders PM Architect IT Lead DBA,Launch project and align on scope and timeline,Project Manager,Week 1 Day 1
Steering Committee,Weekly,Executive sponsors PM IT Director DBA Lead,Strategic updates budget review issue escalation,Project Manager,Fridays 10:00
Daily Standup,Daily,Core project team,Review progress blockers and daily priorities,Project Manager,Daily 09:00
Technical Review,Weekly,Architect VMware Admin Network DBA Storage,Technical decisions and implementation progress,VMware Architect,Wednesdays 14:00
Database Migration Checkpoint,Daily,DBA Lead VMware Admin Architect,Database migration progress and issue resolution,DBA Lead,Week 4-6 Daily
Validation Review,Daily,Architect VMware Admin DBA QA,Benchmark results and health check findings,VMware Architect,Week 7 Daily
Training Coordination,Once,Training Lead VMware Admin DBA IT Team,Training schedule and logistics confirmation,Training Lead,Week 6 Day 5
Go-Live Readiness,Daily,All stakeholders,Go-live checklist and final preparation,Project Manager,Week 8 Daily
