# Project Timeline
#WIDTH: 14,36,10,14,14,28,22,12
#ALIGN: left,left,center,center,center,left,left,center
Phase,Task,Duration,Start Date,End Date,Dependencies,Owner,Status
Planning,Project Kickoff,1 day,Week 1 Day 1,Week 1 Day 1,None,Project Manager,Not Started
Planning,Current Authentication Assessment,2 days,Week 1 Day 1,Week 1 Day 2,Project Kickoff,Security Architect,Not Started
Planning,User Inventory and Grouping,2 days,Week 1 Day 2,Week 1 Day 3,Assessment Start,IT Security,Not Started
Planning,Integration Requirements Review,2 days,Week 1 Day 3,Week 1 Day 4,User Inventory,Security Architect,Not Started
Planning,SafeID Configuration Design,2 days,Week 1 Day 4,Week 2 Day 1,All Assessments,Security Architect,Not Started
Planning,Dell Hardware Order Submission,1 day,Week 2 Day 1,Week 2 Day 1,Design Approved,Procurement,Not Started
Planning,YubiKey Token Ordering,1 day,Week 2 Day 1,Week 2 Day 1,User Count Finalized,Procurement,Not Started
Planning,Active Directory Preparation,3 days,Week 2 Day 2,Week 2 Day 4,Design Approved,AD Admin,Not Started
Deployment,SafeID Server Installation,2 days,Week 3 Day 1,Week 3 Day 2,AD Prep Complete,Security Architect,Not Started
Deployment,Active Directory Integration,1 day,Week 3 Day 2,Week 3 Day 2,Server Installed,AD Admin,Not Started
Deployment,LDAP and RADIUS Configuration,2 days,Week 3 Day 3,Week 3 Day 4,AD Integrated,Security Architect,Not Started
Deployment,SAML IdP Configuration,1 day,Week 3 Day 4,Week 3 Day 4,RADIUS Complete,Security Architect,Not Started
Deployment,Self-Service Portal Setup,1 day,Week 3 Day 5,Week 3 Day 5,SAML Complete,Security Architect,Not Started
Deployment,Cisco AnyConnect VPN Integration,2 days,Week 4 Day 1,Week 4 Day 2,Portal Ready,Network Engineer,Not Started
Deployment,Microsoft 365 SAML SSO,1 day,Week 4 Day 2,Week 4 Day 2,SAML IdP Ready,Security Architect,Not Started
Deployment,AWS IAM Identity Center,1 day,Week 4 Day 3,Week 4 Day 3,M365 Complete,Cloud Engineer,Not Started
Rollout,IT Department Pilot (25 users),2 days,Week 4 Day 3,Week 4 Day 4,Integrations Complete,IT Security,Not Started
Rollout,Finance Department (75 users),2 days,Week 4 Day 4,Week 4 Day 5,Pilot Success,IT Security,Not Started
Rollout,Engineering Department (150 users),3 days,Week 5 Day 1,Week 5 Day 3,Finance Complete,IT Security,Not Started
Rollout,Operations Department (150 users),2 days,Week 5 Day 3,Week 5 Day 4,Engineering Complete,IT Security,Not Started
Rollout,Field Workers (100 users),2 days,Week 5 Day 4,Week 6 Day 1,Operations Complete,IT Security,Not Started
Validation,FIDO2 Authentication Testing,1 day,Week 6 Day 1,Week 6 Day 1,All Users Enrolled,Security Architect,Not Started
Validation,VPN MFA Validation,0.5 day,Week 6 Day 2,Week 6 Day 2,FIDO2 Testing,Network Engineer,Not Started
Validation,Cloud SSO Validation,0.5 day,Week 6 Day 2,Week 6 Day 2,VPN Testing,Cloud Engineer,Not Started
Training,Help Desk Training,0.5 day,Week 6 Day 3,Week 6 Day 3,Validation Complete,Training Lead,Not Started
Training,IT Admin Training,1 day,Week 6 Day 3,Week 6 Day 3,Validation Complete,Training Lead,Not Started
Training,User Awareness Sessions,1 day,Week 6 Day 4,Week 6 Day 4,Admin Training,Training Lead,Not Started
Closure,Documentation Finalization,1 day,Week 6 Day 4,Week 6 Day 4,All Training,Technical Writer,Not Started
Closure,CMMC Compliance Evidence,1 day,Week 6 Day 5,Week 6 Day 5,Documentation,Security Architect,Not Started
Closure,Project Acceptance Sign-off,1 day,Week 6 Day 5,Week 6 Day 5,Compliance Evidence,Project Manager,Not Started
# Milestones
#WIDTH: 14,20,20,80,26,14
#ALIGN: left,left,center,left,left,center
Milestone ID,Milestone Name,Target Date,Success Criteria,Owner,Status
M1,Hardware Ordered,Week 2,Dell SafeID server and 500 YubiKey 5 NFC tokens ordered,Project Manager,Not Started
M2,Platform Deployed,Week 3,SafeID server operational with AD LDAP and RADIUS integration,Security Architect,Not Started
M3,Integrations Complete,Week 4,VPN M365 and AWS SSO configured with FIDO2 authentication,Security Architect,Not Started
M4,Pilot Complete,Week 4,IT department (25 users) successfully using YubiKey MFA,IT Security,Not Started
M5,Full Rollout Complete,Week 6,All 500 users enrolled with YubiKey FIDO2 tokens,IT Security,Not Started
M6,Project Closure,Week 6,CMMC Level 2 evidence collected training complete support transitioned,Project Manager,Not Started
# RACI Matrix
#WIDTH: 36,8,8,8,8,8,8,8,8
#ALIGN: left,center,center,center,center,center,center,center,center
Task/Deliverable,PM,Arch,SecOps,NetEng,Cloud,AD,IT,Client
Project Charter and Kickoff,A,C,C,I,I,I,C,I
Current Authentication Assessment,A,R,C,C,C,C,C,C
SafeID Configuration Design,A,R,C,C,C,C,I,I
YubiKey Token Procurement,A,C,I,I,I,I,R,C
SafeID Server Deployment,A,R,C,I,I,C,C,I
Active Directory Integration,A,C,C,I,I,R,C,I
RADIUS VPN Integration,A,C,C,R,I,I,C,I
SAML SSO Configuration,A,R,C,I,C,I,C,I
User Enrollment Rollout,A,C,R,I,I,I,C,I
FIDO2 Authentication Testing,A,R,C,C,C,I,I,I
CMMC Compliance Documentation,A,R,C,I,I,I,C,I
Help Desk Training,A,I,C,I,I,I,R,C
Production Go-Live Approval,A,C,C,C,C,C,C,R
# Communications Plan
#WIDTH: 24,14,44,44,20,18
#ALIGN: left,left,left,left,left,center
Meeting Type,Frequency,Participants,Purpose,Owner,Day/Time
Project Kickoff,Once,All stakeholders PM Architect CISO IT Lead,Launch project and align on scope and timeline,Project Manager,Week 1 Day 1
Steering Committee,Weekly,Executive sponsors PM CISO IT Director,Strategic updates budget review issue escalation,Project Manager,Fridays 10:00
Daily Standup,Daily,Core project team,Review progress blockers and daily priorities,Project Manager,Daily 09:00
Technical Review,Weekly,Architect Security Ops Network AD Admin,Technical decisions and implementation progress,Security Architect,Wednesdays 14:00
Enrollment Checkpoint,Daily,IT Security Architect Help Desk,User enrollment progress and issue resolution,IT Security,Week 4-6 Daily
Validation Review,Daily,Architect Security Ops QA,Authentication testing and compliance findings,Security Architect,Week 6 Daily
Training Coordination,Once,Training Lead Help Desk IT Team,Training schedule and logistics confirmation,Training Lead,Week 5 Day 5
Go-Live Readiness,Daily,All stakeholders,Go-live checklist and final preparation,Project Manager,Week 6 Daily
