# Project Timeline
#WIDTH: 14,36,10,14,14,28,22,12
#ALIGN: left,left,center,center,center,left,left,center
Phase,Task,Duration,Start Date,End Date,Dependencies,Owner,Status
Planning,Project Kickoff,1 day,Week 1 Day 1,Week 1 Day 1,None,Project Manager,Not Started
Planning,Current CI/CD Assessment,2 days,Week 1 Day 1,Week 1 Day 2,Project Kickoff,DevOps Architect,Not Started
Planning,Pipeline Inventory and Analysis,2 days,Week 1 Day 2,Week 1 Day 3,Assessment Start,DevOps Lead,Not Started
Planning,Artifact Storage Requirements,2 days,Week 1 Day 3,Week 1 Day 4,Inventory Complete,DevOps Architect,Not Started
Planning,GitLab Configuration Design,2 days,Week 1 Day 4,Week 2 Day 1,All Assessments,DevOps Architect,Not Started
Planning,Dell Hardware Order Submission,1 day,Week 2 Day 1,Week 2 Day 1,Design Approved,Procurement,Not Started
Planning,Network and VLAN Preparation,2 days,Week 2 Day 2,Week 2 Day 3,Order Submitted,Network Engineer,Not Started
Planning,GitLab License Procurement,1 day,Week 2 Day 3,Week 2 Day 3,Design Approved,Procurement,Not Started
Deployment,Hardware Delivery and Rack,1 day,Week 3 Day 1,Week 3 Day 1,Dell Delivery,Dell ProDeploy,Not Started
Deployment,Ubuntu Server Installation,1 day,Week 3 Day 1,Week 3 Day 1,Hardware Racked,DevOps Engineer,Not Started
Deployment,Docker Enterprise Installation,1 day,Week 3 Day 2,Week 3 Day 2,Ubuntu Installed,DevOps Engineer,Not Started
Deployment,GitLab Premium Deployment,2 days,Week 3 Day 2,Week 3 Day 3,Docker Ready,DevOps Architect,Not Started
Deployment,GitLab Runner Configuration,1 day,Week 3 Day 4,Week 3 Day 4,GitLab Deployed,DevOps Architect,Not Started
Deployment,JFrog Artifactory Installation,2 days,Week 3 Day 4,Week 3 Day 5,Runner Config,DevOps Engineer,Not Started
Deployment,SAML SSO Integration,1 day,Week 4 Day 1,Week 4 Day 1,GitLab Ready,Security Team,Not Started
Deployment,Docker Registry Configuration,1 day,Week 4 Day 1,Week 4 Day 1,Artifactory Ready,DevOps Engineer,Not Started
Migration,Pipeline Template Creation,2 days,Week 4 Day 2,Week 4 Day 3,Infrastructure Ready,DevOps Architect,Not Started
Migration,Platform Team Migration,2 days,Week 4 Day 3,Week 4 Day 4,Templates Ready,DevOps Lead,Not Started
Migration,Backend Team Migration,2 days,Week 4 Day 4,Week 5 Day 1,Platform Complete,DevOps Lead,Not Started
Migration,Frontend Team Migration,2 days,Week 5 Day 1,Week 5 Day 2,Backend Complete,DevOps Lead,Not Started
Migration,Mobile Team Migration,2 days,Week 5 Day 2,Week 5 Day 3,Frontend Complete,DevOps Lead,Not Started
Migration,QA Team Migration,2 days,Week 5 Day 3,Week 5 Day 4,Mobile Complete,DevOps Lead,Not Started
Validation,Build Performance Testing,1 day,Week 5 Day 5,Week 5 Day 5,All Teams Migrated,DevOps Architect,Not Started
Validation,Load Testing (24 concurrent),1 day,Week 6 Day 1,Week 6 Day 1,Performance Testing,DevOps Engineer,Not Started
Training,GitLab Admin Training,1 day,Week 6 Day 1,Week 6 Day 1,Validation Complete,Training Lead,Not Started
Training,Pipeline Development Workshop,0.5 day,Week 6 Day 2,Week 6 Day 2,Admin Training,Training Lead,Not Started
Training,Artifactory Management Training,0.5 day,Week 6 Day 2,Week 6 Day 2,Admin Training,Training Lead,Not Started
Closure,Documentation Finalization,1 day,Week 6 Day 3,Week 6 Day 3,All Training,Technical Writer,Not Started
Closure,Jenkins Deprecation Plan,1 day,Week 6 Day 4,Week 6 Day 4,Documentation,DevOps Lead,Not Started
Closure,Project Acceptance Sign-off,1 day,Week 6 Day 5,Week 6 Day 5,Deprecation Plan,Project Manager,Not Started
# Milestones
#WIDTH: 14,20,20,80,26,14
#ALIGN: left,left,center,left,left,center
Milestone ID,Milestone Name,Target Date,Success Criteria,Owner,Status
M1,Hardware Ordered,Week 2,8 Dell PowerEdge R650 servers ordered with GitLab Premium license,Project Manager,Not Started
M2,Infrastructure Ready,Week 3,GitLab Artifactory and Docker registry operational,DevOps Architect,Not Started
M3,Templates Complete,Week 4,Pipeline templates for Java Node Docker builds ready,DevOps Architect,Not Started
M4,Migration Complete,Week 5,All 50 developers and 12 teams migrated from Jenkins,DevOps Lead,Not Started
M5,Validation Complete,Week 6,5000 builds/day capacity and <5 min queue time verified,DevOps Architect,Not Started
M6,Project Closure,Week 6,Training complete Jenkins deprecated support transitioned,Project Manager,Not Started
# RACI Matrix
#WIDTH: 36,8,8,8,8,8,8,8,8
#ALIGN: left,center,center,center,center,center,center,center,center
Task/Deliverable,PM,Arch,DevOps,NetEng,SecOps,Dev,IT,Client
Project Charter and Kickoff,A,C,C,I,I,I,C,I
Current CI/CD Assessment,A,R,C,C,C,C,C,C
GitLab Configuration Design,A,R,C,C,C,I,I,I
Dell Hardware Procurement,A,C,I,I,I,I,R,C
GitLab Premium Deployment,A,R,C,I,I,I,C,I
GitLab Runner Configuration,A,R,C,I,I,I,C,I
Artifactory Installation,A,C,R,I,I,I,C,I
SAML SSO Integration,A,C,C,I,R,I,C,I
Pipeline Template Creation,A,R,C,I,I,C,I,I
Team Migration Execution,A,C,R,I,I,C,C,I
Build Performance Testing,A,R,C,I,I,I,I,I
GitLab Admin Training,A,I,R,I,I,C,C,C
Documentation Delivery,A,R,C,C,C,C,C,I
Production Go-Live Approval,A,C,C,C,C,C,C,R
# Communications Plan
#WIDTH: 24,14,44,44,20,18
#ALIGN: left,left,left,left,left,center
Meeting Type,Frequency,Participants,Purpose,Owner,Day/Time
Project Kickoff,Once,All stakeholders PM Architect CTO DevOps Lead,Launch project and align on scope and timeline,Project Manager,Week 1 Day 1
Steering Committee,Weekly,Executive sponsors PM CTO IT Director,Strategic updates budget review issue escalation,Project Manager,Fridays 10:00
Daily Standup,Daily,Core project team,Review progress blockers and daily priorities,Project Manager,Daily 09:00
Technical Review,Weekly,Architect DevOps Engineers Network Security,Technical decisions and implementation progress,DevOps Architect,Wednesdays 14:00
Migration Checkpoint,Daily,DevOps Lead Architect Team Leads,Team migration progress and pipeline issues,DevOps Lead,Week 4-5 Daily
Validation Review,Daily,Architect DevOps Engineers QA,Build performance and capacity testing results,DevOps Architect,Week 6 Daily
Training Coordination,Once,Training Lead DevOps IT Team,Training schedule and logistics confirmation,Training Lead,Week 5 Day 5
Go-Live Readiness,Daily,All stakeholders,Go-live checklist and final preparation,Project Manager,Week 6 Daily
