# Project Timeline
#WIDTH: 14,36,10,14,14,28,22,12
#ALIGN: left,left,center,center,center,left,left,center
Phase,Task,Duration,Start Date,End Date,Dependencies,Owner,Status
Planning,Project Kickoff,1 day,Week 1 Day 1,Week 1 Day 1,None,Project Manager,Not Started
Planning,Current Network Assessment,2 days,Week 1 Day 1,Week 1 Day 2,Project Kickoff,Network Architect,Not Started
Planning,Traffic Flow Analysis,2 days,Week 1 Day 2,Week 1 Day 3,Assessment Start,Network Engineer,Not Started
Planning,VLAN and Subnet Planning,2 days,Week 1 Day 3,Week 1 Day 4,Traffic Analysis,Network Architect,Not Started
Planning,BGP and EVPN Design,2 days,Week 1 Day 4,Week 2 Day 1,VLAN Planning,Network Architect,Not Started
Planning,Dell Switch Order Submission,1 day,Week 2 Day 1,Week 2 Day 1,Design Approved,Procurement,Not Started
Planning,Cabling and Rack Planning,2 days,Week 2 Day 2,Week 2 Day 3,Order Submitted,Data Center Team,Not Started
Planning,Automation Playbook Development,3 days,Week 2 Day 2,Week 2 Day 4,Design Approved,Network Architect,Not Started
Deployment,Switch Delivery and Rack Install,1 day,Week 3 Day 1,Week 3 Day 1,Dell Delivery,Dell ProDeploy,Not Started
Deployment,Spine Switch Configuration,2 days,Week 3 Day 1,Week 3 Day 2,Switches Racked,Network Architect,Not Started
Deployment,Rack 1-10 Leaf Deployment,2 days,Week 3 Day 2,Week 3 Day 3,Spine Ready,Network Engineer,Not Started
Deployment,BGP Underlay Configuration,1 day,Week 3 Day 3,Week 3 Day 3,Leaf Deployed,Network Architect,Not Started
Deployment,Rack 11-20 Leaf Deployment,2 days,Week 3 Day 4,Week 3 Day 5,BGP Underlay,Network Engineer,Not Started
Deployment,EVPN-VXLAN Overlay Config,2 days,Week 4 Day 1,Week 4 Day 2,Underlay Complete,Network Architect,Not Started
Deployment,Rack 21-30 Leaf Deployment,2 days,Week 4 Day 2,Week 4 Day 3,Overlay Config,Network Engineer,Not Started
Deployment,TACACS+ AAA Integration,1 day,Week 4 Day 3,Week 4 Day 3,Network Operational,Security Team,Not Started
Deployment,Rack 31-40 Leaf Deployment,2 days,Week 4 Day 4,Week 4 Day 5,AAA Ready,Network Engineer,Not Started
Migration,Server Migration Rack 1-10,2 days,Week 5 Day 1,Week 5 Day 2,Rack Ready,Server Team,Not Started
Migration,Server Migration Rack 11-20,2 days,Week 5 Day 2,Week 5 Day 3,Rack 1-10 Complete,Server Team,Not Started
Migration,Server Migration Rack 21-30,2 days,Week 5 Day 3,Week 5 Day 4,Rack 11-20 Complete,Server Team,Not Started
Migration,Server Migration Rack 31-40,2 days,Week 5 Day 4,Week 5 Day 5,Rack 21-30 Complete,Server Team,Not Started
Validation,East-West Traffic Testing,1 day,Week 6 Day 1,Week 6 Day 1,All Servers Migrated,Network Engineer,Not Started
Validation,Fabric Throughput Testing,1 day,Week 6 Day 1,Week 6 Day 1,Traffic Testing,Network Architect,Not Started
Training,Network Admin Training,1 day,Week 6 Day 2,Week 6 Day 2,Validation Complete,Training Lead,Not Started
Training,Ansible Automation Workshop,0.5 day,Week 6 Day 3,Week 6 Day 3,Admin Training,Training Lead,Not Started
Training,OS10 CLI Operations,0.5 day,Week 6 Day 3,Week 6 Day 3,Admin Training,Training Lead,Not Started
Closure,Documentation Finalization,1 day,Week 6 Day 4,Week 6 Day 4,All Training,Technical Writer,Not Started
Closure,Legacy Switch Decommission Plan,1 day,Week 6 Day 4,Week 6 Day 4,Documentation,Network Architect,Not Started
Closure,Project Acceptance Sign-off,1 day,Week 6 Day 5,Week 6 Day 5,Decommission Plan,Project Manager,Not Started
# Milestones
#WIDTH: 14,20,20,80,26,14
#ALIGN: left,left,center,left,left,center
Milestone ID,Milestone Name,Target Date,Success Criteria,Owner,Status
M1,Hardware Ordered,Week 2,4 spine Z9432F-ON and 40 leaf S5248F-ON switches ordered,Project Manager,Not Started
M2,Spine Layer Ready,Week 3,100GbE spine fabric with BGP underlay operational,Network Architect,Not Started
M3,Leaf Layer Complete,Week 4,All 40 ToR switches deployed with EVPN-VXLAN overlay,Network Architect,Not Started
M4,Migration Complete,Week 5,All 1920 server ports migrated from Cisco to Dell fabric,Network Engineer,Not Started
M5,Validation Complete,Week 6,1.6Tbps throughput and <2 microsecond latency verified,Network Architect,Not Started
M6,Project Closure,Week 6,Training complete Cisco deprecated support transitioned,Project Manager,Not Started
# RACI Matrix
#WIDTH: 36,8,8,8,8,8,8,8,8
#ALIGN: left,center,center,center,center,center,center,center,center
Task/Deliverable,PM,Arch,NetEng,DC,SecOps,Server,IT,Client
Project Charter and Kickoff,A,C,C,I,I,I,C,I
Current Network Assessment,A,R,C,C,C,C,C,C
BGP EVPN Design,A,R,C,I,C,I,I,I
Dell Switch Procurement,A,C,I,I,I,I,R,C
Spine Switch Configuration,A,R,C,I,I,I,C,I
Leaf Switch Deployment,A,C,R,C,I,I,C,I
EVPN-VXLAN Overlay Configuration,A,R,C,I,I,I,C,I
TACACS+ AAA Integration,A,C,C,I,R,I,C,I
Server Migration Execution,A,C,C,C,I,R,C,I
Fabric Performance Testing,A,R,C,I,I,I,I,I
Network Admin Training,A,I,R,I,I,I,C,C
Documentation Delivery,A,R,C,C,C,C,C,I
Production Go-Live Approval,A,C,C,C,C,C,C,R
# Communications Plan
#WIDTH: 24,14,44,44,20,18
#ALIGN: left,left,left,left,left,center
Meeting Type,Frequency,Participants,Purpose,Owner,Day/Time
Project Kickoff,Once,All stakeholders PM Architect CTO Network Lead,Launch project and align on scope and timeline,Project Manager,Week 1 Day 1
Steering Committee,Weekly,Executive sponsors PM CTO IT Director,Strategic updates budget review issue escalation,Project Manager,Fridays 10:00
Daily Standup,Daily,Core project team,Review progress blockers and daily priorities,Project Manager,Daily 09:00
Technical Review,Weekly,Architect Network Engineers Data Center Security,Technical decisions and implementation progress,Network Architect,Wednesdays 14:00
Migration Checkpoint,Daily,Network Engineer Server Team Data Center,Rack migration progress and connectivity issues,Network Engineer,Week 5 Daily
Validation Review,Daily,Architect Network Engineers QA,Fabric performance and latency testing results,Network Architect,Week 6 Daily
Training Coordination,Once,Training Lead Network Ops IT Team,Training schedule and logistics confirmation,Training Lead,Week 5 Day 5
Go-Live Readiness,Daily,All stakeholders,Go-live checklist and final preparation,Project Manager,Week 6 Daily
