# Project Timeline
#WIDTH: 14,38,11,13,13,28,22,14
#ALIGN: left,left,center,center,center,left,left,center
Phase,Task,Duration,Start Date,End Date,Dependencies,Owner,Status
Discovery,Project Kickoff and Charter,1 day,[START_DATE],[START_DATE+1],None,Project Manager,Not Started
Discovery,Security Posture Assessment,5 days,[START_DATE+1],[START_DATE+6],Project Kickoff,Security Assessor,Not Started
Discovery,Repository and Language Inventory,4 days,[START_DATE+3],[START_DATE+7],Project Kickoff,Business Analyst,Not Started
Discovery,Compliance Requirements Analysis (SOC 2/PCI-DSS),4 days,[START_DATE+5],[START_DATE+9],Security Assessment,Security Architect,Not Started
Discovery,GHAS Readiness Evaluation,3 days,[START_DATE+7],[START_DATE+10],Repository Inventory,Solution Architect,Not Started
Planning,GHAS Deployment Architecture Design,5 days,[START_DATE+10],[START_DATE+15],Readiness Evaluation,Solution Architect,Not Started
Planning,CodeQL Language Strategy (JS/Python/Java/C#/Go),4 days,[START_DATE+12],[START_DATE+16],Architecture Design,Technical Lead,Not Started
Planning,Custom Query Requirements Gathering,3 days,[START_DATE+14],[START_DATE+17],Language Strategy,Security Architect,Not Started
Planning,SIEM Integration Design (Splunk/Sentinel),4 days,[START_DATE+15],[START_DATE+19],Architecture Design,Integration Lead,Not Started
Build,GitHub Enterprise Cloud Configuration,5 days,[START_DATE+19],[START_DATE+24],Integration Design,GitHub Administrator,Not Started
Build,SAML SSO and MFA Configuration,3 days,[START_DATE+22],[START_DATE+25],Enterprise Config,Identity Engineer,Not Started
Build,Pilot Repository Selection (10 repos),2 days,[START_DATE+24],[START_DATE+26],SSO Configuration,Technical Lead,Not Started
Build,CodeQL Analysis Setup for Pilot,5 days,[START_DATE+26],[START_DATE+31],Pilot Selection,Security Engineer,Not Started
Build,Secret Scanning with Push Protection,4 days,[START_DATE+28],[START_DATE+32],CodeQL Setup,Security Engineer,Not Started
Build,Dependabot Configuration,3 days,[START_DATE+31],[START_DATE+34],Secret Scanning,Security Engineer,Not Started
Build,GitHub Actions Workflow Templates,5 days,[START_DATE+32],[START_DATE+37],Dependabot Config,DevOps Engineer,Not Started
Pilot,Pilot Repository Scanning Validation,7 days,[START_DATE+37],[START_DATE+44],Actions Workflows,Technical Lead,Not Started
Pilot,Detection Accuracy Baseline (95%+ target),5 days,[START_DATE+40],[START_DATE+45],Pilot Validation,Security Engineer,Not Started
Pilot,False Positive Analysis and Tuning,5 days,[START_DATE+43],[START_DATE+48],Accuracy Baseline,Security Engineer,Not Started
Pilot,Security Champion Training (Pilot Teams),3 days,[START_DATE+45],[START_DATE+48],FP Analysis,Training Lead,Not Started
Expand,Organization-Wide GHAS Rollout (190 repos),20 days,[START_DATE+48],[START_DATE+68],Champion Training,Technical Lead,Not Started
Expand,Custom CodeQL Query Development (15 queries),15 days,[START_DATE+52],[START_DATE+67],Rollout Started,Security Engineer,Not Started
Expand,SIEM Webhook Integration (Splunk/Sentinel),7 days,[START_DATE+55],[START_DATE+62],Custom Queries,Integration Lead,Not Started
Expand,Issue Tracking Integration (JIRA/ServiceNow),5 days,[START_DATE+60],[START_DATE+65],SIEM Integration,Integration Lead,Not Started
Expand,Security Policy Enforcement Configuration,5 days,[START_DATE+63],[START_DATE+68],Issue Tracking,Security Architect,Not Started
Test,CodeQL Detection Accuracy Validation,7 days,[START_DATE+68],[START_DATE+75],Policy Config,Security Engineer,Not Started
Test,Secret Scanning Validation,4 days,[START_DATE+72],[START_DATE+76],Detection Validation,Security Engineer,Not Started
Test,Performance Testing (PR Scan <15 min),5 days,[START_DATE+74],[START_DATE+79],Secret Validation,Performance Engineer,Not Started
Test,SIEM Integration Testing,4 days,[START_DATE+76],[START_DATE+80],Performance Testing,Integration Tester,Not Started
Test,User Acceptance Testing,7 days,[START_DATE+78],[START_DATE+85],Integration Testing,Business Users,Not Started
Deploy,Production Security Policy Activation,3 days,[START_DATE+85],[START_DATE+88],UAT Complete,Security Architect,Not Started
Deploy,Security Champion Certification,5 days,[START_DATE+85],[START_DATE+90],UAT Complete,Training Lead,Not Started
Deploy,Developer Training Delivery (100 devs),10 days,[START_DATE+85],[START_DATE+95],Champion Certification,Training Lead,Not Started
Deploy,Go-Live with Full Monitoring,2 days,[START_DATE+95],[START_DATE+97],Training Complete,Project Manager,Not Started
Closure,Hypercare Support (30 days),30 days,[START_DATE+97],[START_DATE+127],Go-Live,Support Team,Not Started
Closure,Knowledge Transfer Sessions,7 days,[START_DATE+100],[START_DATE+107],Hypercare Started,Technical Lead,Not Started
Closure,Project Documentation Finalization,5 days,[START_DATE+107],[START_DATE+112],Knowledge Transfer,Project Manager,Not Started
Closure,Project Closure and Lessons Learned,3 days,[START_DATE+127],[START_DATE+130],Hypercare Complete,Project Manager,Not Started
# Milestones
#WIDTH: 14,30,20,62,28,17
#ALIGN: left,left,center,left,left,center
Milestone ID,Milestone Name,Target Date,Success Criteria,Owner,Status
M1,Project Kickoff,[START_DATE],Stakeholders aligned; project charter approved; GitHub org access confirmed,Project Manager,Not Started
M2,Discovery Complete,[START_DATE+10],Repository inventory complete; language coverage validated; compliance requirements documented,Business Analyst,Not Started
M3,Architecture Approved,[START_DATE+19],GHAS architecture approved; CodeQL strategy signed off; SIEM integration design validated,Solution Architect,Not Started
M4,Pilot Repositories Secured,[START_DATE+48],10 pilot repos with CodeQL enabled; 95%+ detection accuracy; <10% false positive rate,Technical Lead,Not Started
M5,Custom Queries Developed,[START_DATE+67],15 custom CodeQL queries deployed; organization-specific patterns covered,Security Engineer,Not Started
M6,Organization-Wide Rollout,[START_DATE+68],200 repositories secured; push protection enabled; policies enforced,Technical Lead,Not Started
M7,Testing Complete,[START_DATE+85],Detection accuracy >95%; PR scan <15 min; SIEM integration validated; UAT passed,QA Lead,Not Started
M8,Go-Live,[START_DATE+97],Production deployment; security champions certified; developers trained,Project Manager,Not Started
M9,Project Closure,[START_DATE+130],Hypercare complete; knowledge transfer done; lessons learned documented,Project Manager,Not Started
# RACI Matrix
#WIDTH: 38,8,8,8,8,8,8,8,8,8
#ALIGN: left,center,center,center,center,center,center,center,center,center
Task/Deliverable,PM,SA,BA,TL,Dev,QA,DevOps,SecArch,Client
Project Charter & Kickoff,A,C,C,I,I,I,I,I,C
Security Posture Assessment,A,C,R,I,I,I,I,R,C
Repository and Language Inventory,A,I,R,C,I,I,I,I,C
GHAS Deployment Architecture,A,R,I,C,I,I,C,C,I
CodeQL Language Strategy,A,C,I,R,I,I,I,C,I
Custom Query Requirements,A,C,C,C,I,I,I,R,C
GitHub Enterprise Configuration,A,C,I,C,I,I,R,I,I
SAML SSO Integration,A,C,I,I,I,I,R,C,C
CodeQL Analysis Setup,A,C,I,R,C,I,I,C,I
Secret Scanning Configuration,A,C,I,R,C,I,I,C,I
Dependabot Configuration,A,C,I,R,C,I,I,I,I
GitHub Actions Workflows,A,C,I,C,C,I,R,I,I
Pilot Repository Validation,A,C,C,R,C,C,I,C,I
Detection Accuracy Testing,A,I,I,R,C,C,I,R,I
SIEM Integration,A,C,I,C,I,I,R,C,I
Security Policy Configuration,A,C,I,C,I,I,I,R,C
Security Champion Training,A,I,R,C,I,I,I,C,C
Developer Training,A,I,R,I,I,I,I,I,C
Go-Live Approval,A,C,C,C,C,C,C,C,R
Hypercare Support,A,I,I,C,C,I,C,C,I
# Communications Plan
#WIDTH: 28,15,42,50,22,18
#ALIGN: left,left,left,left,left,center
Meeting Type,Frequency,Participants,Purpose,Owner,Day/Time
Project Kickoff,Once,All stakeholders,Launch project and align on GHAS objectives and timeline,Project Manager,Day 1
Steering Committee,Bi-weekly,Executive sponsors and PMO,Strategic direction and issue escalation,Project Manager,Alternate Tuesdays
Project Status Meeting,Weekly,Core project team,Review progress across all workstreams,Project Manager,Mondays 10:00
Technical Architecture Review,Weekly,Technical leads and security architects,GHAS design decisions and integration planning,Solution Architect,Wednesdays 14:00
Security Champion Standup,Weekly,Security champions and security team,Detection accuracy feedback and developer concerns,Security Architect,Tuesdays 11:00
Development Team Standup,Daily,Development and DevOps teams,Implementation progress and blockers,Technical Lead,Daily 09:30
Risk & Issue Review,Bi-weekly,PM and Risk Manager,Risk assessment and mitigation tracking,Project Manager,Alternate Fridays
QA & Testing Review,Weekly,QA Security and Development teams,Test progress and detection accuracy metrics,QA Lead,Thursdays 11:00
Developer Feedback Session,Weekly,Developers and security team,GHAS user experience and false positive feedback,Technical Lead,Thursdays 14:00
Go-Live Readiness,Daily (2 weeks pre),Go-live team,Deployment preparation and checklist review,Project Manager,Daily 09:00
Post Go-Live Review,Weekly (first month),Support and security operations,Production stability and detection accuracy monitoring,Support Lead,Mondays 11:00
