# Project Timeline
#WIDTH: 14,38,11,13,13,28,22,14
#ALIGN: left,left,center,center,center,left,left,center
Phase,Task,Duration,Start Date,End Date,Dependencies,Owner,Status
Discovery,Project Kickoff and Charter,1 day,[START_DATE],[START_DATE+1],None,Project Manager,Not Started
Discovery,CI/CD Platform Assessment,5 days,[START_DATE+1],[START_DATE+6],Project Kickoff,DevOps Engineer,Not Started
Discovery,Jenkins/GitLab Pipeline Inventory,4 days,[START_DATE+3],[START_DATE+7],Platform Assessment,Business Analyst,Not Started
Discovery,Application Technology Analysis (.NET Node Python),4 days,[START_DATE+5],[START_DATE+9],Pipeline Inventory,Technical Lead,Not Started
Discovery,Self-Hosted Runner Sizing and VPC Design,3 days,[START_DATE+7],[START_DATE+10],Platform Assessment,Infrastructure Lead,Not Started
Planning,GitHub Actions Architecture Design,5 days,[START_DATE+10],[START_DATE+15],Runner Sizing Complete,Solution Architect,Not Started
Planning,Reusable Workflow Template Strategy,4 days,[START_DATE+12],[START_DATE+16],Architecture Design,Technical Lead,Not Started
Planning,OIDC AWS Integration Design,3 days,[START_DATE+14],[START_DATE+17],Architecture Design,Security Architect,Not Started
Planning,Migration Plan and Pilot Selection,4 days,[START_DATE+15],[START_DATE+19],Template Strategy,DevOps Lead,Not Started
Build,AWS VPC and Networking Setup,5 days,[START_DATE+19],[START_DATE+24],Migration Plan,Infrastructure Engineer,Not Started
Build,Self-Hosted Runner Infrastructure (Terraform),7 days,[START_DATE+22],[START_DATE+29],VPC Setup Complete,Infrastructure Engineer,Not Started
Build,Auto-Scaling Group Configuration,4 days,[START_DATE+27],[START_DATE+31],Runner Infrastructure,DevOps Engineer,Not Started
Build,OIDC Provider Configuration in AWS IAM,3 days,[START_DATE+29],[START_DATE+32],ASG Configuration,Security Engineer,Not Started
Build,GitHub Enterprise Cloud Organization Setup,3 days,[START_DATE+30],[START_DATE+33],OIDC Configuration,GitHub Administrator,Not Started
Pilot,Pilot Application Selection (10 apps),2 days,[START_DATE+33],[START_DATE+35],Enterprise Setup,DevOps Lead,Not Started
Pilot,Reusable Workflow Development (Initial Set),7 days,[START_DATE+35],[START_DATE+42],Pilot Selection,DevOps Engineer,Not Started
Pilot,.NET Build and Deploy Workflow,3 days,[START_DATE+38],[START_DATE+41],Initial Workflows,DevOps Engineer,Not Started
Pilot,Node.js Build and Deploy Workflow,3 days,[START_DATE+40],[START_DATE+43],.NET Workflow,DevOps Engineer,Not Started
Pilot,Docker Build and Push Workflow,3 days,[START_DATE+42],[START_DATE+45],Node.js Workflow,DevOps Engineer,Not Started
Pilot,Pilot Application Migration,10 days,[START_DATE+42],[START_DATE+52],Docker Workflow,DevOps Team,Not Started
Pilot,Container Registry Integration (Packages/ECR),4 days,[START_DATE+48],[START_DATE+52],Pilot Migration,DevOps Engineer,Not Started
Pilot,Pilot Performance Validation,5 days,[START_DATE+52],[START_DATE+57],Registry Integration,Technical Lead,Not Started
Expand,Complete Reusable Workflow Library (15 templates),10 days,[START_DATE+57],[START_DATE+67],Pilot Validation,DevOps Team,Not Started
Expand,Migration Wave 1 (15 applications),7 days,[START_DATE+62],[START_DATE+69],Workflow Library,DevOps Team,Not Started
Expand,Migration Wave 2 (15 applications),7 days,[START_DATE+69],[START_DATE+76],Wave 1 Complete,DevOps Team,Not Started
Expand,Migration Wave 3 (10 applications),5 days,[START_DATE+76],[START_DATE+81],Wave 2 Complete,DevOps Team,Not Started
Expand,Kubernetes (EKS) Deployment Automation,7 days,[START_DATE+67],[START_DATE+74],Workflow Library,DevOps Engineer,Not Started
Expand,Monitoring Integration (Datadog/CloudWatch),5 days,[START_DATE+74],[START_DATE+79],EKS Automation,DevOps Engineer,Not Started
Expand,Notification Setup (Slack/Teams/PagerDuty),3 days,[START_DATE+77],[START_DATE+80],Monitoring Integration,DevOps Engineer,Not Started
Test,End-to-End Workflow Validation,7 days,[START_DATE+81],[START_DATE+88],All Migrations Complete,QA Lead,Not Started
Test,Performance Testing (<10 min pipeline),5 days,[START_DATE+85],[START_DATE+90],E2E Validation,Performance Engineer,Not Started
Test,Concurrent Build Capacity Testing,4 days,[START_DATE+87],[START_DATE+91],Performance Testing,Performance Engineer,Not Started
Test,Deployment Success Rate Validation,5 days,[START_DATE+88],[START_DATE+93],Capacity Testing,QA Lead,Not Started
Test,User Acceptance Testing,7 days,[START_DATE+90],[START_DATE+97],Rate Validation,Business Users,Not Started
Deploy,Production Environment Protection Rules,3 days,[START_DATE+97],[START_DATE+100],UAT Complete,DevOps Lead,Not Started
Deploy,DevOps Engineer Training (15 engineers),5 days,[START_DATE+97],[START_DATE+102],UAT Complete,Training Lead,Not Started
Deploy,Developer Overview Training (100 devs),10 days,[START_DATE+100],[START_DATE+110],Engineer Training,Training Lead,Not Started
Deploy,Go-Live and Jenkins Parallel Operation,5 days,[START_DATE+110],[START_DATE+115],Training Complete,Project Manager,Not Started
Closure,Hypercare Support (30 days),30 days,[START_DATE+115],[START_DATE+145],Go-Live,Support Team,Not Started
Closure,Knowledge Transfer Sessions,7 days,[START_DATE+118],[START_DATE+125],Hypercare Started,Technical Lead,Not Started
Closure,Operations Runbook Validation,5 days,[START_DATE+125],[START_DATE+130],Knowledge Transfer,DevOps Lead,Not Started
Closure,Project Documentation Finalization,5 days,[START_DATE+130],[START_DATE+135],Runbook Validation,Project Manager,Not Started
Closure,Project Closure and Lessons Learned,3 days,[START_DATE+145],[START_DATE+148],Hypercare Complete,Project Manager,Not Started
# Milestones
#WIDTH: 14,30,20,62,28,17
#ALIGN: left,left,center,left,left,center
Milestone ID,Milestone Name,Target Date,Success Criteria,Owner,Status
M1,Project Kickoff,[START_DATE],Stakeholders aligned; project charter approved; GitHub org access confirmed,Project Manager,Not Started
M2,Assessment Complete,[START_DATE+19],Pipeline inventory complete; application analysis done; runner sizing validated,DevOps Lead,Not Started
M3,Infrastructure Ready,[START_DATE+33],Self-hosted runners operational; OIDC configured; ASG auto-scaling working,Infrastructure Lead,Not Started
M4,Pilot Migration Complete,[START_DATE+57],10 pilot apps migrated; <10 min build time; 95%+ success rate validated,Technical Lead,Not Started
M5,Workflow Library Complete,[START_DATE+67],15 reusable workflow templates deployed; all tech stacks covered,DevOps Lead,Not Started
M6,Organization-Wide Migration,[START_DATE+81],All 50 applications migrated from Jenkins to GitHub Actions,DevOps Lead,Not Started
M7,Testing Complete,[START_DATE+97],Performance targets met; UAT passed; deployment success rate >95%,QA Lead,Not Started
M8,Go-Live,[START_DATE+115],Production deployment; developers trained; Jenkins parallel operation,Project Manager,Not Started
M9,Project Closure,[START_DATE+148],Hypercare complete; knowledge transfer done; lessons learned documented,Project Manager,Not Started
# RACI Matrix
#WIDTH: 38,8,8,8,8,8,8,8,8,8
#ALIGN: left,center,center,center,center,center,center,center,center,center
Task/Deliverable,PM,SA,BA,TL,Dev,QA,DevOps,Infra,Client
Project Charter & Kickoff,A,C,C,I,I,I,I,I,C
CI/CD Platform Assessment,A,C,R,I,I,I,R,C,C
Jenkins Pipeline Inventory,A,I,R,C,I,I,C,I,C
GitHub Actions Architecture,A,R,I,C,I,I,C,C,I
Self-Hosted Runner Design,A,C,I,C,I,I,R,R,I
AWS VPC Infrastructure,A,C,I,I,I,I,C,R,I
OIDC AWS Integration,A,C,I,C,I,I,R,C,I
GitHub Enterprise Configuration,A,C,I,C,I,I,R,I,I
Reusable Workflow Development,A,C,I,R,C,I,R,I,I
Pilot Application Migration,A,C,C,R,C,I,R,I,C
Container Registry Integration,A,C,I,C,I,I,R,C,I
EKS Deployment Automation,A,C,I,C,I,I,R,C,I
Monitoring Integration,A,C,I,C,I,I,R,C,I
Organization-Wide Migration,A,C,C,R,C,I,R,I,C
Performance Testing,R,I,I,C,I,R,C,I,I
User Acceptance Testing,A,I,C,C,I,R,I,I,R
DevOps Training,A,I,R,R,I,I,R,I,C
Developer Training,A,I,R,I,I,I,C,I,C
Go-Live Approval,A,C,C,C,C,C,C,C,R
Hypercare Support,A,I,I,C,C,I,R,C,I
# Communications Plan
#WIDTH: 28,15,42,50,22,18
#ALIGN: left,left,left,left,left,center
Meeting Type,Frequency,Participants,Purpose,Owner,Day/Time
Project Kickoff,Once,All stakeholders,Launch project and align on GitHub Actions migration objectives,Project Manager,Day 1
Steering Committee,Bi-weekly,Executive sponsors and PMO,Strategic direction and issue escalation,Project Manager,Alternate Tuesdays
Project Status Meeting,Weekly,Core project team,Review progress across all workstreams,Project Manager,Mondays 10:00
Technical Architecture Review,Weekly,Technical leads and architects,GitHub Actions design decisions and runner infrastructure,Solution Architect,Wednesdays 14:00
Migration Standup,Daily,DevOps and development teams,Application migration progress and blockers,DevOps Lead,Daily 09:30
Infrastructure Review,Weekly,Infrastructure and DevOps teams,Runner health auto-scaling and AWS infrastructure,Infrastructure Lead,Tuesdays 11:00
Risk & Issue Review,Bi-weekly,PM and Risk Manager,Risk assessment and mitigation tracking,Project Manager,Alternate Fridays
QA & Testing Review,Weekly,QA DevOps and Development teams,Test progress and deployment success metrics,QA Lead,Thursdays 11:00
Developer Feedback Session,Weekly,Developers and DevOps team,Workflow experience and pipeline performance feedback,Technical Lead,Thursdays 14:00
Go-Live Readiness,Daily (2 weeks pre),Go-live team,Deployment preparation and checklist review,Project Manager,Daily 09:00
Post Go-Live Review,Weekly (first month),Support and DevOps teams,Production stability and performance monitoring,Support Lead,Mondays 11:00
