# Project Timeline
#WIDTH: 12,36,13,19,19,26,24,14
#ALIGN: left,left,center,center,center,left,left,center
Phase,Task,Duration,Start Date,End Date,Dependencies,Owner,Status
Planning,Project Kickoff and Stakeholder Alignment,2 days,Week 1 Day 1,Week 1 Day 2,None,Project Manager,Not Started
Planning,Requirements Gathering and Validation,3 days,Week 1 Day 2,Week 1 Day 5,Project Kickoff,GCP Architect,Not Started
Planning,Current State GCP Environment Assessment,3 days,Week 1 Day 3,Week 2 Day 1,Requirements Gathering,GCP Architect,Not Started
Planning,Landing Zone Architecture Design,5 days,Week 2 Day 1,Week 2 Day 5,Environment Assessment,GCP Architect,Not Started
Planning,Security Baseline and Compliance Design,4 days,Week 2 Day 3,Week 3 Day 2,Architecture Design,Security Specialist,Not Started
Foundation,GCP Organization and Billing Setup,3 days,Week 3 Day 1,Week 3 Day 3,Architecture Design,GCP Architect,Not Started
Foundation,Folder Hierarchy Configuration,2 days,Week 3 Day 3,Week 3 Day 5,Organization Setup,Platform Engineer,Not Started
Foundation,Cloud Identity and SAML SSO Integration,4 days,Week 3 Day 4,Week 4 Day 3,Folder Hierarchy,Platform Engineer,Not Started
Foundation,Shared VPC Hub Network Deployment,5 days,Week 4 Day 1,Week 4 Day 5,Organization Setup,Platform Engineer,Not Started
Foundation,Dedicated Interconnect Provisioning,10 days,Week 1 Day 1,Week 6 Day 5,ISP Coordination (parallel),Network Engineer,Not Started
Network,VLAN Attachment Configuration,3 days,Week 6 Day 5,Week 7 Day 3,Interconnect Provisioning,Network Engineer,Not Started
Network,Cloud Router and BGP Configuration,2 days,Week 7 Day 3,Week 7 Day 5,VLAN Attachments,Network Engineer,Not Started
Network,Cloud NAT Gateway Deployment,2 days,Week 7 Day 3,Week 7 Day 5,Shared VPC Network,Platform Engineer,Not Started
Network,Internal Load Balancer Setup,2 days,Week 7 Day 4,Week 8 Day 1,Cloud NAT,Platform Engineer,Not Started
Security,Security Command Center Premium Setup,3 days,Week 5 Day 1,Week 5 Day 3,Folder Hierarchy,Security Specialist,Not Started
Security,Chronicle SIEM Integration,4 days,Week 5 Day 3,Week 6 Day 2,SCC Premium Setup,Security Specialist,Not Started
Security,Organization Policy Constraints (50+),5 days,Week 5 Day 1,Week 5 Day 5,Folder Hierarchy,Security Specialist,Not Started
Security,Cloud KMS Key Management Setup,3 days,Week 6 Day 1,Week 6 Day 3,Organization Policies,Security Specialist,Not Started
Security,Cloud Armor and Cloud IDS Deployment,3 days,Week 6 Day 2,Week 6 Day 5,SCC Premium Setup,Security Specialist,Not Started
Automation,Cloud Foundation Toolkit Module Dev,10 days,Week 6 Day 1,Week 8 Day 5,Security Baseline,Platform Engineer,Not Started
Automation,Project Factory Module Configuration,5 days,Week 8 Day 1,Week 8 Day 5,CFT Module Dev,Platform Engineer,Not Started
Automation,CI/CD Pipeline Setup for Terraform,3 days,Week 8 Day 3,Week 9 Day 1,Project Factory Module,Platform Engineer,Not Started
Observability,Cloud Logging Sink Configuration,3 days,Week 9 Day 1,Week 9 Day 3,Project Factory,Platform Engineer,Not Started
Observability,BigQuery Log Export Setup,2 days,Week 9 Day 3,Week 9 Day 5,Logging Sinks,Platform Engineer,Not Started
Observability,Cloud Monitoring Dashboards,3 days,Week 9 Day 3,Week 10 Day 1,Logging Sinks,Platform Engineer,Not Started
Observability,FinOps Dashboards and Budget Alerts,3 days,Week 10 Day 1,Week 10 Day 3,Monitoring Dashboards,Platform Engineer,Not Started
Testing,Infrastructure Validation Testing,3 days,Week 10 Day 1,Week 10 Day 3,All Infrastructure,QA Lead,Not Started
Testing,Network Connectivity Testing,2 days,Week 10 Day 3,Week 10 Day 5,Infrastructure Testing,Network Engineer,Not Started
Testing,Security Baseline Validation,3 days,Week 10 Day 3,Week 11 Day 1,Infrastructure Testing,Security Specialist,Not Started
Testing,Compliance Validation (SOC 2 PCI-DSS),2 days,Week 11 Day 1,Week 11 Day 3,Security Validation,Security Specialist,Not Started
Testing,User Acceptance Testing with Pilot Teams,5 days,Week 11 Day 1,Week 11 Day 5,All Testing,QA Lead,Not Started
Onboarding,Pilot Team 1 Project Provisioning,2 days,Week 11 Day 3,Week 11 Day 5,UAT Complete,Platform Engineer,Not Started
Onboarding,Pilot Team 2 Project Provisioning,2 days,Week 11 Day 5,Week 12 Day 2,Pilot Team 1,Platform Engineer,Not Started
Training,Platform Administrator Training,2 days,Week 11 Day 1,Week 11 Day 3,CFT Modules Complete,Project Manager,Not Started
Training,Security Operations Training,1 day,Week 11 Day 3,Week 11 Day 4,Administrator Training,Security Specialist,Not Started
Training,Knowledge Transfer Sessions,3 days,Week 12 Day 1,Week 12 Day 3,All Training,GCP Architect,Not Started
Closure,Documentation Finalization,3 days,Week 12 Day 1,Week 12 Day 3,All Deliverables,Project Manager,Not Started
Closure,Go-Live Readiness Review,1 day,Week 12 Day 4,Week 12 Day 4,Documentation Complete,Project Manager,Not Started
Closure,Production Go-Live,1 day,Week 12 Day 5,Week 12 Day 5,Go-Live Readiness,Project Manager,Not Started
Hypercare,Daily Health Checks and Support,14 days,Week 13 Day 1,Week 14 Day 5,Go-Live,Platform Engineer,Not Started
Hypercare,Issue Resolution and Optimization,14 days,Week 13 Day 1,Week 14 Day 5,Go-Live,Platform Engineer,Not Started
Hypercare,Project Closure and Lessons Learned,2 days,Week 16 Day 4,Week 16 Day 5,Hypercare Period,Project Manager,Not Started
# Milestones
#WIDTH: 14,25,20,77,28,17
#ALIGN: left,left,center,left,left,center
Milestone ID,Milestone Name,Target Date,Success Criteria,Owner,Status
M1,Project Kickoff,Week 1,All stakeholders attended kickoff; project charter approved; GCP access confirmed,Project Manager,Not Started
M2,Architecture Approved,Week 3,Landing zone architecture design signed off by technical governance,GCP Architect,Not Started
M3,Foundation Complete,Week 5,GCP Organization folder hierarchy and Cloud Identity SSO operational,Platform Engineer,Not Started
M4,Network Operational,Week 8,Shared VPC and Dedicated Interconnect live with <5ms latency validated,Network Engineer,Not Started
M5,Security Baseline Active,Week 7,SCC Premium Chronicle and 50+ organization policies enforced,Security Specialist,Not Started
M6,Automation Ready,Week 9,Cloud Foundation Toolkit modules tested; project provisioning <1 hour,Platform Engineer,Not Started
M7,Testing Complete,Week 11,All test cases passed; SOC 2 and PCI-DSS compliance validated,QA Lead,Not Started
M8,Go-Live,Week 12,2 pilot teams onboarded; 4 projects operational; platform self-sufficient,Project Manager,Not Started
M9,Project Closure,Week 16,Hypercare complete; 30-day warranty fulfilled; lessons learned documented,Project Manager,Not Started
# RACI Matrix
#WIDTH: 30,10,10,10,10,10,10,10,10
#ALIGN: left,center,center,center,center,center,center,center,center
Task/Deliverable,PM,Architect,Platform,Security,Network,QA,Training,Client
Project Charter and Kickoff,A,C,I,I,I,I,I,R
Landing Zone Architecture Design,C,R,C,C,C,I,I,A
GCP Organization and Billing Setup,A,R,R,C,I,I,I,C
Folder Hierarchy and IAM,A,C,R,R,I,I,I,C
Shared VPC Network Deployment,A,C,R,C,R,I,I,I
Dedicated Interconnect Setup,A,C,C,I,R,I,I,C
Security Baseline (SCC Chronicle),A,C,C,R,I,I,I,C
Organization Policy Implementation,A,C,C,R,I,I,I,C
Cloud Foundation Toolkit Modules,A,C,R,C,I,I,I,I
CI/CD Pipeline Configuration,A,C,R,I,I,I,I,I
Logging and Monitoring Setup,A,C,R,C,I,I,I,I
Testing and Validation,A,C,C,C,C,R,I,C
Training Delivery,A,C,C,C,I,I,R,R
Go-Live and Pilot Onboarding,A,C,R,C,C,C,I,R
# Communications Plan
#WIDTH: 23,19,38,45,19,20
#ALIGN: left,left,left,left,left,center
Meeting Type,Frequency,Participants,Purpose,Owner,Day/Time
Project Kickoff,Once,All stakeholders and project team,Launch project and align on objectives and timeline,Project Manager,Week 1 Day 1
Steering Committee,Bi-weekly,Executive sponsors PM and tech leads,Strategic decisions escalations and milestone approval,Project Manager,Alternate Thursdays
Weekly Status Meeting,Weekly,Core project team and client leads,Review progress risks blockers and next week priorities,Project Manager,Mondays 10:00 AM
Technical Design Review,Weekly,GCP Architect Platform Security Network,Architecture decisions and technical issue resolution,GCP Architect,Wednesdays 2:00 PM
Security Review,Bi-weekly,Security Specialist and client security team,Security baseline progress and compliance validation,Security Specialist,Alternate Tuesdays
Go-Live Readiness,Daily (Week 12),Go-live team and stakeholders,Pre-go-live checklist and issue triage,Project Manager,Daily 9:00 AM
Hypercare Standup,Daily (Weeks 13-14),Support team and client platform team,Daily health check and issue resolution,Platform Engineer,Daily 9:30 AM
Project Closeout,Once,All stakeholders and project team,Formal closure lessons learned and transition to steady state,Project Manager,Week 16 Day 5
