# Project Timeline
#WIDTH: 12,36,13,19,19,26,24,14
#ALIGN: left,left,center,center,center,left,left,center
Phase,Task,Duration,Start Date,End Date,Dependencies,Owner,Status
Planning,Project Kickoff and Stakeholder Alignment,2 days,Week 1 Day 1,Week 1 Day 2,None,Project Manager,Not Started
Planning,Exchange Environment Assessment,3 days,Week 1 Day 2,Week 1 Day 5,Project Kickoff,Migration Architect,Not Started
Planning,File Server Inventory and Analysis,3 days,Week 1 Day 3,Week 2 Day 1,Project Kickoff,Migration Engineer,Not Started
Planning,Migration Strategy and Wave Planning,3 days,Week 2 Day 1,Week 2 Day 3,Assessment Complete,Migration Architect,Not Started
Planning,Change Management Strategy,3 days,Week 2 Day 3,Week 3 Day 1,Migration Strategy,Change Manager,Not Started
Setup,Google Workspace Tenant Configuration,3 days,Week 3 Day 1,Week 3 Day 3,Planning Complete,Google Administrator,Not Started
Setup,Domain Verification and MX Planning,2 days,Week 3 Day 3,Week 3 Day 5,Tenant Configuration,Google Administrator,Not Started
Setup,Azure AD SAML SSO Integration,4 days,Week 3 Day 4,Week 4 Day 3,Domain Verification,Identity Engineer,Not Started
Setup,Google Cloud Directory Sync Setup,3 days,Week 4 Day 1,Week 4 Day 3,SSO Integration,Identity Engineer,Not Started
Setup,Data Loss Prevention Policy Configuration,3 days,Week 4 Day 1,Week 4 Day 3,Tenant Configuration,Security Engineer,Not Started
Setup,Google Vault Retention Configuration,2 days,Week 4 Day 3,Week 4 Day 5,DLP Configuration,Security Engineer,Not Started
Setup,Mobile Device Management Setup,3 days,Week 4 Day 3,Week 5 Day 1,Security Policies,MDM Administrator,Not Started
Pilot,Pilot User Selection (25 users),2 days,Week 4 Day 4,Week 5 Day 1,Setup Complete,Pilot Coordinator,Not Started
Pilot,Pilot Mailbox Migration (25 mailboxes),3 days,Week 5 Day 1,Week 5 Day 3,Pilot Selection,Migration Engineer,Not Started
Pilot,Pilot File Migration,2 days,Week 5 Day 3,Week 5 Day 5,Mailbox Migration,Migration Engineer,Not Started
Pilot,Pilot Training Sessions,2 days,Week 5 Day 3,Week 5 Day 5,Pilot Migration,Training Manager,Not Started
Pilot,Pilot Feedback and Optimization,3 days,Week 5 Day 5,Week 6 Day 3,Pilot Training,Pilot Coordinator,Not Started
Migration,Wave 1 Sales Migration (95 users),5 days,Week 6 Day 1,Week 6 Day 5,Pilot Complete,Migration Team,Not Started
Migration,Wave 1 Training Sessions,2 days,Week 6 Day 4,Week 7 Day 1,Wave 1 Migration,Training Manager,Not Started
Migration,Wave 2 Marketing Migration (95 users),5 days,Week 7 Day 1,Week 7 Day 5,Wave 1 Complete,Migration Team,Not Started
Migration,Wave 2 Training Sessions,2 days,Week 7 Day 4,Week 8 Day 1,Wave 2 Migration,Training Manager,Not Started
Migration,Wave 3 Operations Migration (95 users),5 days,Week 8 Day 1,Week 8 Day 5,Wave 2 Complete,Migration Team,Not Started
Migration,Wave 3 Training Sessions,2 days,Week 8 Day 4,Week 9 Day 1,Wave 3 Migration,Training Manager,Not Started
Migration,Wave 4 Finance Migration (95 users),5 days,Week 9 Day 1,Week 9 Day 5,Wave 3 Complete,Migration Team,Not Started
Migration,Wave 4 Training Sessions,2 days,Week 9 Day 4,Week 10 Day 1,Wave 4 Migration,Training Manager,Not Started
Migration,Wave 5 Executive Migration (95 users),5 days,Week 10 Day 1,Week 10 Day 5,Wave 4 Complete,Migration Team,Not Started
Migration,MX Record Cutover,1 day,Week 10 Day 5,Week 10 Day 5,All Waves Complete,Google Administrator,Not Started
Training,Administrator Training Sessions,3 days,Week 11 Day 1,Week 11 Day 3,Migration Complete,Training Manager,Not Started
Training,Change Champion Enablement,2 days,Week 11 Day 3,Week 11 Day 5,Admin Training,Change Manager,Not Started
Training,Advanced Feature Training,2 days,Week 11 Day 5,Week 12 Day 2,Champion Training,Training Manager,Not Started
Closure,Documentation Finalization,3 days,Week 12 Day 1,Week 12 Day 3,All Training,Project Manager,Not Started
Closure,Go-Live Readiness Review,1 day,Week 12 Day 4,Week 12 Day 4,Documentation,Project Manager,Not Started
Closure,Project Closure,1 day,Week 12 Day 5,Week 12 Day 5,Readiness Review,Project Manager,Not Started
Hypercare,Daily Health Checks and Support,14 days,Week 13 Day 1,Week 14 Day 5,Project Closure,Support Team,Not Started
Hypercare,Issue Resolution and Optimization,14 days,Week 13 Day 1,Week 14 Day 5,Project Closure,Support Team,Not Started
# Milestones
#WIDTH: 14,25,20,77,28,17
#ALIGN: left,left,center,left,left,center
Milestone ID,Milestone Name,Target Date,Success Criteria,Owner,Status
M1,Project Kickoff,Week 1,Stakeholders aligned and project charter approved,Project Manager,Not Started
M2,Environment Configured,Week 4,Google Workspace tenant SSO and security policies active,Google Administrator,Not Started
M3,Pilot Complete,Week 6,25 pilot users migrated and validated with positive feedback,Pilot Coordinator,Not Started
M4,All Users Migrated,Week 10,500 mailboxes and 3 TB files migrated with zero data loss,Migration Team,Not Started
M5,Training Complete,Week 11,Admin and end-user training delivered with 90%+ attendance,Training Manager,Not Started
M6,MX Cutover,Week 10,Email routing switched to Gmail with Exchange decommissioned,Google Administrator,Not Started
M7,Project Closure,Week 12,All deliverables accepted and documentation complete,Project Manager,Not Started
M8,Hypercare Complete,Week 16,30-day support period complete with team self-sufficient,Support Team,Not Started
# RACI Matrix
#WIDTH: 30,10,10,10,10,10,10,10,10
#ALIGN: left,center,center,center,center,center,center,center,center
Task/Deliverable,PM,Architect,Migration,Security,Training,Support,Change,Client
Project Charter and Kickoff,A,C,I,I,I,I,R,R
Migration Assessment Report,C,R,R,C,I,I,I,A
Google Workspace Configuration,C,R,C,R,I,I,I,C
SSO and Directory Sync Setup,C,R,C,R,I,I,I,C
Security Policies (DLP Vault),C,C,I,R,I,I,I,A
Pilot Migration (25 users),A,C,R,C,C,I,C,C
Wave 1-5 Migrations,A,C,R,C,C,C,C,C
End-User Training Sessions,A,C,I,I,R,C,R,C
Administrator Training,A,C,C,C,R,C,I,R
Change Champion Enablement,A,I,I,I,C,I,R,R
Hypercare Support,A,C,C,C,C,R,C,C
# Communications Plan
#WIDTH: 23,19,38,45,19,20
#ALIGN: left,left,left,left,left,center
Meeting Type,Frequency,Participants,Purpose,Owner,Day/Time
Project Kickoff,Once,All stakeholders and project team,Launch project and align on scope timeline and roles,Project Manager,Week 1 Day 1
Steering Committee,Bi-weekly,Executive sponsors PM and leads,Strategic decisions escalations and milestone approval,Project Manager,Alternate Thursdays
Weekly Status Meeting,Weekly,Core project team and client leads,Review progress risks blockers and next week priorities,Project Manager,Mondays 10:00 AM
Migration Wave Planning,Weekly,Migration team and department leads,Coordinate upcoming wave and resolve dependencies,Migration Architect,Tuesdays 2:00 PM
Training Coordination,Weekly,Training team and change champions,Plan training sessions and review feedback,Training Manager,Wednesdays 3:00 PM
Go-Live Readiness,Daily (Week 10),Go-live team and stakeholders,Pre-cutover checklist and issue triage,Project Manager,Daily 9:00 AM
Hypercare Standup,Daily (Weeks 13-14),Support team and client IT,Daily health check and issue resolution,Support Team,Daily 9:30 AM
Project Closeout,Once,All stakeholders and project team,Formal closure lessons learned and handover,Project Manager,Week 12 Day 5
