# Project Timeline
#WIDTH: 14,40,12,20,20,30,24,14
#ALIGN: left,left,center,center,center,left,left,center
Phase,Task,Duration,Start Date,End Date,Dependencies,Owner,Status
Phase 1,Project Kickoff,3 days,Month 1 Week 1,Month 1 Week 1,None,Project Manager,Not Started
Phase 1,Multi-Cloud Infrastructure Assessment,10 days,Month 1 Week 1,Month 1 Week 2,Project Kickoff,Solution Architect,Not Started
Phase 1,Terraform Cloud Architecture Design,10 days,Month 1 Week 2,Month 1 Week 4,Assessment Complete,Solution Architect,Not Started
Phase 1,HashiCorp Vault Architecture Design,7 days,Month 1 Week 3,Month 1 Week 4,TFC Architecture,Security Architect,Not Started
Phase 1,AWS EKS Cluster Deployment,10 days,Month 2 Week 1,Month 2 Week 2,Architecture Approved,DevOps Engineer,Not Started
Phase 1,Terraform Cloud Installation on EKS,7 days,Month 2 Week 2,Month 2 Week 3,EKS Ready,DevOps Engineer,Not Started
Phase 1,RDS PostgreSQL Backend Setup,5 days,Month 2 Week 2,Month 2 Week 3,EKS Ready,DevOps Engineer,Not Started
Phase 1,HashiCorp Vault HA Deployment,10 days,Month 2 Week 3,Month 3 Week 1,TFC Operational,DevOps Engineer,Not Started
Phase 1,VCS Integration with GitHub,5 days,Month 2 Week 4,Month 3 Week 1,TFC Operational,DevOps Engineer,Not Started
Phase 1,RBAC and SSO Configuration,5 days,Month 3 Week 1,Month 3 Week 2,VCS Integration,Security Engineer,Not Started
Phase 1,Pilot Workspace Migration (25),10 days,Month 3 Week 2,Month 3 Week 4,Platform Ready,Infrastructure Team,Not Started
Phase 1,Pilot Validation and Testing,5 days,Month 3 Week 4,Month 3 Week 4,Pilot Migration,QA Team,Not Started
Phase 2,Sentinel Policy Framework Design,10 days,Month 4 Week 1,Month 4 Week 2,Pilot Complete,Security Architect,Not Started
Phase 2,Security Policies Development (20),15 days,Month 4 Week 2,Month 4 Week 4,Policy Framework,Security Engineer,Not Started
Phase 2,Cost Governance Policies (15),10 days,Month 4 Week 3,Month 5 Week 1,Security Policies,Platform Engineer,Not Started
Phase 2,Compliance Policies SOC2/ISO (15),10 days,Month 5 Week 1,Month 5 Week 2,Cost Policies,Compliance Team,Not Started
Phase 2,Vault Dynamic Credentials - AWS,7 days,Month 4 Week 1,Month 4 Week 2,Vault Operational,Security Engineer,Not Started
Phase 2,Vault Dynamic Credentials - Azure,7 days,Month 4 Week 2,Month 4 Week 3,AWS Credentials,Security Engineer,Not Started
Phase 2,Vault Dynamic Credentials - GCP,7 days,Month 4 Week 3,Month 4 Week 4,Azure Credentials,Security Engineer,Not Started
Phase 2,Workspace Migration Wave 2 (50),15 days,Month 5 Week 1,Month 5 Week 3,Policies Ready,Infrastructure Team,Not Started
Phase 2,Workspace Migration Wave 3 (25),10 days,Month 5 Week 3,Month 6 Week 1,Wave 2 Complete,Infrastructure Team,Not Started
Phase 2,CI/CD Pipeline Integration,10 days,Month 5 Week 2,Month 5 Week 4,Workspaces Migrated,DevOps Engineer,Not Started
Phase 2,ServiceNow Integration,7 days,Month 5 Week 4,Month 6 Week 1,CI/CD Integration,Integration Team,Not Started
Phase 2,Policy Advisory Mode Testing,10 days,Month 6 Week 1,Month 6 Week 2,All Policies,QA Team,Not Started
Phase 2,Policy Mandatory Enforcement,5 days,Month 6 Week 3,Month 6 Week 4,Advisory Testing,Security Team,Not Started
Phase 3,Consul Service Mesh Design,7 days,Month 7 Week 1,Month 7 Week 2,Phase 2 Complete,Solution Architect,Not Started
Phase 3,Consul Deployment on EKS,10 days,Month 7 Week 2,Month 7 Week 4,Consul Design,DevOps Engineer,Not Started
Phase 3,Service Discovery Configuration,7 days,Month 7 Week 4,Month 8 Week 1,Consul Deployed,Platform Engineer,Not Started
Phase 3,Consul Connect Encryption Setup,5 days,Month 8 Week 1,Month 8 Week 2,Service Discovery,Security Engineer,Not Started
Phase 3,Drift Detection Configuration,5 days,Month 7 Week 3,Month 7 Week 4,Phase 2 Complete,DevOps Engineer,Not Started
Phase 3,Scheduled Runs Automation,5 days,Month 7 Week 4,Month 8 Week 1,Drift Detection,DevOps Engineer,Not Started
Phase 3,Monitoring Dashboard Setup,7 days,Month 8 Week 1,Month 8 Week 2,Platform Complete,Operations Team,Not Started
Phase 3,Integration Testing,10 days,Month 8 Week 2,Month 8 Week 4,All Components,QA Team,Not Started
Phase 3,Performance Testing,7 days,Month 8 Week 3,Month 8 Week 4,Integration Testing,QA Team,Not Started
Phase 3,Security Testing,7 days,Month 8 Week 3,Month 8 Week 4,Integration Testing,Security Team,Not Started
Phase 3,User Acceptance Testing,10 days,Month 8 Week 4,Month 9 Week 2,All Testing,Business Users,Not Started
Phase 4,Administrator Training,5 days,Month 9 Week 1,Month 9 Week 2,UAT Complete,Training Team,Not Started
Phase 4,Operator Training,3 days,Month 9 Week 2,Month 9 Week 2,Admin Training,Training Team,Not Started
Phase 4,Documentation Delivery,5 days,Month 9 Week 2,Month 9 Week 3,Training Complete,Project Manager,Not Started
Phase 4,Go-Live Preparation,3 days,Month 9 Week 3,Month 9 Week 3,Documentation,Operations Team,Not Started
Phase 4,Production Go-Live,2 days,Month 9 Week 4,Month 9 Week 4,Go-Live Prep,Project Manager,Not Started
Phase 4,Hypercare Support,30 days,Month 10 Week 1,Month 10 Week 4,Go-Live,Support Team,Not Started
Phase 4,Project Closure,3 days,Month 10 Week 4,Month 10 Week 4,Hypercare Complete,Project Manager,Not Started
# Milestones
#WIDTH: 14,30,20,75,28,16
#ALIGN: left,left,center,left,left,center
Milestone ID,Milestone Name,Target Date,Success Criteria,Owner,Status
M1,Project Kickoff,Month 1 Week 1,Stakeholder alignment complete and project charter signed,Project Manager,Not Started
M2,Assessment Complete,Month 1 Week 2,Multi-cloud infrastructure documented with 100+ workspace inventory,Solution Architect,Not Started
M3,Terraform Cloud Operational,Month 2 Week 3,Platform deployed on EKS with VCS integration functional,DevOps Engineer,Not Started
M4,Pilot Workspaces Migrated,Month 3 Week 4,25 workspaces migrated with state validation complete,Infrastructure Team,Not Started
M5,Vault Integration Complete,Month 4 Week 4,Dynamic credentials operational for AWS Azure GCP,Security Engineer,Not Started
M6,Sentinel Policies Deployed,Month 6 Week 4,50 policies enforced across all workspaces with 95%+ compliance,Security Team,Not Started
M7,100 Workspaces Migrated,Month 6 Week 1,All workspaces migrated with policy enforcement active,Infrastructure Team,Not Started
M8,Consul Service Mesh Live,Month 8 Week 2,Cross-cloud service discovery and Connect operational,DevOps Engineer,Not Started
M9,Go-Live,Month 9 Week 4,Full platform operational with all capabilities enabled,Project Manager,Not Started
# RACI Matrix
#WIDTH: 34,9,11,10,10,10,10,10,10
#ALIGN: left,center,center,center,center,center,center,center,center
Task/Deliverable,PM,SA,SecArch,DevOps,Infra,QA,Ops,Client
Project Charter and Kickoff,A,C,C,I,I,I,I,C
Multi-Cloud Assessment,C,R,C,C,A,I,I,C
Terraform Cloud Architecture,A,R,C,C,I,I,I,I
Vault Architecture Design,A,C,R,C,I,I,I,C
EKS Cluster Deployment,A,C,I,R,C,I,I,I
Terraform Cloud Installation,A,C,I,R,I,I,C,I
HashiCorp Vault Deployment,A,C,R,A,I,I,I,C
VCS and SSO Integration,A,C,C,R,I,I,I,C
Pilot Workspace Migration,A,C,I,C,R,C,I,I
Sentinel Policy Development,A,C,R,C,I,C,I,C
Dynamic Credentials Setup,A,I,R,A,I,I,I,C
Full Workspace Migration,A,C,I,C,R,C,I,I
CI/CD Pipeline Integration,A,C,I,R,C,I,I,I
Consul Service Mesh Deployment,A,R,C,A,I,I,I,I
Integration Testing,A,C,C,C,C,R,I,I
Security Testing,A,I,A,C,I,R,I,C
User Acceptance Testing,A,I,I,I,I,C,I,R
Administrator Training,A,C,C,R,I,I,C,C
Documentation Delivery,A,R,C,C,C,I,C,I
Go-Live Deployment,A,C,C,R,C,I,A,C
Hypercare Support,A,C,C,R,C,I,A,I
Project Closure,R,C,I,I,I,I,I,A
# Communications Plan
#WIDTH: 26,16,42,50,22,18
#ALIGN: left,left,left,left,left,center
Meeting Type,Frequency,Participants,Purpose,Owner,Day/Time
Project Kickoff,Once,All stakeholders,Launch project and align on objectives,Project Manager,Day 1
Steering Committee,Monthly,Executive sponsors and PMO,Strategic direction and issue escalation,Project Manager,First Monday
Project Status,Weekly,Core project team,Review progress risks and blockers,Project Manager,Mondays 10:00
Technical Review,Weekly,Technical leads and architects,Architecture decisions and technical issues,Solution Architect,Wednesdays 14:00
Security Review,Bi-weekly,Security team and architects,Security controls and compliance validation,Security Architect,Alternate Thursdays
Migration Checkpoint,Weekly,Migration team,Workspace migration progress and validation,Infrastructure Lead,Tuesdays 11:00
Policy Review,Bi-weekly,Security and DevOps teams,Sentinel policy effectiveness and tuning,Security Engineer,Alternate Fridays
Training Sessions,As scheduled,End users and administrators,Platform training delivery,Training Team,As scheduled
Go-Live Readiness,Daily (pre-launch),Go-live team,Go-live preparation and checklist review,Project Manager,Daily 09:00
Hypercare Standup,Daily (post-launch),Support team,Issue triage and resolution tracking,Support Lead,Daily 09:00
