# Project Timeline
#WIDTH: 14,40,12,20,20,30,24,14
#ALIGN: left,left,center,center,center,left,left,center
Phase,Task,Duration,Start Date,End Date,Dependencies,Owner,Status
Phase 1,Project Kickoff,3 days,Month 1 Week 1,Month 1 Week 1,None,Project Manager,Not Started
Phase 1,Terraform OSS Assessment,7 days,Month 1 Week 1,Month 1 Week 2,Project Kickoff,Solution Architect,Not Started
Phase 1,TFE Architecture Design,7 days,Month 1 Week 2,Month 1 Week 3,Assessment Complete,Solution Architect,Not Started
Phase 1,AWS Infrastructure Setup,5 days,Month 1 Week 3,Month 1 Week 4,Architecture Approved,DevOps Engineer,Not Started
Phase 1,EKS Cluster Deployment,7 days,Month 1 Week 4,Month 2 Week 1,AWS Infra Ready,DevOps Engineer,Not Started
Phase 1,RDS PostgreSQL Setup,5 days,Month 2 Week 1,Month 2 Week 2,EKS Ready,DevOps Engineer,Not Started
Phase 1,Terraform Enterprise Installation,5 days,Month 2 Week 2,Month 2 Week 2,RDS Ready,DevOps Engineer,Not Started
Phase 1,VCS Integration with GitHub,3 days,Month 2 Week 3,Month 2 Week 3,TFE Operational,DevOps Engineer,Not Started
Phase 1,RBAC Configuration,3 days,Month 2 Week 3,Month 2 Week 4,VCS Integration,Security Engineer,Not Started
Phase 1,Pilot Workspace Migration (10),5 days,Month 2 Week 4,Month 3 Week 1,Platform Ready,Infrastructure Team,Not Started
Phase 1,Development Workspace Migration (20),7 days,Month 3 Week 1,Month 3 Week 2,Pilot Complete,Infrastructure Team,Not Started
Phase 1,Staging Workspace Migration (10),5 days,Month 3 Week 2,Month 3 Week 3,Dev Migration,Infrastructure Team,Not Started
Phase 1,Production Workspace Migration (10),7 days,Month 3 Week 3,Month 3 Week 4,Staging Migration,Infrastructure Team,Not Started
Phase 2,Sentinel Policy Framework Design,5 days,Month 3 Week 4,Month 4 Week 1,Workspaces Migrated,Security Architect,Not Started
Phase 2,Security Policies Development (18),10 days,Month 4 Week 1,Month 4 Week 3,Policy Framework,Security Engineer,Not Started
Phase 2,Cost Governance Policies (12),7 days,Month 4 Week 2,Month 4 Week 3,Security Policies,Platform Engineer,Not Started
Phase 2,Compliance Policies SOC2/ISO (10),7 days,Month 4 Week 3,Month 4 Week 4,Cost Policies,Compliance Team,Not Started
Phase 2,HashiCorp Vault Integration,10 days,Month 4 Week 1,Month 4 Week 3,TFE Operational,Security Engineer,Not Started
Phase 2,Dynamic AWS Credentials Config,5 days,Month 4 Week 3,Month 4 Week 4,Vault Integrated,Security Engineer,Not Started
Phase 2,Private Module Registry Setup,5 days,Month 4 Week 4,Month 5 Week 1,TFE Operational,DevOps Engineer,Not Started
Phase 2,Module Development (15 modules),10 days,Month 5 Week 1,Month 5 Week 3,Registry Ready,Platform Engineer,Not Started
Phase 2,CI/CD Pipeline Integration,7 days,Month 5 Week 1,Month 5 Week 2,Workspaces Ready,DevOps Engineer,Not Started
Phase 2,Policy Advisory Mode Testing,5 days,Month 5 Week 2,Month 5 Week 3,All Policies Ready,QA Team,Not Started
Phase 2,Policy Mandatory Enforcement,3 days,Month 5 Week 3,Month 5 Week 4,Advisory Testing,Security Team,Not Started
Phase 3,Self-Service Workflow Config,5 days,Month 5 Week 4,Month 6 Week 1,Policies Enforced,Platform Engineer,Not Started
Phase 3,Approval Gates Setup,3 days,Month 6 Week 1,Month 6 Week 1,Self-Service Config,Platform Engineer,Not Started
Phase 3,Drift Detection Configuration,3 days,Month 6 Week 1,Month 6 Week 2,Platform Complete,DevOps Engineer,Not Started
Phase 3,Cost Estimation Integration,3 days,Month 6 Week 1,Month 6 Week 2,Platform Complete,Platform Engineer,Not Started
Phase 3,Monitoring Dashboard Setup,5 days,Month 6 Week 1,Month 6 Week 2,Platform Complete,Operations Team,Not Started
Phase 3,Integration Testing,5 days,Month 6 Week 2,Month 6 Week 3,All Components,QA Team,Not Started
Phase 3,User Acceptance Testing,5 days,Month 6 Week 3,Month 6 Week 3,Integration Testing,Business Users,Not Started
Phase 3,Administrator Training,3 days,Month 6 Week 3,Month 6 Week 4,UAT Complete,Training Team,Not Started
Phase 3,Documentation Delivery,3 days,Month 6 Week 4,Month 6 Week 4,Training Complete,Project Manager,Not Started
Phase 3,Go-Live,2 days,Month 6 Week 4,Month 6 Week 4,All Complete,Project Manager,Not Started
Phase 4,Hypercare Support,30 days,Month 7 Week 1,Month 7 Week 4,Go-Live,Support Team,Not Started
# Milestones
#WIDTH: 14,30,20,75,28,16
#ALIGN: left,left,center,left,left,center
Milestone ID,Milestone Name,Target Date,Success Criteria,Owner,Status
M1,Project Kickoff,Month 1 Week 1,Stakeholder alignment complete and project charter signed,Project Manager,Not Started
M2,Assessment Complete,Month 1 Week 2,Terraform OSS inventory documented with 50 workspaces identified,Solution Architect,Not Started
M3,TFE Operational,Month 2 Week 2,Platform deployed on EKS with VCS integration functional,DevOps Engineer,Not Started
M4,50 Workspaces Migrated,Month 3 Week 4,All workspaces migrated with state validation complete,Infrastructure Team,Not Started
M5,Sentinel Policies Deployed,Month 5 Week 4,40 policies enforced across all workspaces with 100% compliance,Security Team,Not Started
M6,Vault Integration Complete,Month 4 Week 4,Dynamic AWS credentials operational for all workspaces,Security Engineer,Not Started
M7,Private Registry Operational,Month 5 Week 3,15 modules published and available for workspace consumption,DevOps Engineer,Not Started
M8,Go-Live,Month 6 Week 4,Full platform operational with self-service and governance enabled,Project Manager,Not Started
# RACI Matrix
#WIDTH: 34,9,11,10,10,10,10,10,10
#ALIGN: left,center,center,center,center,center,center,center,center
Task/Deliverable,PM,SA,SecArch,DevOps,Infra,QA,Ops,Client
Project Charter and Kickoff,A,C,C,I,I,I,I,C
Terraform OSS Assessment,C,R,C,C,A,I,I,C
TFE Architecture Design,A,R,C,C,I,I,I,I
AWS Infrastructure Setup,A,C,I,R,C,I,I,I
EKS and RDS Deployment,A,C,I,R,I,I,C,I
Terraform Enterprise Installation,A,C,I,R,I,I,I,I
VCS Integration,A,C,I,R,I,I,I,C
RBAC Configuration,A,C,R,A,I,I,I,C
Workspace Migration,A,C,I,C,R,C,I,I
Sentinel Policy Development,A,C,R,C,I,C,I,C
Vault Integration,A,I,R,A,I,I,I,C
Private Module Registry,A,C,I,R,C,I,I,I
CI/CD Pipeline Integration,A,C,I,R,C,I,I,I
Integration Testing,A,C,C,C,C,R,I,I
User Acceptance Testing,A,I,I,I,I,C,I,R
Administrator Training,A,C,C,R,I,I,C,C
Documentation Delivery,A,R,C,C,C,I,C,I
Go-Live Deployment,A,C,C,R,C,I,A,C
Hypercare Support,A,C,C,R,C,I,A,I
# Communications Plan
#WIDTH: 26,16,42,50,22,18
#ALIGN: left,left,left,left,left,center
Meeting Type,Frequency,Participants,Purpose,Owner,Day/Time
Project Kickoff,Once,All stakeholders,Launch project and align on objectives,Project Manager,Day 1
Steering Committee,Monthly,Executive sponsors and PMO,Strategic direction and issue escalation,Project Manager,First Monday
Project Status,Weekly,Core project team,Review progress risks and blockers,Project Manager,Mondays 10:00
Technical Review,Weekly,Technical leads and architects,Architecture decisions and technical issues,Solution Architect,Wednesdays 14:00
Migration Checkpoint,Weekly,Migration team,Workspace migration progress and validation,Infrastructure Lead,Tuesdays 11:00
Policy Review,Bi-weekly,Security and DevOps teams,Sentinel policy effectiveness and tuning,Security Engineer,Alternate Fridays
Training Sessions,As scheduled,End users and administrators,Platform training delivery,Training Team,As scheduled
Hypercare Standup,Daily (post-launch),Support team,Issue triage and resolution tracking,Support Lead,Daily 09:00
