# Project Timeline
#WIDTH: 12,36,13,19,19,26,24,14
#ALIGN: left,left,center,center,center,left,left,center
Phase,Task,Duration,Start Date,End Date,Dependencies,Owner,Status
Planning,Project Kickoff,2 days,Week 1,Week 1,None,Project Manager,Complete
Planning,Requirements Validation,5 days,Week 1,Week 2,Project Kickoff,Business Analyst,Complete
Planning,Infrastructure Discovery,5 days,Week 1,Week 2,Project Kickoff,Solution Architect,Complete
Planning,Security Requirements Review,5 days,Week 2,Week 3,Requirements Validation,Security Architect,Complete
Planning,Architecture Design Sign-off,3 days,Week 3,Week 3,Infrastructure Discovery,Solution Architect,Complete
Foundation,OpenShift Cluster Provisioning,10 days,Week 3,Week 5,Architecture Design Sign-off,OpenShift Engineer,Complete
Foundation,Control Plane Configuration,5 days,Week 5,Week 6,Cluster Provisioning,OpenShift Engineer,Complete
Foundation,Worker Node Setup (3 nodes),5 days,Week 5,Week 6,Cluster Provisioning,OpenShift Engineer,Complete
Foundation,RBAC & AD/LDAP Integration,7 days,Week 6,Week 7,Control Plane Configuration,Security Architect,Complete
Foundation,OpenShift Data Foundation Setup,5 days,Week 6,Week 7,Worker Node Setup,Storage Engineer,Complete
Foundation,Monitoring Stack Deployment,5 days,Week 7,Week 8,Worker Node Setup,DevOps Engineer,Complete
Foundation,Network Policy Configuration,5 days,Week 7,Week 8,RBAC Integration,Network Engineer,Complete
DevTools,OpenShift Pipelines (Tekton) Setup,5 days,Week 8,Week 9,Monitoring Stack Deployment,DevOps Engineer,Complete
DevTools,ArgoCD GitOps Installation,3 days,Week 9,Week 9,Pipelines Setup,DevOps Engineer,Complete
DevTools,Quay Registry Configuration,3 days,Week 9,Week 10,ArgoCD Installation,DevOps Engineer,Complete
DevTools,Pipeline Templates Creation,5 days,Week 10,Week 11,Registry Configuration,DevOps Engineer,Complete
DevTools,Istio Service Mesh Setup,5 days,Week 10,Week 11,Network Policy Configuration,OpenShift Engineer,Complete
Migration,Pilot App 1 Containerization,5 days,Week 11,Week 12,Pipeline Templates Creation,Development Team,Complete
Migration,Pilot App 2 Containerization,5 days,Week 11,Week 12,Pipeline Templates Creation,Development Team,Complete
Migration,Pilot App 3 Containerization,5 days,Week 12,Week 13,Pilot App 1 Complete,Development Team,Complete
Migration,CI/CD Pipeline Configuration,5 days,Week 12,Week 13,Pilot Apps Containerized,DevOps Engineer,Complete
Migration,Remaining Apps (4-7) Migration,10 days,Week 13,Week 15,Pilot Apps Complete,Development Team,Complete
Migration,Remaining Apps (8-10) Migration,10 days,Week 15,Week 17,Apps 4-7 Complete,Development Team,Complete
Migration,Integration Testing,10 days,Week 16,Week 18,Apps Migration Complete,QA Engineer,Complete
Test,Functional Testing,7 days,Week 17,Week 18,Integration Testing Start,QA Team,Complete
Test,Performance Testing,5 days,Week 18,Week 19,Functional Testing,Performance Engineer,Complete
Test,Security Testing & Scan,5 days,Week 18,Week 19,Functional Testing,Security Team,Complete
Test,User Acceptance Testing,5 days,Week 19,Week 20,Performance Testing,Business Users,Complete
Test,Go-Live Readiness Review,2 days,Week 20,Week 20,UAT Complete,Project Manager,Complete
Deploy,Production Cutover,2 days,Week 20,Week 20,Go-Live Readiness,Deployment Team,Complete
Deploy,DNS & Routing Cutover,1 day,Week 20,Week 20,Production Cutover,Network Engineer,Complete
Deploy,VM Standby Validation,5 days,Week 20,Week 21,Production Cutover,Infrastructure Team,Complete
Training,Administrator Training,5 days,Week 18,Week 19,Integration Testing,Training Team,Complete
Training,Developer Training (Pilot Group),5 days,Week 19,Week 20,Admin Training,Training Team,Complete
Closure,Hypercare Support,20 days,Week 21,Week 24,Production Cutover,Support Team,Complete
Closure,Project Documentation Finalization,5 days,Week 23,Week 24,Hypercare Start,Project Manager,Complete
Closure,Project Closeout Meeting,1 day,Week 24,Week 24,Documentation Complete,Project Manager,Complete
# Milestones
#WIDTH: 14,25,20,77,28,17
#ALIGN: left,left,center,left,left,center
Milestone ID,Milestone Name,Target Date,Success Criteria,Owner,Status
M1,Project Kickoff,Week 1,Kickoff meeting completed; project charter signed; team mobilized,Project Manager,Complete
M2,Architecture Approved,Week 3,Architecture design approved; OpenShift sizing validated; security review passed,Solution Architect,Complete
M3,Cluster Operational,Week 8,6-node cluster operational; RBAC configured; AD/LDAP integrated; monitoring active,OpenShift Engineer,Complete
M4,DevTools Ready,Week 11,Pipelines active; ArgoCD deployed; Quay registry operational; templates created,DevOps Engineer,Complete
M5,Pilot Apps Live,Week 13,3 pilot applications containerized; CI/CD pipelines operational; GitOps validated,Development Lead,Complete
M6,All Apps Migrated,Week 17,All 10 applications containerized and deployed; integration testing complete,Development Lead,Complete
M7,Testing Complete,Week 20,All test phases passed; zero critical defects; security scan clean; UAT signed off,QA Lead,Complete
M8,Go-Live,Week 20,Production cutover complete; traffic routed; rollback validated; monitoring active,Project Manager,Complete
M9,Project Closure,Week 24,Hypercare complete; documentation delivered; training complete; formal closure,Project Manager,Complete
# RACI Matrix
#WIDTH: 30,10,10,10,10,10,10,10,10
#ALIGN: left,center,center,center,center,center,center,center,center
Task/Deliverable,PM,SA,DevOps,SecArch,QA,Dev,InfraEng,Client
Project Charter,A,C,I,I,I,I,I,C
Architecture Design,A,R,C,C,I,I,C,I
Security Design,A,C,I,R,I,I,I,C
Cluster Provisioning,A,C,R,I,I,I,C,I
RBAC Configuration,A,C,C,R,I,I,I,C
Monitoring Setup,A,I,R,I,I,I,I,I
Network Policies,A,C,C,R,I,I,I,I
CI/CD Pipeline Setup,A,I,R,I,I,C,I,I
GitOps Configuration,A,I,R,I,I,C,I,I
App Containerization,A,I,C,I,I,R,I,C
Integration Testing,A,I,C,I,R,C,I,C
Security Testing,A,I,I,R,C,I,I,I
UAT Execution,A,I,I,I,R,C,I,R
Training Delivery,A,C,C,I,I,I,I,R
Production Cutover,A,C,R,C,C,I,R,C
Hypercare Support,A,C,R,I,I,I,C,I
Documentation,A,R,C,C,I,I,I,I
Go-Live Approval,A,C,C,C,C,I,I,R
Project Closure,R,C,I,I,I,I,I,A
# Communications Plan
#WIDTH: 23,19,38,45,19,20
#ALIGN: left,left,left,left,left,center
Meeting Type,Frequency,Participants,Purpose,Owner,Day/Time
Project Kickoff,Once,All stakeholders,Launch project and align on objectives and timeline,Project Manager,Week 1 Day 1
Steering Committee,Bi-weekly,Executive sponsors and PMO,Strategic direction and issue escalation,Project Manager,Alternate Tuesdays 14:00
Status Meeting,Weekly,Core project team,Review progress and address blockers,Project Manager,Mondays 10:00
Technical Review,Weekly,Technical leads and architects,Technical design decisions and issues,Solution Architect,Wednesdays 14:00
Security Review,Bi-weekly,Security and compliance team,Security posture review and policy validation,Security Architect,Alternate Thursdays 11:00
Sprint Review,Bi-weekly,Development and DevOps teams,Sprint demo and feedback collection,DevOps Lead,End of Sprint Fridays 15:00
QA Sync,Weekly,QA and Development teams,Test progress and defect triage,QA Lead,Thursdays 11:00
Training Coordination,Weekly (during training),Training team and participants,Training logistics and feedback,Training Lead,Mondays 09:00
Go-Live Readiness,Daily (2 weeks pre),Go-live team,Go-live preparation and checklist review,Project Manager,Daily 09:00
Hypercare Check-in,Daily (first 2 weeks),Support team and operations,Post-go-live health check and issue resolution,Support Lead,Daily 09:00
Project Closeout,Once,All stakeholders,Project review and formal closure,Project Manager,Week 24
