# Project Timeline
#WIDTH: 12,36,13,19,19,26,24,14
#ALIGN: left,left,center,center,center,left,left,center
Phase,Task,Duration,Start Date,End Date,Dependencies,Owner,Status
Discovery,Project Kickoff,2 days,Week 1,Week 1,None,Project Manager,Complete
Discovery,IT Operations Assessment,5 days,Week 1,Week 2,Project Kickoff,Business Analyst,Complete
Discovery,Automation Opportunity Analysis,5 days,Week 2,Week 3,Operations Assessment,Automation Architect,Complete
Discovery,Platform Requirements Gathering,5 days,Week 2,Week 3,Operations Assessment,Solution Architect,Complete
Discovery,Architecture Design Sign-off,3 days,Week 3,Week 3,Requirements Gathering,Solution Architect,Complete
Platform,Cloud Infrastructure Provisioning,5 days,Week 4,Week 5,Architecture Sign-off,Cloud Engineer,Complete
Platform,Controller Cluster Deployment,5 days,Week 5,Week 6,Infrastructure Provisioning,Platform Engineer,Complete
Platform,Execution Node Setup (4 nodes),3 days,Week 5,Week 6,Controller Deployment,Platform Engineer,Complete
Platform,PostgreSQL HA Configuration,3 days,Week 5,Week 6,Controller Deployment,Database Engineer,Complete
Platform,Private Automation Hub Setup,3 days,Week 6,Week 6,Controller Deployment,Platform Engineer,Complete
Platform,LDAP/AD SSO Integration,5 days,Week 6,Week 7,Hub Setup,Security Architect,Complete
Platform,RBAC Configuration,3 days,Week 7,Week 7,SSO Integration,Security Architect,Complete
Integration,HashiCorp Vault Integration,5 days,Week 7,Week 8,RBAC Configuration,Integration Engineer,Complete
Integration,ServiceNow Connector Setup,5 days,Week 8,Week 9,Vault Integration,Integration Engineer,Complete
Integration,Monitoring Webhook Configuration,3 days,Week 9,Week 9,ServiceNow Setup,Integration Engineer,Complete
Integration,Git Repository Integration,3 days,Week 9,Week 10,Monitoring Setup,DevOps Engineer,Complete
Development,Playbook Standards Definition,5 days,Week 8,Week 9,Platform Ready,Automation Architect,Complete
Development,Server Playbooks (25),10 days,Week 9,Week 11,Standards Definition,Automation Engineer,Complete
Development,Server Playbooks (25 more),10 days,Week 11,Week 13,First 25 Complete,Automation Engineer,Complete
Development,Network Playbooks (30),10 days,Week 11,Week 14,Standards Definition,Network Automation,Complete
Development,Cloud/Compliance Playbooks (20),10 days,Week 13,Week 16,Server Playbooks Done,Automation Engineer,Complete
Development,Self-Service Portal Config,5 days,Week 14,Week 15,Playbooks Development,Platform Engineer,Complete
Development,Event-Driven Automation Setup,5 days,Week 15,Week 16,Portal Configuration,Automation Engineer,Complete
Test,Functional Testing,7 days,Week 16,Week 17,All Playbooks Complete,QA Team,Complete
Test,Performance Testing,5 days,Week 17,Week 18,Functional Testing,Performance Engineer,Complete
Test,Security Testing,5 days,Week 17,Week 18,Functional Testing,Security Team,Complete
Test,User Acceptance Testing,5 days,Week 18,Week 19,Performance Testing,Business Users,Complete
Test,Go-Live Readiness Review,2 days,Week 19,Week 20,UAT Complete,Project Manager,Complete
Deploy,Production Automation Enablement,5 days,Week 20,Week 20,Go-Live Readiness,Deployment Team,Complete
Deploy,Phased Rollout Execution,10 days,Week 20,Week 22,Initial Enablement,Operations Team,Complete
Training,Administrator Training,5 days,Week 18,Week 19,Platform Testing,Training Team,Complete
Training,Developer Training,5 days,Week 19,Week 20,Admin Training,Training Team,Complete
Closure,Hypercare Support,20 days,Week 21,Week 24,Production Rollout,Support Team,Complete
Closure,Documentation Finalization,5 days,Week 23,Week 24,Hypercare Start,Project Manager,Complete
Closure,Project Closeout Meeting,1 day,Week 24,Week 24,Documentation Complete,Project Manager,Complete
# Milestones
#WIDTH: 14,25,20,77,28,17
#ALIGN: left,left,center,left,left,center
Milestone ID,Milestone Name,Target Date,Success Criteria,Owner,Status
M1,Assessment Complete,Week 3,Assessment delivered; architecture approved; playbook roadmap defined,Automation Architect,Complete
M2,Platform Deployed,Week 6,HA controller operational; execution nodes active; integrations configured,Platform Engineer,Complete
M3,50 Playbooks Ready,Week 12,50 playbooks developed; tested in dev; ready for production,Automation Engineer,Complete
M4,100 Playbooks Complete,Week 16,All 100 playbooks developed; integration testing complete; documented,Automation Lead,Complete
M5,Testing Complete,Week 19,All test phases passed; zero critical defects; UAT signed off,QA Lead,Complete
M6,Go-Live,Week 20,Production automation enabled; self-service operational; monitoring active,Project Manager,Complete
M7,Project Closure,Week 24,Hypercare complete; training delivered; documentation handed over,Project Manager,Complete
# RACI Matrix
#WIDTH: 30,10,10,10,10,10,10,10,10
#ALIGN: left,center,center,center,center,center,center,center,center
Task/Deliverable,PM,Architect,DevOps,SecArch,QA,Ops,NetEng,Client
Project Charter,A,C,I,I,I,I,I,C
Architecture Design,A,R,C,C,I,I,C,I
Security Design,A,C,I,R,I,I,I,C
Platform Deployment,A,C,R,I,I,I,I,I
RBAC Configuration,A,C,C,R,I,I,I,C
Vault Integration,A,C,R,R,I,I,I,I
ServiceNow Integration,A,C,R,I,I,C,I,C
Server Playbooks,A,C,R,I,I,C,I,C
Network Playbooks,A,C,R,I,I,I,R,C
Compliance Playbooks,A,C,R,R,I,I,I,C
Functional Testing,A,I,C,I,R,C,I,C
Security Testing,A,I,I,R,C,I,I,I
UAT Execution,A,I,I,I,R,C,I,R
Administrator Training,A,C,R,I,I,R,I,R
Developer Training,A,R,R,I,I,C,I,R
Production Rollout,A,C,R,C,C,R,C,C
Hypercare Support,A,C,R,I,I,C,C,I
Documentation,A,R,C,C,I,I,I,I
Project Closure,R,C,I,I,I,I,I,A
# Communications Plan
#WIDTH: 23,19,38,45,19,20
#ALIGN: left,left,left,left,left,center
Meeting Type,Frequency,Participants,Purpose,Owner,Day/Time
Project Kickoff,Once,All stakeholders,Launch project and align on objectives,Project Manager,Week 1 Day 1
Steering Committee,Bi-weekly,Executive sponsors and PMO,Strategic direction and issue escalation,Project Manager,Alternate Tuesdays 14:00
Status Meeting,Weekly,Core project team,Review progress and address blockers,Project Manager,Mondays 10:00
Technical Review,Weekly,Technical leads and architects,Architecture decisions and technical issues,Automation Architect,Wednesdays 14:00
Security Review,Bi-weekly,Security and compliance team,Security posture and policy validation,Security Architect,Alternate Thursdays 11:00
Playbook Review,Weekly,Development and operations teams,Playbook demo and feedback collection,Automation Lead,Fridays 15:00
QA Sync,Weekly,QA and Development teams,Test progress and defect triage,QA Lead,Thursdays 11:00
Training Coordination,Weekly (during training),Training team and participants,Training logistics and feedback,Training Lead,Mondays 09:00
Go-Live Readiness,Daily (2 weeks pre),Go-live team,Go-live preparation and checklist,Project Manager,Daily 09:00
Hypercare Check-in,Daily (first 2 weeks),Support team and operations,Post-go-live health check and issues,Support Lead,Daily 09:00
Project Closeout,Once,All stakeholders,Project review and formal closure,Project Manager,Week 24
