# Project Timeline
#WIDTH: 12,36,13,19,19,26,24,14
#ALIGN: left,left,center,center,center,left,left,center
Phase,Task,Duration,Start Date,End Date,Dependencies,Owner,Status
Phase 1,Project Kickoff,1 day,[START_DATE],[START_DATE+1],None,Project Manager,Not Started
Phase 1,Current State Discovery,5 days,[START_DATE+1],[START_DATE+6],Project Kickoff,Security Architect,Not Started
Phase 1,Policy Export and Analysis,5 days,[START_DATE+4],[START_DATE+9],Current State Discovery,Security Engineer,Not Started
Phase 1,Lab Environment Setup,5 days,[START_DATE+6],[START_DATE+11],Policy Export,Network Engineer,Not Started
Phase 1,Architecture Design Review,3 days,[START_DATE+9],[START_DATE+12],Lab Environment Setup,Solution Architect,Not Started
Phase 1,Policy Migration Testing (Lab),7 days,[START_DATE+12],[START_DATE+19],Architecture Design Review,Security Engineer,Not Started
Phase 1,Security Director Deployment,3 days,[START_DATE+15],[START_DATE+18],Lab Environment Setup,Platform Engineer,Not Started
Phase 1,Integration Testing (Lab),5 days,[START_DATE+19],[START_DATE+24],Policy Migration Testing,QA Engineer,Not Started
Phase 2,SRX4600 Hardware Installation,2 days,[START_DATE+24],[START_DATE+26],Integration Testing,Network Engineer,Not Started
Phase 2,Chassis Cluster Configuration,2 days,[START_DATE+26],[START_DATE+28],Hardware Installation,Network Engineer,Not Started
Phase 2,Zone and Interface Configuration,3 days,[START_DATE+28],[START_DATE+31],Chassis Cluster Config,Security Engineer,Not Started
Phase 2,Security Services Activation,3 days,[START_DATE+31],[START_DATE+34],Zone Configuration,Security Engineer,Not Started
Phase 2,Policy Deployment (Datacenter),5 days,[START_DATE+34],[START_DATE+39],Security Services,Security Engineer,Not Started
Phase 2,VPN Configuration,3 days,[START_DATE+37],[START_DATE+40],Policy Deployment,Network Engineer,Not Started
Phase 2,SIEM Integration,2 days,[START_DATE+39],[START_DATE+41],Policy Deployment,Integration Engineer,Not Started
Phase 2,Zone Migration (DMZ),3 days,[START_DATE+41],[START_DATE+44],SIEM Integration,Network Engineer,Not Started
Phase 2,Zone Migration (Internal),3 days,[START_DATE+44],[START_DATE+47],Zone Migration DMZ,Network Engineer,Not Started
Phase 2,HA Failover Testing,2 days,[START_DATE+47],[START_DATE+49],Zone Migration Internal,QA Engineer,Not Started
Phase 2,Performance Validation,3 days,[START_DATE+49],[START_DATE+52],HA Failover Testing,Performance Engineer,Not Started
Phase 3,Branch Site 1-2 Deployment,3 days,[START_DATE+52],[START_DATE+55],Performance Validation,Field Engineer,Not Started
Phase 3,Branch Site 3-4 Deployment,3 days,[START_DATE+55],[START_DATE+58],Branch 1-2 Complete,Field Engineer,Not Started
Phase 3,Branch Site 5-6 Deployment,3 days,[START_DATE+58],[START_DATE+61],Branch 3-4 Complete,Field Engineer,Not Started
Phase 3,Branch Site 7-8 Deployment,3 days,[START_DATE+61],[START_DATE+64],Branch 5-6 Complete,Field Engineer,Not Started
Phase 3,Branch Site 9-10 Deployment,3 days,[START_DATE+64],[START_DATE+67],Branch 7-8 Complete,Field Engineer,Not Started
Phase 3,SD-WAN Configuration,3 days,[START_DATE+67],[START_DATE+70],All Branches Complete,Network Engineer,Not Started
Phase 3,Branch VPN Validation,2 days,[START_DATE+70],[START_DATE+72],SD-WAN Configuration,QA Engineer,Not Started
Phase 4,Security Optimization,3 days,[START_DATE+72],[START_DATE+75],Branch VPN Validation,Security Engineer,Not Started
Phase 4,Documentation Finalization,3 days,[START_DATE+75],[START_DATE+78],Security Optimization,Technical Writer,Not Started
Phase 4,Administrator Training,2 days,[START_DATE+78],[START_DATE+80],Documentation Complete,Training Lead,Not Started
Phase 4,Operations Training,2 days,[START_DATE+80],[START_DATE+82],Administrator Training,Training Lead,Not Started
Phase 4,Knowledge Transfer,2 days,[START_DATE+82],[START_DATE+84],Operations Training,Technical Lead,Not Started
Phase 4,Project Closure,1 day,[START_DATE+84],[START_DATE+85],Knowledge Transfer,Project Manager,Not Started
# Milestones
#WIDTH: 14,25,20,77,28,17
#ALIGN: left,left,center,left,left,center
Milestone ID,Milestone Name,Target Date,Success Criteria,Owner,Status
M1,Project Kickoff,[START_DATE],Kickoff meeting completed; project charter signed; resources confirmed,Project Manager,Not Started
M2,Lab Validation,[START_DATE+24],Policy migration validated in lab; integration testing passed; architecture approved,Solution Architect,Not Started
M3,Datacenter Go-Live,[START_DATE+52],SRX4600 HA operational; traffic migrated; performance validated at 80 Gbps,Network Engineer,Not Started
M4,Branch Deployment,[START_DATE+72],All 10 SRX300 deployed; VPN tunnels operational; SD-WAN configured,Field Engineer,Not Started
M5,Training Complete,[START_DATE+82],Admin and ops training delivered; certification achieved; handover ready,Training Lead,Not Started
M6,Project Closure,[START_DATE+85],Documentation complete; warranty started; closeout presentation delivered,Project Manager,Not Started
# RACI Matrix
#WIDTH: 30,10,10,10,10,10,10,10,10
#ALIGN: left,center,center,center,center,center,center,center,center
Task/Deliverable,PM,SA,NE,SE,QA,TL,FE,Client
Project Charter,A,C,I,I,I,C,I,C
Architecture Design,A,R,C,C,I,C,I,I
Policy Migration Plan,A,C,I,R,C,C,I,I
Lab Environment Setup,A,C,R,C,C,I,I,I
SRX4600 Installation,A,C,R,C,I,C,I,I
Security Services Config,A,C,I,R,C,C,I,I
Zone Migration,A,C,R,R,I,C,I,C
Branch Deployment,A,C,C,I,I,C,R,I
VPN Configuration,A,C,R,C,C,C,I,I
SIEM Integration,A,C,I,R,C,C,I,I
Performance Testing,A,I,C,C,R,I,I,I
HA Failover Testing,A,C,C,C,R,C,I,I
Training Delivery,A,I,I,I,I,R,I,R
Documentation,A,C,C,C,C,R,C,I
Go-Live Approval,A,C,C,C,C,C,I,R
Project Closeout,A,C,C,C,C,C,C,R
# Communications Plan
#WIDTH: 23,19,38,45,19,20
#ALIGN: left,left,left,left,left,center
Meeting Type,Frequency,Participants,Purpose,Owner,Day/Time
Project Kickoff,Once,All stakeholders and project team,Launch project and align on objectives and timeline,Project Manager,Day 1
Steering Committee,Bi-weekly,Executive sponsors and PMO,Strategic oversight and escalation resolution,Project Manager,Alternate Tuesdays
Status Meeting,Weekly,Core project team,Review progress and address blockers and risks,Project Manager,Mondays 10:00
Technical Review,Weekly,Technical leads and architects,Design decisions and technical issue resolution,Solution Architect,Wednesdays 14:00
Cutover Planning,Daily (Week 5-8),Migration team and operations,Coordinate zone migrations and validate traffic,Network Engineer,Daily 09:00
Branch Deployment,Daily (Week 9-11),Field and network engineers,Branch deployment status and issue resolution,Field Engineer,Daily 08:00
Training Sessions,Per schedule,Training participants,Knowledge transfer and skill development,Training Lead,Per schedule
Go-Live Readiness,Daily (Week 12),Go-live team and stakeholders,Final validation and go-live checklist review,Project Manager,Daily 09:00
