# Project Timeline
#WIDTH: 12,36,13,19,19,26,24,14
#ALIGN: left,left,center,center,center,left,left,center
Phase,Task,Duration,Start Date,End Date,Dependencies,Owner,Status
Phase 1,Project Kickoff,1 day,[START_DATE],[START_DATE+1],None,Project Manager,Not Started
Phase 1,Requirements Gathering,3 days,[START_DATE+1],[START_DATE+4],Project Kickoff,Wireless Architect,Not Started
Phase 1,Building Floor Plan Review,2 days,[START_DATE+2],[START_DATE+4],Requirements Gathering,Wireless Architect,Not Started
Phase 1,RF Site Survey (Predictive),3 days,[START_DATE+4],[START_DATE+7],Floor Plan Review,Wireless Engineer,Not Started
Phase 1,AP Placement Design,2 days,[START_DATE+7],[START_DATE+9],RF Site Survey,Wireless Architect,Not Started
Phase 1,WLAN Architecture Design,2 days,[START_DATE+9],[START_DATE+11],AP Placement,Wireless Architect,Not Started
Phase 1,Design Review and Approval,2 days,[START_DATE+11],[START_DATE+13],WLAN Architecture,Network Manager,Not Started
Phase 2,EX4400 Switch Deployment,2 days,[START_DATE+13],[START_DATE+15],Design Approval,Network Engineer,Not Started
Phase 2,Switch Configuration (Wired Assurance),2 days,[START_DATE+15],[START_DATE+17],Switch Deployment,Network Engineer,Not Started
Phase 2,Mist Cloud Organization Setup,1 day,[START_DATE+15],[START_DATE+16],Design Approval,Wireless Engineer,Not Started
Phase 2,Site and Floor Plan Upload,1 day,[START_DATE+16],[START_DATE+17],Mist Cloud Setup,Wireless Engineer,Not Started
Phase 2,AP45 Installation (Floor 1),2 days,[START_DATE+17],[START_DATE+19],Switch Config,Field Engineer,Not Started
Phase 2,AP45 Installation (Floor 2),2 days,[START_DATE+19],[START_DATE+21],Floor 1 Complete,Field Engineer,Not Started
Phase 2,AP45 Installation (Floor 3),2 days,[START_DATE+21],[START_DATE+23],Floor 2 Complete,Field Engineer,Not Started
Phase 2,AP45 Installation (Floor 4),2 days,[START_DATE+23],[START_DATE+25],Floor 3 Complete,Field Engineer,Not Started
Phase 2,AP45 Installation (Floor 5),2 days,[START_DATE+25],[START_DATE+27],Floor 4 Complete,Field Engineer,Not Started
Phase 2,SSID and VLAN Configuration,2 days,[START_DATE+27],[START_DATE+29],All APs Installed,Wireless Engineer,Not Started
Phase 2,RF Policy Configuration,1 day,[START_DATE+29],[START_DATE+30],SSID Config,Wireless Engineer,Not Started
Phase 2,802.1X RADIUS Integration,2 days,[START_DATE+30],[START_DATE+32],SSID Config,Security Engineer,Not Started
Phase 2,Guest Portal Configuration,1 day,[START_DATE+32],[START_DATE+33],RADIUS Integration,Wireless Engineer,Not Started
Phase 3,Marvis AI Activation,1 day,[START_DATE+33],[START_DATE+34],Guest Portal,Wireless Engineer,Not Started
Phase 3,SLE Baseline Configuration,1 day,[START_DATE+34],[START_DATE+35],Marvis Activation,Wireless Architect,Not Started
Phase 3,Location Services (vBLE) Setup,2 days,[START_DATE+35],[START_DATE+37],SLE Baseline,Wireless Engineer,Not Started
Phase 3,Wayfinding Map Creation,2 days,[START_DATE+37],[START_DATE+39],vBLE Setup,Wireless Engineer,Not Started
Phase 3,Wired Assurance Activation,1 day,[START_DATE+39],[START_DATE+40],Marvis Activation,Network Engineer,Not Started
Phase 3,SIEM Integration (Syslog),1 day,[START_DATE+40],[START_DATE+41],Wired Assurance,Security Engineer,Not Started
Phase 4,RF Validation Testing,2 days,[START_DATE+41],[START_DATE+43],SIEM Integration,QA Engineer,Not Started
Phase 4,Client Connectivity Testing,2 days,[START_DATE+43],[START_DATE+45],RF Validation,QA Engineer,Not Started
Phase 4,Roaming Performance Testing,1 day,[START_DATE+45],[START_DATE+46],Connectivity Testing,QA Engineer,Not Started
Phase 4,SLE Validation,1 day,[START_DATE+46],[START_DATE+47],Roaming Testing,QA Engineer,Not Started
Phase 4,Location Services Testing,1 day,[START_DATE+47],[START_DATE+48],SLE Validation,QA Engineer,Not Started
Phase 4,User Acceptance Testing,2 days,[START_DATE+48],[START_DATE+50],Location Testing,Network Manager,Not Started
Phase 4,Legacy AP Cutover,2 days,[START_DATE+50],[START_DATE+52],UAT Complete,Network Engineer,Not Started
Phase 4,Administrator Training,1 day,[START_DATE+52],[START_DATE+53],Legacy Cutover,Training Lead,Not Started
Phase 4,Documentation Finalization,2 days,[START_DATE+53],[START_DATE+55],Admin Training,Technical Writer,Not Started
Phase 4,Project Closure,1 day,[START_DATE+55],[START_DATE+56],Documentation,Project Manager,Not Started
# Milestones
#WIDTH: 14,25,20,77,28,17
#ALIGN: left,left,center,left,left,center
Milestone ID,Milestone Name,Target Date,Success Criteria,Owner,Status
M1,Project Kickoff,[START_DATE],Kickoff meeting completed; project charter signed; resources confirmed,Project Manager,Not Started
M2,RF Design Approved,[START_DATE+13],Site survey complete; AP placement approved; WLAN architecture finalized,Wireless Architect,Not Started
M3,Infrastructure Deployed,[START_DATE+33],50 APs installed; switches configured; Mist Cloud operational,Network Engineer,Not Started
M4,AI Services Active,[START_DATE+41],Marvis AI operational; location services enabled; SLEs configured,Wireless Engineer,Not Started
M5,Testing Complete,[START_DATE+52],RF validation passed; 99% SLE achieved; UAT approved,QA Engineer,Not Started
M6,Project Closure,[START_DATE+56],Training complete; documentation delivered; warranty started,Project Manager,Not Started
# RACI Matrix
#WIDTH: 30,10,10,10,10,10,10,10,10
#ALIGN: left,center,center,center,center,center,center,center,center
Task/Deliverable,PM,WA,WE,NE,SE,QA,TL,Client
Project Charter,A,C,I,I,I,I,I,C
RF Site Survey,A,R,C,I,I,I,I,I
WLAN Architecture,A,R,C,C,C,I,I,I
Switch Deployment,A,I,I,R,I,I,I,I
AP Installation,A,C,R,C,I,I,I,I
SSID Configuration,A,C,R,I,C,I,I,I
RADIUS Integration,A,C,C,I,R,I,I,I
Marvis AI Activation,A,C,R,I,I,I,I,I
Location Services,A,C,R,I,I,I,I,I
RF Validation Testing,A,C,C,I,I,R,I,I
SLE Validation,A,C,C,I,I,R,I,I
User Acceptance Testing,A,C,I,I,I,C,I,R
Administrator Training,A,I,I,I,I,I,R,R
Documentation,A,C,C,C,C,C,R,I
Project Closeout,A,C,C,C,C,C,C,R
# Communications Plan
#WIDTH: 23,19,38,45,19,20
#ALIGN: left,left,left,left,left,center
Meeting Type,Frequency,Participants,Purpose,Owner,Day/Time
Project Kickoff,Once,All stakeholders and project team,Launch project and align on objectives and timeline,Project Manager,Day 1
Steering Committee,Weekly,Executive sponsors and PM,Strategic oversight and escalation resolution,Project Manager,Fridays 14:00
Status Meeting,Weekly,Core project team,Review progress and address blockers and risks,Project Manager,Mondays 10:00
Technical Review,Weekly,Wireless architect and engineers,Design decisions and technical issue resolution,Wireless Architect,Wednesdays 14:00
Installation Sync,Daily (Week 3-5),Field engineers and network team,AP installation coordination and issue resolution,Field Engineer,Daily 08:00
Testing Review,Daily (Week 7),QA and wireless engineers,Testing progress and defect resolution,QA Engineer,Daily 09:00
Training Sessions,Per schedule,Administrators and helpdesk,Knowledge transfer and skill development,Training Lead,Per schedule
Go-Live Readiness,Daily (Week 8),Go-live team and stakeholders,Final validation and cutover checklist review,Project Manager,Daily 09:00
