# Project Timeline
#WIDTH: 12,36,13,19,19,26,24,14
#ALIGN: left,left,center,center,center,left,left,center
Phase,Task,Duration,Start Date,End Date,Dependencies,Owner,Status
Discovery,Project Kickoff and Team Alignment,2 days,Week 1 Day 1,Week 1 Day 2,None,Project Manager,Not Started
Discovery,AI Workload Requirements Analysis,5 days,Week 1 Day 3,Week 2 Day 2,Project Kickoff,AI Lead,Not Started
Discovery,Datacenter Site Survey and Assessment,3 days,Week 2 Day 1,Week 2 Day 3,Project Kickoff,Facilities Lead,Not Started
Discovery,Power and Cooling Capacity Analysis,3 days,Week 2 Day 3,Week 3 Day 1,Site Survey,Infrastructure Architect,Not Started
Discovery,InfiniBand Fabric Design and Topology,4 days,Week 3 Day 1,Week 3 Day 4,Requirements Analysis,Network Engineer,Not Started
Discovery,DGX SuperPOD Architecture Design,5 days,Week 3 Day 2,Week 4 Day 1,Fabric Design,Solution Architect,Not Started
Discovery,Assessment Report and Implementation Plan,3 days,Week 4 Day 1,Week 4 Day 3,Architecture Design,Project Manager,Not Started
Site Prep,Power Infrastructure Upgrade (500 kW),15 days,Week 5 Day 1,Week 7 Day 5,Assessment Approved,Facilities Team,Not Started
Site Prep,Cooling System Enhancement,10 days,Week 5 Day 3,Week 7 Day 2,Assessment Approved,Facilities Team,Not Started
Site Prep,Rack Installation and Cable Management,5 days,Week 7 Day 1,Week 7 Day 5,Power Upgrade Started,Infrastructure Team,Not Started
Site Prep,InfiniBand Cabling Installation,5 days,Week 7 Day 3,Week 8 Day 2,Rack Installation,Network Team,Not Started
Site Prep,Network Infrastructure Validation,2 days,Week 8 Day 1,Week 8 Day 2,IB Cabling Complete,Network Engineer,Not Started
Deployment,DGX H100 Systems Installation (8 nodes),10 days,Week 8 Day 3,Week 10 Day 2,Site Ready,Hardware Team,Not Started
Deployment,InfiniBand Switch Configuration,5 days,Week 10 Day 1,Week 10 Day 5,DGX Installation,Network Engineer,Not Started
Deployment,InfiniBand Fabric Validation (RDMA),3 days,Week 10 Day 3,Week 11 Day 1,Switch Configuration,Network Engineer,Not Started
Deployment,Base Command Storage Deployment (1 PB),5 days,Week 10 Day 3,Week 11 Day 2,DGX Installation,Storage Engineer,Not Started
Deployment,DGX OS and Driver Installation,3 days,Week 11 Day 1,Week 11 Day 3,IB Fabric Validated,Systems Engineer,Not Started
Deployment,NGC Catalog and Container Runtime Setup,2 days,Week 11 Day 3,Week 12 Day 1,DGX OS Installed,AI Engineer,Not Started
Deployment,AI Framework Deployment (PyTorch/TF),3 days,Week 12 Day 1,Week 12 Day 3,NGC Setup,AI Engineer,Not Started
Deployment,Slurm Workload Manager Configuration,4 days,Week 12 Day 2,Week 12 Day 5,AI Frameworks,Systems Engineer,Not Started
Deployment,LDAP/AD Integration and User Setup,3 days,Week 12 Day 4,Week 13 Day 1,Slurm Configured,Security Engineer,Not Started
Deployment,DCGM Monitoring and Grafana Dashboards,3 days,Week 12 Day 5,Week 13 Day 2,DGX OS Installed,Operations Engineer,Not Started
Testing,Multi-GPU Performance Benchmarking,3 days,Week 13 Day 2,Week 13 Day 4,Full Stack Deployed,Performance Engineer,Not Started
Testing,InfiniBand Fabric Performance Validation,2 days,Week 13 Day 3,Week 13 Day 4,Benchmarking Started,Network Engineer,Not Started
Testing,Storage Throughput Testing (14 GB/s),2 days,Week 13 Day 4,Week 14 Day 1,Fabric Validated,Storage Engineer,Not Started
Testing,Distributed Training Scalability Tests,3 days,Week 13 Day 5,Week 14 Day 2,Performance Tests,AI Engineer,Not Started
Testing,Security and Access Control Validation,2 days,Week 14 Day 1,Week 14 Day 2,User Setup Complete,Security Engineer,Not Started
Testing,User Acceptance Testing with AI Team,3 days,Week 14 Day 2,Week 14 Day 4,All Tests Complete,AI Lead,Not Started
Testing,Go-Live Readiness Review,1 day,Week 14 Day 5,Week 14 Day 5,UAT Complete,Project Manager,Not Started
Handover,Administrator Training Delivery,3 days,Week 15 Day 1,Week 15 Day 3,Go-Live Approved,Training Lead,Not Started
Handover,Data Scientist Training Sessions,3 days,Week 15 Day 2,Week 15 Day 4,Go-Live Approved,Training Lead,Not Started
Handover,Operations Runbook Validation,2 days,Week 15 Day 3,Week 15 Day 4,Training Started,Operations Lead,Not Started
Handover,As-Built Documentation Delivery,2 days,Week 15 Day 4,Week 16 Day 1,Runbook Validated,Solution Architect,Not Started
Handover,Knowledge Transfer Sessions,3 days,Week 16 Day 1,Week 16 Day 3,Documentation Complete,Technical Lead,Not Started
Hypercare,Go-Live and Production Support,1 day,Week 15 Day 1,Week 15 Day 1,Go-Live Approved,Support Team,Not Started
Hypercare,Hypercare Period (30 days),20 days,Week 15 Day 2,Week 19 Day 1,Go-Live Complete,Support Team,Not Started
Hypercare,Project Closure and Sign-off,2 days,Week 19 Day 2,Week 19 Day 3,Hypercare Complete,Project Manager,Not Started
# Milestones
#WIDTH: 14,25,20,77,28,17
#ALIGN: left,left,center,left,left,center
Milestone ID,Milestone Name,Target Date,Success Criteria,Owner,Status
M1,Project Kickoff,Week 1,All stakeholders attended kickoff; project charter approved; team assignments confirmed,Project Manager,Not Started
M2,Assessment Complete,Week 4,Site assessment report delivered; architecture design approved; implementation plan signed off,Solution Architect,Not Started
M3,Datacenter Ready,Week 7,500 kW power upgrade complete; cooling enhanced; racks installed; InfiniBand cabling done,Facilities Lead,Not Started
M4,Hardware Installed,Week 10,8x DGX H100 systems installed and powered on; initial connectivity validated,Hardware Lead,Not Started
M5,InfiniBand Operational,Week 11,Quantum-2 fabric configured; RDMA validated; <2μs latency confirmed; GPUDirect enabled,Network Engineer,Not Started
M6,Software Stack Deployed,Week 13,DGX OS; NGC catalog; AI frameworks; Slurm; monitoring all operational and validated,Systems Engineer,Not Started
M7,Go-Live,Week 15,32 petaFLOPS validated; 14 GB/s storage throughput; UAT complete; production traffic enabled,Project Manager,Not Started
M8,Project Closure,Week 19,Hypercare complete; all documentation delivered; NVIDIA support transition; formal sign-off,Project Manager,Not Started
# RACI Matrix
#WIDTH: 30,10,10,10,10,10,10,10,10
#ALIGN: left,center,center,center,center,center,center,center,center
Task/Deliverable,PM,SA,NE,SE,FacLead,AILead,OpLead,Client
Project Charter and Kickoff,A,C,I,I,I,C,I,C
AI Workload Requirements,A,C,I,I,I,R,I,C
Datacenter Site Assessment,A,R,C,C,R,I,I,C
DGX SuperPOD Architecture Design,A,R,C,C,C,C,I,I
Power and Cooling Upgrades,A,C,I,I,R,I,I,C
InfiniBand Fabric Design,A,C,R,I,I,I,I,I
DGX H100 Installation,A,C,I,R,C,I,I,I
InfiniBand Configuration,A,C,R,C,I,I,I,I
Base Command Storage Deployment,A,C,I,R,I,I,I,I
Software Stack Deployment,A,C,I,R,I,C,I,I
Slurm Workload Manager Setup,A,C,I,R,I,C,I,I
Performance Benchmarking,A,C,R,R,I,C,I,I
Security and Access Control,A,C,I,R,I,I,I,C
User Acceptance Testing,A,I,I,C,I,R,I,R
Administrator Training,A,R,C,C,I,I,R,C
Data Scientist Training,A,C,I,I,I,R,I,R
Operations Runbook,A,C,C,C,I,I,R,I
Knowledge Transfer,A,R,R,R,I,C,R,C
Go-Live Approval,A,C,C,C,C,C,C,R
Hypercare Support,A,C,C,R,I,I,R,I
# Communications Plan
#WIDTH: 23,19,38,45,19,20
#ALIGN: left,left,left,left,left,center
Meeting Type,Frequency,Participants,Purpose,Owner,Day/Time
Project Kickoff,Once,All stakeholders and project team,Launch project; align on objectives and timeline,Project Manager,Week 1 Day 1
Executive Steering,Bi-weekly,Executive sponsors and PM,Strategic direction; budget approval; issue escalation,Project Manager,Alternate Tuesdays
Project Status,Weekly,Core project team,Progress review; risk tracking; issue resolution,Project Manager,Mondays 10:00 AM
Technical Review,Weekly,Solution architect and engineers,Architecture decisions; technical issues; design validation,Solution Architect,Wednesdays 2:00 PM
Facilities Coordination,Weekly,Facilities and infrastructure teams,Power/cooling progress; site readiness tracking,Facilities Lead,Tuesdays 9:00 AM
InfiniBand Fabric Review,Weekly,Network engineers and NVIDIA support,Fabric design validation; configuration issues,Network Engineer,Thursdays 11:00 AM
AI Workload Planning,Bi-weekly,AI lead and research teams,Workload requirements; training priorities; resource allocation,AI Lead,Alternate Fridays
Go-Live Readiness,Daily,Go-live team (2 weeks pre-launch),Go-live preparation; checklist validation; risk review,Project Manager,Daily 9:00 AM
Hypercare Standup,Daily,Support team (first 2 weeks),Production issues; performance monitoring; user feedback,Operations Lead,Daily 9:30 AM
