# Project Timeline
#WIDTH: 12,36,13,19,19,26,24,14
#ALIGN: left,left,center,center,center,left,left,center
Phase,Task,Duration,Start Date,End Date,Dependencies,Owner,Status
Discovery,Project Kickoff and Stakeholder Alignment,2 days,Week 1 Day 1,Week 1 Day 2,None,Project Manager,Not Started
Discovery,AI Workload Requirements Analysis,4 days,Week 1 Day 3,Week 2 Day 1,Project Kickoff,Data Science Lead,Not Started
Discovery,Infrastructure Assessment and Sizing,3 days,Week 2 Day 1,Week 2 Day 3,Requirements Analysis,Infrastructure Architect,Not Started
Discovery,Kubernetes Architecture Design,4 days,Week 2 Day 3,Week 3 Day 2,Infrastructure Assessment,Kubernetes Architect,Not Started
Discovery,MLOps Platform Design (Kubeflow/MLflow),3 days,Week 3 Day 1,Week 3 Day 3,Kubernetes Design,MLOps Engineer,Not Started
Discovery,Assessment Report and Implementation Plan,2 days,Week 3 Day 3,Week 3 Day 5,All Design Complete,Project Manager,Not Started
Infrastructure,GPU Server Installation (8x Dell R750xa),8 days,Week 4 Day 1,Week 5 Day 3,Assessment Approved,Hardware Team,Not Started
Infrastructure,100 GbE Network Switch Deployment,4 days,Week 5 Day 1,Week 5 Day 4,Server Installation Started,Network Engineer,Not Started
Infrastructure,RoCE Configuration and Validation,3 days,Week 5 Day 4,Week 6 Day 2,Network Switches Deployed,Network Engineer,Not Started
Infrastructure,NetApp Storage Deployment (200 TB),5 days,Week 5 Day 3,Week 6 Day 3,Network Ready,Storage Engineer,Not Started
Infrastructure,Ubuntu 22.04 and NVIDIA Driver Install,3 days,Week 6 Day 2,Week 6 Day 4,Servers Ready,Systems Engineer,Not Started
Infrastructure,GPU Validation (32x A100 40GB),2 days,Week 6 Day 4,Week 7 Day 1,Drivers Installed,GPU Engineer,Not Started
Kubernetes,Kubernetes Control Plane Deployment (3-node HA),3 days,Week 7 Day 1,Week 7 Day 3,Infrastructure Ready,Kubernetes Engineer,Not Started
Kubernetes,GPU Worker Nodes Configuration (8 nodes),3 days,Week 7 Day 3,Week 8 Day 1,Control Plane Ready,Kubernetes Engineer,Not Started
Kubernetes,NVIDIA GPU Operator Installation,2 days,Week 8 Day 1,Week 8 Day 2,Worker Nodes Ready,GPU Engineer,Not Started
Kubernetes,GPU Device Plugin and Time-Slicing Config,2 days,Week 8 Day 2,Week 8 Day 4,GPU Operator Installed,GPU Engineer,Not Started
Kubernetes,Container Registry and NGC Integration,2 days,Week 8 Day 4,Week 9 Day 1,GPU Plugin Configured,DevOps Engineer,Not Started
Kubernetes,Storage Class and PV Provisioner Setup,2 days,Week 9 Day 1,Week 9 Day 2,Storage Ready,Storage Engineer,Not Started
MLOps,Kubeflow Installation and Configuration,4 days,Week 9 Day 2,Week 10 Day 1,Kubernetes Ready,MLOps Engineer,Not Started
MLOps,MLflow Deployment and Model Registry,3 days,Week 10 Day 1,Week 10 Day 3,Kubeflow Ready,MLOps Engineer,Not Started
MLOps,Triton Inference Server Deployment,3 days,Week 10 Day 3,Week 11 Day 1,MLflow Ready,AI Engineer,Not Started
MLOps,JupyterHub Multi-User Setup,2 days,Week 11 Day 1,Week 11 Day 2,Triton Ready,DevOps Engineer,Not Started
MLOps,LDAP Integration and User Namespaces,2 days,Week 11 Day 2,Week 11 Day 4,JupyterHub Ready,Security Engineer,Not Started
Testing,GPU Performance Benchmarking (32 GPUs),2 days,Week 11 Day 4,Week 12 Day 1,Full Stack Deployed,Performance Engineer,Not Started
Testing,Distributed Training Validation,2 days,Week 12 Day 1,Week 12 Day 3,Benchmarks Complete,AI Engineer,Not Started
Testing,MLOps Pipeline End-to-End Testing,2 days,Week 12 Day 3,Week 13 Day 1,Distributed Training OK,MLOps Engineer,Not Started
Testing,User Acceptance Testing with DS Team,3 days,Week 13 Day 1,Week 13 Day 3,Pipeline Testing OK,Data Science Lead,Not Started
Testing,Security and Access Control Validation,2 days,Week 13 Day 3,Week 13 Day 5,UAT Complete,Security Engineer,Not Started
Handover,Administrator Training Delivery,2 days,Week 14 Day 1,Week 14 Day 2,Go-Live Approved,Training Lead,Not Started
Handover,Data Scientist Training Sessions,3 days,Week 14 Day 2,Week 14 Day 4,Admin Training Done,Training Lead,Not Started
Handover,Operations Runbook Validation,2 days,Week 14 Day 4,Week 15 Day 1,Training Complete,Operations Lead,Not Started
Handover,Documentation Delivery,2 days,Week 15 Day 1,Week 15 Day 2,Runbook Validated,Technical Lead,Not Started
Hypercare,Go-Live and Production Support,1 day,Week 14 Day 1,Week 14 Day 1,Go-Live Approved,Support Team,Not Started
Hypercare,Hypercare Period (14 days),10 days,Week 14 Day 2,Week 16 Day 1,Go-Live Complete,Support Team,Not Started
Hypercare,Project Closure and Sign-off,2 days,Week 16 Day 2,Week 16 Day 3,Hypercare Complete,Project Manager,Not Started
# Milestones
#WIDTH: 14,25,20,77,28,17
#ALIGN: left,left,center,left,left,center
Milestone ID,Milestone Name,Target Date,Success Criteria,Owner,Status
M1,Project Kickoff,Week 1,All stakeholders aligned; project charter approved; team assignments confirmed,Project Manager,Not Started
M2,Assessment Complete,Week 3,Architecture design approved; implementation plan signed off; procurement initiated,Solution Architect,Not Started
M3,Infrastructure Ready,Week 7,8 servers installed; 32 GPUs validated; network and storage operational,Infrastructure Lead,Not Started
M4,Kubernetes Operational,Week 9,Control plane HA; GPU Operator installed; all nodes schedulable,Kubernetes Engineer,Not Started
M5,MLOps Platform Live,Week 11,Kubeflow; MLflow; Triton; JupyterHub all operational and validated,MLOps Lead,Not Started
M6,Go-Live,Week 14,All tests passing; UAT complete; 20+ users onboarded; production traffic enabled,Project Manager,Not Started
# RACI Matrix
#WIDTH: 30,10,10,10,10,10,10,10,10
#ALIGN: left,center,center,center,center,center,center,center,center
Task/Deliverable,PM,SA,KE,GE,ME,SE,OpLead,Client
Project Charter and Kickoff,A,C,I,I,I,I,I,C
AI Workload Requirements,A,C,I,I,C,I,I,R
Infrastructure Architecture Design,A,R,C,C,I,C,I,I
Kubernetes Architecture Design,A,C,R,C,C,I,I,I
GPU Server Installation,A,C,I,R,I,I,I,I
Network Deployment (100 GbE),A,C,I,I,I,R,I,I
Kubernetes Cluster Deployment,A,C,R,C,I,I,I,I
NVIDIA GPU Operator Setup,A,C,C,R,I,I,I,I
Kubeflow Installation,A,C,C,I,R,I,I,I
MLflow Deployment,A,C,I,I,R,I,I,I
Triton Inference Server,A,C,I,C,R,I,I,I
Performance Benchmarking,A,C,I,R,C,I,I,I
User Acceptance Testing,A,I,C,I,C,I,I,R
Administrator Training,A,R,C,C,C,I,R,C
Data Scientist Training,A,C,I,I,R,I,I,R
Operations Runbook,A,C,C,C,C,I,R,I
Go-Live Approval,A,C,C,C,C,C,C,R
Hypercare Support,A,C,C,R,R,I,R,I
# Communications Plan
#WIDTH: 23,19,38,45,19,20
#ALIGN: left,left,left,left,left,center
Meeting Type,Frequency,Participants,Purpose,Owner,Day/Time
Project Kickoff,Once,All stakeholders and project team,Launch project; align on objectives and timeline,Project Manager,Week 1 Day 1
Executive Steering,Bi-weekly,Executive sponsors and PM,Strategic direction; budget approval; issue escalation,Project Manager,Alternate Tuesdays
Project Status,Weekly,Core project team,Progress review; risk tracking; issue resolution,Project Manager,Mondays 10:00 AM
Technical Review,Weekly,Architects and engineers,Architecture decisions; technical issues; integration,Solution Architect,Wednesdays 2:00 PM
Data Science Sync,Bi-weekly,Data science leads and MLOps team,Workload requirements; user feedback; training needs,Data Science Lead,Alternate Fridays
Kubernetes Planning,Weekly,Kubernetes and GPU engineers,Platform configuration; scheduling optimization,Kubernetes Engineer,Thursdays 11:00 AM
Go-Live Readiness,Daily,Go-live team (2 weeks pre-launch),Go-live preparation; checklist validation; risk review,Project Manager,Daily 9:00 AM
Hypercare Standup,Daily,Support team (first week),Production issues; user feedback; optimization,Operations Lead,Daily 9:30 AM
