# Project Timeline
#WIDTH: 12,36,13,19,19,26,24,14
#ALIGN: left,left,center,center,center,left,left,center
Phase,Task,Duration,Start Date,End Date,Dependencies,Owner,Status
Discovery,Project Kickoff,1 day,[START_DATE],[START_DATE+1],None,Project Manager,Not Started
Discovery,3D Workflow Analysis & Collaboration Requirements,5 days,[START_DATE+1],[START_DATE+6],Project Kickoff,Business Analyst,Not Started
Discovery,CAD Tool Inventory & Connector Requirements,5 days,[START_DATE+3],[START_DATE+8],Project Kickoff,Solution Architect,Not Started
Discovery,Network & Infrastructure Assessment,5 days,[START_DATE+5],[START_DATE+10],Workflow Analysis,Network Architect,Not Started
Discovery,Sample USD Scene Collection & Validation,4 days,[START_DATE+6],[START_DATE+10],Workflow Analysis,Design Lead,Not Started
Planning,Omniverse Architecture Design,7 days,[START_DATE+10],[START_DATE+17],CAD Assessment,Solution Architect,Not Started
Planning,Nucleus HA & Storage Design,5 days,[START_DATE+12],[START_DATE+17],Architecture Design,Infrastructure Lead,Not Started
Planning,Security Architecture & AD Integration Design,5 days,[START_DATE+14],[START_DATE+19],Architecture Design,Security Architect,Not Started
Planning,Workstation Deployment & Imaging Strategy,4 days,[START_DATE+15],[START_DATE+19],Architecture Design,Desktop Engineer,Not Started
Build,Nucleus Server Infrastructure Deployment,7 days,[START_DATE+19],[START_DATE+26],Infrastructure Planning,DevOps Engineer,Not Started
Build,NetApp Storage Configuration & NFS Exports,4 days,[START_DATE+22],[START_DATE+26],Infrastructure Deployment,Storage Engineer,Not Started
Build,Network Infrastructure & VLAN Configuration,6 days,[START_DATE+20],[START_DATE+26],Infrastructure Deployment,Network Engineer,Not Started
Build,Nucleus Server Software Installation,5 days,[START_DATE+26],[START_DATE+31],Storage Configuration,System Administrator,Not Started
Build,Nucleus HA Configuration & Failover Setup,4 days,[START_DATE+31],[START_DATE+35],Nucleus Installation,System Administrator,Not Started
Build,Pilot Workstation Deployment (10 workstations),7 days,[START_DATE+35],[START_DATE+42],Nucleus HA Setup,Desktop Engineer,Not Started
Build,Autodesk Revit Connector Installation,3 days,[START_DATE+42],[START_DATE+45],Pilot Workstations,Integration Engineer,Not Started
Build,SolidWorks Connector Installation,3 days,[START_DATE+44],[START_DATE+47],Revit Connector,Integration Engineer,Not Started
Build,Rhino Connector Installation,3 days,[START_DATE+46],[START_DATE+49],SolidWorks Connector,Integration Engineer,Not Started
Build,Blender & Maya Connector Installation,4 days,[START_DATE+48],[START_DATE+52],Rhino Connector,Integration Engineer,Not Started
Build,Active Directory Integration & SSO,5 days,[START_DATE+45],[START_DATE+50],Nucleus HA Setup,Security Engineer,Not Started
Build,Monitoring Infrastructure (Prometheus/Grafana),5 days,[START_DATE+50],[START_DATE+55],AD Integration,DevOps Engineer,Not Started
Build,Full Workstation Deployment (40 remaining),10 days,[START_DATE+52],[START_DATE+62],Pilot Validation,Desktop Engineer,Not Started
Test,Unit Testing - Nucleus Functionality,5 days,[START_DATE+55],[START_DATE+60],Monitoring Setup,QA Engineer,Not Started
Test,Connector Integration Testing,7 days,[START_DATE+55],[START_DATE+62],All Connectors,Integration Engineer,Not Started
Test,Multi-User Collaboration Testing,5 days,[START_DATE+62],[START_DATE+67],Integration Testing,QA Engineer,Not Started
Test,Performance & Rendering Benchmarks,5 days,[START_DATE+65],[START_DATE+70],Collaboration Testing,Performance Engineer,Not Started
Test,Security Testing & Access Control Validation,5 days,[START_DATE+67],[START_DATE+72],Collaboration Testing,Security Engineer,Not Started
Test,User Acceptance Testing with Design Teams,7 days,[START_DATE+70],[START_DATE+77],Performance Testing,Design Lead,Not Started
Deploy,Production Environment Validation,3 days,[START_DATE+75],[START_DATE+78],Security Testing,QA Lead,Not Started
Deploy,User Training Delivery (50 designers),7 days,[START_DATE+73],[START_DATE+80],UAT Complete,Training Lead,Not Started
Deploy,Go-Live,2 days,[START_DATE+80],[START_DATE+82],Production Validation,Project Manager,Not Started
Closure,Hypercare Support,30 days,[START_DATE+82],[START_DATE+112],Go-Live,Support Team,Not Started
Closure,Knowledge Transfer & Documentation,7 days,[START_DATE+85],[START_DATE+92],Go-Live,Project Manager,Not Started
Closure,Project Closure & Lessons Learned,3 days,[START_DATE+112],[START_DATE+115],Hypercare Complete,Project Manager,Not Started
# Milestones
#WIDTH: 14,30,20,62,28,17
#ALIGN: left,left,center,left,left,center
Milestone ID,Milestone Name,Target Date,Success Criteria,Owner,Status
M1,Project Kickoff,[START_DATE],Stakeholders aligned; project charter approved; Nucleus server access confirmed,Project Manager,Not Started
M2,Discovery Complete,[START_DATE+10],CAD tools inventoried (5 connectors); 3D workflows documented; sample USD scenes collected,Business Analyst,Not Started
M3,Architecture Approved,[START_DATE+19],Omniverse architecture approved; Nucleus HA design signed off; security design validated,Solution Architect,Not Started
M4,Infrastructure Ready,[START_DATE+35],Nucleus servers deployed (2x HA); storage configured (100 TB); network fabric operational,DevOps Engineer,Not Started
M5,Connectors Integrated,[START_DATE+52],All 5 CAD connectors validated (Revit/SolidWorks/Rhino/Blender/Maya); USD workflows tested,Integration Engineer,Not Started
M6,Workstations Deployed,[START_DATE+62],50 RTX workstations deployed; all users configured in AD; Omniverse client installed,Desktop Engineer,Not Started
M7,Testing Complete,[START_DATE+77],All test phases passed; rendering <60 minutes; 10+ concurrent users validated; no critical defects,QA Lead,Not Started
M8,Go-Live,[START_DATE+82],Production deployment successful; 50 designers trained; monitoring active,Project Manager,Not Started
M9,Project Closure,[START_DATE+115],Hypercare complete; knowledge transfer done; lessons learned documented,Project Manager,Not Started
# RACI Matrix
#WIDTH: 35,8,8,8,8,8,8,8,8,8
#ALIGN: left,center,center,center,center,center,center,center,center,center
Task/Deliverable,PM,SA,BA,TL,Dev,QA,DevOps,SecArch,Client
Project Charter & Kickoff,A,C,C,I,I,I,I,I,C
3D Workflow Requirements,A,C,R,C,I,I,I,I,C
CAD Tool & Connector Assessment,A,R,C,C,I,I,C,C,I
Solution Architecture Design,A,R,C,C,C,I,C,C,I
Security & AD Integration Design,A,C,I,C,I,I,I,R,C
Infrastructure Provisioning,A,C,I,C,I,I,R,C,I
Sample USD Scene Collection,A,I,R,I,I,I,I,I,C
Nucleus Server Deployment,A,C,I,R,C,I,C,I,I
Storage & Network Configuration,A,C,I,R,C,I,R,I,I
RTX Workstation Deployment,A,I,I,R,R,I,C,I,C
CAD Connector Integration,A,C,C,R,R,I,I,I,C
Active Directory Integration,A,I,I,C,C,I,I,R,C
Test Planning & Execution,A,I,C,C,C,R,I,C,I
Collaboration Validation,A,C,C,R,C,C,I,I,C
Security Testing,A,I,I,C,I,C,I,R,I
User Acceptance Testing,A,I,C,I,I,C,I,I,R
Production Deployment,A,C,I,C,C,C,R,C,I
Designer Training,A,I,R,I,I,I,I,I,C
Go-Live Approval,A,C,C,C,C,C,C,C,R
Hypercare Support,A,I,I,C,C,C,R,I,I
# Communications Plan
#WIDTH: 25,15,40,50,22,18
#ALIGN: left,left,left,left,left,center
Meeting Type,Frequency,Participants,Purpose,Owner,Day/Time
Project Kickoff,Once,All stakeholders,Launch project and align on Omniverse objectives and collaboration strategy,Project Manager,Day 1
Steering Committee,Bi-weekly,Executive sponsors and PMO,Strategic direction and major decisions on platform implementation,Project Manager,Alternate Tuesdays
Project Status Meeting,Weekly,Core project team,Review progress and address blockers across all workstreams,Project Manager,Mondays 10:00
Technical Architecture Review,Weekly,Technical leads,Nucleus design decisions and CAD integration challenges,Solution Architect,Wednesdays 14:00
Infrastructure Standup,Daily,Infrastructure and DevOps team,Deployment progress and coordination,Technical Lead,Daily 09:30
Risk & Issue Review,Bi-weekly,PM and Risk Manager,Risk assessment and mitigation tracking,Risk Manager,Alternate Fridays
QA & Testing Review,Weekly,QA and Integration teams,Test progress and connector validation metrics,QA Lead,Thursdays 11:00
Security Review,Bi-weekly,Security team and architects,Security controls and AD integration validation,Security Architect,Alternate Wednesdays
Design Team Feedback,Weekly,Design stakeholders and pilot users,USD workflow validation and user experience feedback,Business Analyst,Fridays 14:00
Go-Live Readiness,Daily (2 weeks pre),Go-live team,Deployment preparation and checklist review,Project Manager,Daily 09:00
Post Go-Live Review,Weekly (first month),Support and operations,Production stability and collaboration performance monitoring,Support Lead,Mondays 11:00
